# PSUAY - Y.C. PAVEMENT OPTION 3 (C.B.) - EXECUTIVE - ACCELERATED - (PHD) - DD 24/01/2026

Schedule from Primavera P6, 2025-11-09 to 2026-05-18, data date 2026-01-24, A marks actual dates.

## Calendars

- PSUAY - CIVIL - 1T - SEM HE: Mon-Fri 08:00-16:00; Sat-Sun off. Exceptions (off unless hours are given): 2025-12-25 to 2025-12-26, 2026-01-01 to 2026-01-02, 2026-05-01.
- PSUAY - ELETROMEC - 1T - SEM HE: Mon-Fri 08:00-16:00; Sat-Sun off. Exceptions (off unless hours are given): 2025-12-25 to 2025-12-26, 2026-01-01 to 2026-01-02, 2026-05-01.
- PSUAY_DIAS_CORRIDOS: Mon-Sun 08:00-12:00, 13:00-17:00.
- PSUAY - ELETROMEC - 1T - HE SAB: Mon-Sat 08:00-16:00; Sun off. Exceptions (off unless hours are given): 2025-12-25 to 2025-12-27, 2026-01-01 to 2026-01-03, 2026-01-10 08:00-16:00, 2026-01-17 08:00-16:00, 2026-01-24 08:00-16:00, 2026-01-31 08:00-16:00, 2026-02-02 to 2026-02-06 08:00-15:30, 2026-02-07 08:30-16:00, 2026-02-09 to 2026-02-13 08:00-15:30, 2026-02-14 08:30-16:00, 2026-02-16 to 2026-02-20 08:00-15:30, 2026-02-21 08:30-16:00, 2026-02-23 to 2026-02-27 08:00-15:30, 2026-02-28 08:30-16:00, 2026-03-02 to 2026-03-06 08:00-15:30, 2026-03-07 08:30-16:00, 2026-03-09 to 2026-03-13 08:00-15:30, 2026-03-14 08:30-16:00, 2026-03-16 to 2026-03-20 08:00-15:30, 2026-03-21 08:30-16:00, 2026-03-23 to 2026-03-27 08:00-15:30, 2026-03-28 08:30-16:00, 2026-03-30 to 2026-04-03 08:00-15:30, 2026-04-04 08:30-16:00, 2026-04-06 to 2026-04-10 08:00-15:30, 2026-04-11 08:30-16:00, 2026-04-13 to 2026-04-17 08:00-15:30, 2026-04-18 08:30-16:00, 2026-04-20 to 2026-04-24 08:00-15:30, 2026-04-25 08:30-16:00, 2026-04-27 to 2026-04-30 08:00-15:30, 2026-05-01.
- PSUAY - CIVIL - 2T - HE SAB: Mon-Fri 04:00-20:00; Sat 08:00-16:00; Sun off. Exceptions (off unless hours are given): 2025-12-25 to 2025-12-27, 2026-01-01 to 2026-01-03, 2026-05-01.
- 7-Day Workweek: Mon-Sun 08:00-16:00.
- PSUAY - TERRA - 2T - HE SAB: Mon-Fri 04:00-20:00; Sat 08:00-16:00; Sun off. Exceptions (off unless hours are given): 2025-11-10 to 2025-11-14 05:30-19:00, 2025-11-15 08:30-15:30, 2025-11-17 to 2025-11-21 05:30-19:00, 2025-11-22 08:30-15:30, 2025-11-24 to 2025-11-28 05:30-19:00, 2025-11-29 08:30-15:30, 2025-12-01 to 2025-12-05 05:00-18:30, 2025-12-06 08:00-14:30, 2025-12-08 to 2025-12-12 05:00-18:30, 2025-12-13 08:00-14:30, 2025-12-15 to 2025-12-19 05:00-18:30, 2025-12-20 08:00-14:30, 2025-12-22 to 2025-12-24 05:00-18:30, 2025-12-25 to 2025-12-27, 2025-12-29 to 2025-12-31 05:00-18:30, 2026-01-01 to 2026-01-03, 2026-01-05 to 2026-01-09 05:00-18:00, 2026-01-10 08:00-14:30, 2026-01-12 to 2026-01-16 05:00-18:00, 2026-01-17 08:00-14:30, 2026-01-19 to 2026-01-23 05:00-18:00, 2026-01-24 08:00-14:30, 2026-01-26 to 2026-01-30 05:00-18:00, 2026-01-31 08:00-14:30, 2026-02-02 to 2026-02-06 06:00-18:30, 2026-02-07 09:00-15:00, 2026-02-09 to 2026-02-13 06:00-18:30, 2026-02-14 09:00-15:00, 2026-02-16 to 2026-02-20 06:00-18:30, 2026-02-21 09:00-15:00, 2026-02-23 to 2026-02-27 06:00-18:30, 2026-02-28 09:00-15:00, 2026-03-02 to 2026-03-06 07:00-17:30, 2026-03-07 09:30-14:30, 2026-03-09 to 2026-03-13 07:00-17:30, 2026-03-14 09:30-14:30, 2026-03-16 to 2026-03-20 07:00-17:30, 2026-03-21 09:30-14:30, 2026-03-23 to 2026-03-27 07:00-17:30, 2026-03-28 09:30-14:30, 2026-03-30 to 2026-03-31 07:00-17:30, 2026-04-01 to 2026-04-03 07:00-16:30, 2026-04-04 09:00-13:30, 2026-04-06 to 2026-04-10 07:00-16:30, 2026-04-11 09:00-13:30, 2026-04-13 to 2026-04-17 07:00-16:30, 2026-04-18 09:00-13:30, 2026-04-20 to 2026-04-24 07:00-16:30, 2026-04-25 09:00-13:30, 2026-04-27 to 2026-04-30 07:00-16:30, 2026-05-01.
- PSUAY - TERRA - 1T - SEM HE: Mon-Fri 08:00-16:00; Sat-Sun off. Exceptions (off unless hours are given): 2025-11-10 to 2025-11-14 08:00-15:00, 2025-11-17 to 2025-11-21 08:00-15:00, 2025-11-24 to 2025-11-28 08:00-15:00, 2025-12-01 to 2025-12-05 08:00-15:00, 2025-12-08 to 2025-12-12 08:00-15:00, 2025-12-15 to 2025-12-19 08:00-15:00, 2025-12-22 to 2025-12-24 08:00-15:00, 2025-12-25 to 2025-12-26, 2025-12-29 to 2025-12-31 08:00-15:00, 2026-01-01 to 2026-01-02, 2026-01-05 to 2026-01-09 09:00-15:30, 2026-01-12 to 2026-01-16 09:00-15:30, 2026-01-19 to 2026-01-23 09:00-15:30, 2026-01-26 to 2026-01-30 09:00-15:30, 2026-02-02 to 2026-02-06 09:00-15:00, 2026-02-09 to 2026-02-13 09:00-15:00, 2026-02-16 to 2026-02-20 09:00-15:00, 2026-02-23 to 2026-02-27 09:00-15:00, 2026-03-02 to 2026-03-06 09:00-14:00, 2026-03-09 to 2026-03-13 09:00-14:00, 2026-03-16 to 2026-03-20 09:00-14:00, 2026-03-23 to 2026-03-27 09:00-14:00, 2026-03-30 to 2026-04-03 09:00-14:00, 2026-04-06 to 2026-04-10 09:00-14:00, 2026-04-13 to 2026-04-17 09:00-14:00, 2026-04-20 to 2026-04-24 09:00-14:00, 2026-04-27 to 2026-04-30 09:00-14:00, 2026-05-01.

## Resources

| Resource | Group | Unit |
| --- | --- | --- |
| PROFIS | equipment |  |
| ASPHALT | material | m³ |
| POST CCTV | material | un |
| POST HIGH MAST | material | un |
| CABLE LOW VOLTAGE | material | m |
| PSUAY - PAVIMENTO (BLOCK PAVER - M2) | material | m² |
| CONCRETE-PAVEMENT | material | m³ |
| CEMENT SOIL (BGTC) | material | m³ |
| SURFACE DRAIN | material | m |
| CONCRETE-STRUCTURE | material | m³ |
| CABLE FIBER OPTICS | material | m |
| MATERIAL - CERCA | material | m |
| POST STREET LIGHTING | material | un |
| PSUAY-STE-STRUC | material | T |
| MATERIAL - CABO HV | material | m |
| INFRA-STRUCTURE ELECTRICAL | material | m |
| MATERIAL - CABO COMANDO | material | m |

## Schedule

| ID | WBS | Activity | Type | Duration | Start | Finish | Predecessors | Complete | Planned start | Planned finish | Total float | Free float | Constraint | Calendar | ACTIVITY ID COD. | FASES DE ENTREGA | RESPONSÁVEL | ÁREAS | PHASES - YARD | Check Pred |
| --- | --- | --- | --- | --- | --- | --- | --- | --- | --- | --- | --- | --- | --- | --- | --- | --- | --- | --- | --- | --- |
|  | 5 | **MILESTONES INPUT/OUTPUT** |  |  | 2025-11-09 | 2026-04-20 |  |  |  |  |  |  |  |  |  |  |  |  |  |  |
|  | 1 | **SUBSTATION SS1** |  |  | 2025-11-14 | 2026-02-06 |  |  |  |  |  |  |  |  |  |  |  |  |  |  |
| PSUAY-MIL-GER-1000 |  | Completion of the assembly activities for SS1. | milestone | 0d | 2025-11-14 A | 2025-11-14 A | PSUAY-LDM-INF-1460, PSUAY-LZE-ELE-1160 FF, PSUAY-LZE-ELE-1170 FF, PSUAY-LZE-ELE-1180 FF, PSUAY-LZE-ELE-1190 FF, PSUAY-MIL-GER-1450 FS+4d | 100% |  |  |  |  |  | PSUAY_DIAS_CORRIDOS | PSUAY-MIL-GER-1000 | MILESTONES | LUZVILLE | SS1-PRE COM | MLT |  |
| PSUAY-MIL-GER-1010 |  | Completion of testing and commissioning of SS1 | milestone | 0d | 2026-02-06 | 2026-02-06 | PSUAY-LZE-ELE-1800 FF, PSUAY-LZE-ELE-1810 FF, PSUAY-LZE-ELE-1820 FF, PSUAY-LZE-ELE-1830 FF, PSUAY-LZE-ELE-1840 FF, PSUAY-LZE-ELE-1850 FF, PSUAY-LZE-ELE-1860 FF, PSUAY-LZE-ELE-1870 FF, PSUAY-LZE-ELE-1880 FF, PSUAY-LZE-ELE-1890 FF, PSUAY-LZE-ELE-1900 FF, PSUAY-LZE-ELE-1910 FF, PSUAY-LZE-ELE-1930 FF, PSUAY-LZE-ELE-1940 FF, PSUAY-MIL-GER-1000 SF, PSUAY-LZE-ELE-1920 FF, PSUAY-LZE-ELE-1990 FF, PSUAY-LZE-ELE-2000 FF, PSUAY-LZE-ELE-2010 FF, PSUAY-LZE-ELE-2020 FF, PSUAY-LZE-ELE-2030 FF, PSUAY-LZE-ELE-2040 FF, PSUAY-LGT-INF-2060 FF, PSUAY-CAG-INF-1580 FF, PSUAY-LZE-ELE-1620 FF, PSUAY-LZE-ELE-1710 FF, PSUAY-LZE-ELE-1750 FF, PSUAY-LZE-ELE-1300 FF, PSUAY-LZE-ELE-1290 FF, PSUAY-LZE-ELE-1640 FF, PSUAY-LZE-ELE-1790 FF |  |  |  | 73.12d | 48d |  | PSUAY_DIAS_CORRIDOS | PSUAY-MIL-GER-1010 | MILESTONES | LUZVILLE | SS1-COM | MLT |  |
|  | 8 | **MILESTONES INPUT/OUTPUT** |  |  | 2025-11-18 | 2026-01-25 |  |  |  |  |  |  |  |  |  |  |  |  |  |  |
| PSUAY-MIL-GER-1034 |  | Approval of RFI projects (automation panel) | milestone | 0d | 2025-11-18 A | 2025-11-18 A | PSUAY-MIL-GER-1450 FF | 100% |  |  |  |  | finish on 2025-11-18 | PSUAY_DIAS_CORRIDOS | PSUAY-MIL-GER-1034 | MILESTONES | CONSAG | SS1-COM | MLT | UDF_G1 |
| PSUAY-MIL-GER-1021 |  | Approval of SS1 HVAC projects | milestone | 0d | 2026-01-25 | 2026-01-25 | PSUAY-MIL-GER-1450 FF |  |  |  | -55d | 1d | finish on 2025-12-01 | PSUAY_DIAS_CORRIDOS | PSUAY-MIL-GER-1021 | MILESTONES | CONSAG | SS1-COM | MLT | UDF_G1 |
|  | 4 | **SUBSTATION SS2** |  |  | 2026-01-26 | 2026-01-26 |  |  |  |  |  |  |  |  |  |  |  |  |  |  |
| PSUAY-LZE-GER-5520 |  | Release communication room and infrastructure MFO Building (DC1) - HTB | milestone | 0d | 2026-01-26 | 2026-01-26 | PSUAY-MIL-GER-1450 FS+42d |  |  |  | 47d | 0d |  | PSUAY - ELETROMEC - 1T - SEM HE | PSUAY-LZE-GER-5520 | MILESTONES | HTB | SS2 | MLT | UDF_G1 |
| PSUAY-LZE-GER-5530 |  | Release communication room and Workshop infrastructure (DC2) - HTB | milestone | 0d | 2026-01-26 | 2026-01-26 | PSUAY-MIL-GER-1450 FF+55d |  |  |  | 47d | 0d |  | PSUAY - ELETROMEC - 1T - SEM HE | PSUAY-LZE-GER-5530 | MILESTONES | HTB | SS2 | MLT | UDF_G1 |
|  | 2 | **CUSTOMS** |  |  | 2025-11-09 | 2026-03-27 |  |  |  |  |  |  |  |  |  |  |  |  |  |  |
|  | 1 | **FW1A** |  |  | 2025-11-09 | 2026-02-23 |  |  |  |  |  |  |  |  |  |  |  |  |  |  |
| PSUAY-MIL-GER-1060 |  | Release of the HDPE pipeline trench - YARD 4 | milestone | 0d | 2025-11-09 A | 2025-11-09 A | PSUAY-MIL-GER-1450 | 100% | 2025-11-10 | 2025-11-10 |  |  |  | PSUAY_DIAS_CORRIDOS | PSUAY-MIL-GER-1060 | MILESTONES | CONSAG | FW1A | MLT |  |
| PSUAY-MIL-GER-1070 |  | Release of the HDPE pipeline trench - YARD 3 | milestone | 0d | 2025-11-10 A | 2025-11-10 A | PSUAY-CAG-INF-3690 | 100% |  |  |  |  |  | PSUAY_DIAS_CORRIDOS | PSUAY-MIL-GER-1070 | MILESTONES | CONSAG | FW1A | MLT |  |
| PSUAY-MIL-GER-1050 |  | FW1 Pump House Release | milestone | 0d | 2025-11-13 A | 2025-11-13 A | PSUAY-MIL-GER-1450 FS+5d | 100% | 2025-11-14 | 2025-11-14 |  |  |  | PSUAY_DIAS_CORRIDOS | PSUAY-MIL-GER-1050 | MILESTONES | CONSAG | FW1A | MLT |  |
| PSUAY-MIL-GER-1080 |  | Release of the Kanaflex STS X pump house | milestone | 0d | 2026-01-25 | 2026-01-25 | PSUAY-MIL-GER-1450 FS+35d |  |  |  | 81d | 0d |  | PSUAY_DIAS_CORRIDOS | PSUAY-MIL-GER-1080 | MILESTONES | CONSAG | FW1A | MLT | UDF_G1 |
| PSUAY-MIL-GER-1110 |  | Clearance of the pavement for the installation of surface-mounted fire hydrants - YARD 3 | milestone | 0d | 2026-02-05 | 2026-02-05 | PSUAY-PMC-INF-2780 FS+14d, PSUAY-PMC-INF-2770 FS+14d |  |  |  | 102d |  |  | PSUAY_DIAS_CORRIDOS | PSUAY-MIL-GER-1110 | MILESTONES | CONSAG | FW1A | MLT |  |
| PSUAY-MIL-GER-1100 |  | Clearance of the pavement for the installation of exposed fire hydrants - FW1 | milestone | 0d | 2026-02-17 | 2026-02-17 | PSUAY-PMC-INF-2220, PSUAY-CAG-INF-2140, PSUAY-CAG-INF-2130 |  |  |  | 90d |  |  | PSUAY_DIAS_CORRIDOS | PSUAY-MIL-GER-1100 | MILESTONES | CONSAG | FW1A | MLT |  |
| PSUAY-MIL-GER-1090 |  | Clearance of the pavement for the installation of surface-mounted fire hydrants - YARD 4 | milestone | 0d | 2026-02-23 | 2026-02-23 | PSUAY-CAG-INF-4280 SS, PSUAY-CAG-INF-4240 SS+1d |  |  |  | 57d | 31.88d |  | PSUAY_DIAS_CORRIDOS | PSUAY-MIL-GER-1090 | MILESTONES | CONSAG | FW1A | MLT |  |
|  | 2 | **YARD 3 LINE** |  |  |  |  |  |  |  |  |  |  |  |  |  |  |  |  |  |  |
|  | 3 | **YARD 4 GATE** |  |  | 2025-11-24 | 2026-02-26 |  |  |  |  |  |  |  |  |  |  |  |  |  |  |
| PSUAY-MIL-GER-1220 |  | Receipt of the Complete Gate Complex projects (electrical and civil).. | milestone | 0d | 2025-11-24 A | 2025-11-24 A | PSUAY-MIL-GER-1450 FS+15d | 100% |  |  |  |  |  | PSUAY_DIAS_CORRIDOS | PSUAY-MIL-GER-1220 | MILESTONES | APM | YARD 4 GATE | MLT | UDF_G1 |
| PSUAY-MIL-GER-1225 |  | Receipt of the Complete Gate Complex projects (CCTV and Logical).. | milestone | 0d | 2026-01-06 A | 2026-01-06 A |  | 100% | 2026-01-12 | 2026-01-12 |  |  | finish on or after 2025-11-24 |  |  | MILESTONES |  |  | MLT |  |
| PSUAY-MIL-GER-1210 |  | Clear trench SS2 x Y4 Gate Office | milestone | 0d | 2026-01-25 | 2026-01-25 | PSUAY-CAG-INF-4880 |  |  |  | 68d | 19d |  | PSUAY_DIAS_CORRIDOS | PSUAY-MIL-GER-1210 | MILESTONES | CONSAG | YARD 4 GATE | MLT | UDF_G1 |
| PSUAY-MIL-GER-1230 |  | Approvation of tropicalization projects complete of the Gate Complex (electrical and civil).. | milestone | 0d | 2026-01-25 | 2026-01-25 | PSUAY-MIL-ENG-4230 |  |  |  | 50d | 0d |  | PSUAY_DIAS_CORRIDOS | PSUAY-MIL-GER-1230 | MILESTONES | APM | YARD 4 GATE | MLT |  |
| PSUAY-MIL-GER-4070 |  | Recieve gate canopy steel structure | milestone | 0d | 2026-02-26 | 2026-02-26 | PSUAY-BRF-EST-5200 |  |  |  | 25.12d | 0.12d |  | PSUAY_DIAS_CORRIDOS | PSUAY-MIL-GER-4070 | MILESTONES | BRAFER | YARD 4 GATE | MLT |  |

Notes:
- PSUAY-MIL-GER-1000: Translate: Término das atividades de montagem das atividades da SS1
- PSUAY-MIL-GER-1010: Translate: Término dos testes e comissionamento da SS1
- PSUAY-MIL-GER-1034: Translate: Aprovação dos projetos RFI (painel de automação)
- PSUAY-MIL-GER-1021: Translate: Aprovação dos projetos de HVAC da SS1
- PSUAY-LZE-GER-5520: Translate: Liberar sala de comunicação e infraestrutura MFO Building (DC1) - HTB
- PSUAY-LZE-GER-5530: Translate: Liberar sala de comunicação e infraestrutura Workshop (DC2) - HTB
- PSUAY-MIL-GER-1060: Translate: Liberação da vala tubulação PEAD - YARD 4
- PSUAY-MIL-GER-1070: Translate: Liberação da vala tubulação PEAD - YARD 3
- PSUAY-MIL-GER-1050: Translate: Liberação da Casa de Bombas do FW1
- PSUAY-MIL-GER-1080: Translate: Liberação techo KANAFLEX STS X CASA DE BOMBA
- PSUAY-MIL-GER-1110: Translate: Liberação do pavimento para montagem dos hidrantes aparentes - YARD 3
- PSUAY-MIL-GER-1100: Translate: Liberação do pavimento para montagem dos hidrantes aparentes - FW1
- PSUAY-MIL-GER-1090: Translate: Liberação do pavimento para montagem dos hidrantes aparentes - YARD 4
- PSUAY-MIL-GER-1220: Translate: Recebimento dos projetos completos do Gate Complex (Eletrica e Civil)
- PSUAY-MIL-GER-1225: Translate: Recebimento dos projetos completos do Gate Complex (CCTV e Lógica)
- PSUAY-MIL-GER-1210: Translate: Liberar trincheira SS2 x Escritório do portão do Y4 Gate
- PSUAY-MIL-GER-1230: Translate: Receber detalhamento tropicalização dos projetos Gate Complex
- PSUAY-MIL-GER-4070: Translate: Estrutura de aço da cobertura da portaria da recepção

| ID | WBS | Activity | Type | Duration | Start | Finish | Predecessors | Complete | Planned start | Planned finish | Total float | Calendar | Resources | Translate | Check Pred | ACTIVITY ID COD. | FASES DE ENTREGA | RESPONSÁVEL | ÁREAS | PHASES - YARD |
| --- | --- | --- | --- | --- | --- | --- | --- | --- | --- | --- | --- | --- | --- | --- | --- | --- | --- | --- | --- | --- |
|  | 4 | **SS2 SUBSTATION** |  |  | 2025-11-17 | 2025-11-17 |  |  |  |  |  |  |  |  |  |  |  |  |  |  |
| PSUAY-MIL-GER-1250 |  | Clear trench HV |  | 0d | 2025-11-17 A | 2025-11-17 A | PSUAY-MIL-GER-1450 FS+8d | 100% | 2025-11-18 | 2025-11-18 |  | PSUAY_DIAS_CORRIDOS | PROFIS | Liberar trincheira HV | UDF_G1 | PSUAY-MIL-GER-1250 | MILESTONES | LUZVILLE | SS2 | CNT |
|  | 5 | **CCTV - RELEASE FOR G4S** |  |  | 2026-01-26 | 2026-03-27 |  |  |  |  |  |  |  |  |  |  |  |  |  |  |
|  | 3 | **FEC - HM - HIGH MAST** |  |  | 2026-01-26 | 2026-03-12 |  |  |  |  |  |  |  |  |  |  |  |  |  |  |
| PSUAY-LZE-GER-8050 |  | HM-E04-01 | milestone | 0d | 2026-01-26 | 2026-01-26 | PSUAY-LZE-ELE-7630 |  |  |  | 80d |  |  |  |  |  | ALFANDEGAMENTO | LUZVILLE |  | CNT |
| PSUAY-LZE-GER-8080 |  | HM-F05-01 | milestone | 0d | 2026-01-26 | 2026-01-26 | PSUAY-LZE-ELE-7700 |  |  |  | 80d |  |  |  |  |  | ALFANDEGAMENTO | LUZVILLE |  | CNT |
| PSUAY-LZE-GER-8090 |  | HM-F05-02 | milestone | 0d | 2026-01-26 | 2026-01-26 | PSUAY-LZE-ELE-7760 |  |  |  | 80d |  |  |  |  |  | ALFANDEGAMENTO | LUZVILLE |  | CNT |
| PSUAY-LZE-GER-8100 |  | HM-F06-01 | milestone | 0d | 2026-01-26 | 2026-01-26 | PSUAY-LZE-ELE-7820 |  |  |  | 80d |  |  |  |  |  | ALFANDEGAMENTO | LUZVILLE |  | CNT |
| PSUAY-LZE-GER-8130 |  | HM-G04-01 | milestone | 0d | 2026-01-26 | 2026-01-26 | PSUAY-LZE-ELE-7840 |  |  |  | 80d |  |  |  |  |  | ALFANDEGAMENTO | LUZVILLE |  | CNT |
| PSUAY-LZE-GER-8190 |  | HM-J06-01 | milestone | 0d | 2026-01-26 | 2026-01-26 | PSUAY-LZE-ELE-8030 |  |  |  | 80d |  |  |  |  |  | ALFANDEGAMENTO | LUZVILLE |  | CNT |
| PSUAY-LZE-GER-8210 |  | HM-K06-01 | milestone | 0d | 2026-01-26 | 2026-01-26 | PSUAY-LZE-ELE-8270 |  |  |  | 80d |  |  |  |  |  | ALFANDEGAMENTO | LUZVILLE |  | CNT |
| PSUAY-LZE-GER-8040 |  | HM-E03-01 | milestone | 0d | 2026-01-30 | 2026-01-30 | PSUAY-LZE-ELE-7620 |  |  |  | 76d |  |  |  |  |  | ALFANDEGAMENTO | LUZVILLE |  | CNT |
| PSUAY-LZE-GER-8020 |  | HM-E01-01 | milestone | 0d | 2026-02-02 | 2026-02-02 | PSUAY-LZE-ELE-5980 |  |  |  | 75d |  |  |  |  |  | ALFANDEGAMENTO | LUZVILLE |  | CNT |
| PSUAY-LZE-GER-8200 |  | HM-J09-02 | milestone | 0d | 2026-02-02 | 2026-02-02 | PSUAY-LZE-ELE-8210 |  |  |  | 75d |  |  |  |  |  | ALFANDEGAMENTO | LUZVILLE |  | CNT |
| PSUAY-LZE-GER-8220 |  | HM-L07-01 | milestone | 0d | 2026-02-02 | 2026-02-02 | PSUAY-LZE-ELE-8330 |  |  |  | 75d |  |  |  |  |  | ALFANDEGAMENTO | LUZVILLE |  | CNT |
| PSUAY-LZE-GER-8230 |  | HM-L09-01 | milestone | 0d | 2026-02-02 | 2026-02-02 | PSUAY-LZE-ELE-8390 |  |  |  | 75d |  |  |  |  |  | ALFANDEGAMENTO | LUZVILLE |  | CNT |
| PSUAY-LZE-GER-8120 |  | HM-G02-01 | milestone | 0d | 2026-02-03 | 2026-02-03 | PSUAY-LZE-ELE-6030 |  |  |  | 74d |  |  |  |  |  | ALFANDEGAMENTO | LUZVILLE |  | CNT |
| PSUAY-LZE-GER-8170 |  | HM-H09-01 | milestone | 0d | 2026-02-09 | 2026-02-09 | PSUAY-LZE-ELE-7980 |  |  |  | 69.62d |  |  |  |  |  | ALFANDEGAMENTO | LUZVILLE |  | CNT |
| PSUAY-LZE-GER-8070 |  | HM-F04-01 | milestone | 0d | 2026-02-11 | 2026-02-11 | PSUAY-LZE-ELE-7650 |  |  |  | 68d |  |  |  |  |  | ALFANDEGAMENTO | LUZVILLE |  | CNT |
| PSUAY-LZE-GER-8030 |  | HM-E02-01 | milestone | 0d | 2026-02-11 | 2026-02-11 | PSUAY-LZE-ELE-5960 |  |  |  | 67.5d |  |  |  |  |  | ALFANDEGAMENTO | LUZVILLE |  | CNT |
| PSUAY-LZE-GER-8140 |  | HM-G07-01 | milestone | 0d | 2026-02-11 | 2026-02-11 | PSUAY-LZE-ELE-7890 |  |  |  | 67.5d |  |  |  |  |  | ALFANDEGAMENTO | LUZVILLE |  | CNT |
| PSUAY-LZE-GER-8160 |  | HM-H07-01 | milestone | 0d | 2026-02-12 | 2026-02-12 | PSUAY-LZE-ELE-11670 |  |  |  | 66.62d |  |  |  |  |  | ALFANDEGAMENTO | LUZVILLE |  | CNT |
| PSUAY-LZE-GER-8000 |  | HM-C02-01 | milestone | 0d | 2026-02-13 | 2026-02-13 | PSUAY-LZE-ELE-12580 |  |  |  | 65.66d |  |  |  |  |  | ALFANDEGAMENTO | LUZVILLE |  | CNT |
| PSUAY-LZE-GER-8060 |  | HM-F01-01 | milestone | 0d | 2026-02-16 | 2026-02-16 | PSUAY-LZE-ELE-6130 |  |  |  | 64.25d |  |  |  |  |  | ALFANDEGAMENTO | LUZVILLE |  | CNT |
| PSUAY-LZE-GER-8110 |  | HM-G01-01 | milestone | 0d | 2026-02-18 | 2026-02-18 | PSUAY-LZE-ELE-6060 |  |  |  | 62.12d |  |  |  |  |  | ALFANDEGAMENTO | LUZVILLE |  | CNT |
| PSUAY-LZE-GER-8150 |  | HM-H01-01 | milestone | 0d | 2026-02-26 | 2026-02-26 | PSUAY-LZE-ELE-6250 |  |  |  | 56.69d |  |  |  |  |  | ALFANDEGAMENTO | LUZVILLE |  | CNT |
| PSUAY-LZE-GER-8010 |  | HM-D01-01 | milestone | 0d | 2026-03-05 | 2026-03-05 | PSUAY-LZE-ELE-5820 |  |  |  | 51.31d |  |  |  |  |  | ALFANDEGAMENTO | LUZVILLE |  | CNT |
| PSUAY-LZE-GER-8180 |  | HM-J05-01 | milestone | 0d | 2026-03-12 | 2026-03-12 | PSUAY-LZE-ELE-8000 |  |  |  | 46.5d |  |  |  |  |  | ALFANDEGAMENTO | LUZVILLE |  | CNT |

| ID | WBS | Activity | Type | Duration | Start | Finish | Predecessors | Complete | Planned start | Planned finish | Total float | Free float | Constraint | Calendar | PHASES - YARD | ACTIVITY ID COD. | FASES DE ENTREGA | RESPONSÁVEL | ÁREAS |
| --- | --- | --- | --- | --- | --- | --- | --- | --- | --- | --- | --- | --- | --- | --- | --- | --- | --- | --- | --- |
|  | 5 | **OTHER STRUCTURES** |  |  | 2026-03-26 | 2026-03-27 |  |  |  |  |  |  |  |  |  |  |  |  |  |
| PSUAY-MIL-GER-5010 |  | Toilet Block and Rest Area | milestone | 0d | 2026-03-26 | 2026-03-26 | PSUAY-CAG-MEC-10510 |  |  |  | 37d |  |  |  | CNT |  |  |  |  |
| PSUAY-MIL-GER-5000 |  | Auto-Gate Structure | milestone | 0d | 2026-03-27 | 2026-03-27 | PSUAY-BRF-EST-5210 |  |  |  | 36d |  |  |  | CNT |  |  |  |  |
|  | 6 | **CLOSING** |  |  | 2026-02-02 | 2026-03-26 |  |  |  |  |  |  |  |  |  |  |  |  |  |
| PSUAY-MIL-GER-1111 |  | Start of the Fire Department inspection | milestone | 0d | 2026-02-02 | 2026-02-02 | PSUAY-LZE-GER-2720 |  |  |  | 56d |  |  |  |  |  |  |  |  |
| PSUAY-MIL-GER-1040.1 |  | Completion of activities for the handover of the Customs area. | milestone | 0d | 2026-03-26 | 2026-03-26 | PSUAY-PMC-INF-2230 FF, PSUAY-LDM-INF-2090 FF, PSUAY-LDM-INF-2100 FF, PSUAY-CAG-CIV-2270 FF, PSUAY-CAG-CIV-2310 FF, PSUAY-LZE-GER-2710 FF, PSUAY-LZE-GER-2720 FF, PSUAY-PMC-INF-2770 FF, PSUAY-CDX-GER-2820 FF, PSUAY-CDX-GER-2860 FF, PSUAY-LZE-ELE-2890 FF, PSUAY-LZE-ELE-2950 FF, PSUAY-LZE-ELE-2870 FF, PSUAY-LZE-GER-2990 FF, PSUAY-LZE-ELE-3040 FF, PSUAY-LZE-GER-3400 FF, PSUAY-LZE-ELE-3430 FF, PSUAY-LZE-ELE-3460 FF, PSUAY-LZE-ELE-3490 FF, PSUAY-LZE-ELE-4090 FF, PSUAY-LZE-ELE-4120 FF, PSUAY-LZE-ELE-4150 FF, PSUAY-LZE-ELE-4180 FF, PSUAY-LZE-ELE-5070 FF, PSUAY-LZE-ELE-5130 FF, PSUAY-LZE-ELE-5100 FF, PSUAY-LZE-ELE-5260 FF, PSUAY-LZE-ELE-5280 FF, PSUAY-LZE-GER-5510 FF, PSUAY-LZE-ELE-5560 FF, PSUAY-LZE-GER-5590 FF, PSUAY-LGT-INF-5620 FF, PSUAY-PNT-CIV-5720 FF, PSUAY-G4S-GER-5750 FF, PSUAY-CAG-INF-4060 FF, PSUAY-CAG-INF-3980 FF, PSUAY-CAG-INF-3800 FF, PSUAY-CAG-INF-3760 FF, PSUAY-CAG-INF-3700 FF, PSUAY-MIL-GER-1000 SF, PSUAY-CAG-CIV-3750 FF, PSUAY-LDM-INF-4260 FF, PSUAY-CAG-CIV-4270 FF, PSUAY-CAG-CIV-4300 FF, PSUAY-CAG-CIV-5090 FF, PSUAY-LZE-ELE-5360 FF, PSUAY-LZE-GER-5540 FF, PSUAY-LZE-GER-5550 FF, PSUAY-LZE-ELE-5500 FF, PSUAY-LZE-ELE-3520 FF, PSUAY-LZE-ELE-4210 FF, PSUAY-LZE-ELE-3210 FF, PSUAY-MTB-EST-3290 FF, PSUAY-CAG-CIV-3450 FF, PSUAY-CAG-CIV-4600 FF, PSUAY-BRF-EST-5210 FF, PSUAY-LZE-ELE-5190 FF, PSUAY-LZE-ELE-5400 FF, PSUAY-CAG-INF-4280 FF, PSUAY-CAG-CIV-5180 FF, PSUAY-MIL-GER-1090 FF, PSUAY-MIL-GER-1010 FF, PSUAY-CAG-CIV-4330 FF, PSUAY-CAG-CIV-4270 SF, PSUAY-CAG-CIV-4300 SF, PSUAY-CAG-CIV-4320 FF, PSUAY-CAG-CIV-4330 SF, PSUAY-CAG-CIV-4320 SF |  |  |  | 25.12d | 25d |  | PSUAY_DIAS_CORRIDOS | MLT | PSUAY-MIL-GER-1040.1 | MILESTONES | CONSAG | GERAL |
|  | 3 | **CONCLUSION AND CLOSING** |  |  | 2025-11-20 | 2026-04-20 |  |  |  |  |  |  |  |  |  |  |  |  |  |
|  | 2 | **YARD 3** |  |  | 2026-01-25 | 2026-03-15 |  |  |  |  |  |  |  |  |  |  |  |  |  |
| PSUAY-MIL-GER-1290 |  | Aproved project of panel RTU (SCADA) | milestone | 0d | 2026-01-25 | 2026-01-25 | PSUAY-MIL-GER-1450 FS+18d |  |  |  | 22d | 0d |  | PSUAY_DIAS_CORRIDOS | MLT | PSUAY-MIL-GER-1290 | MILESTONES | APM | YARD 3 |
| PSUAY-MIL-GER-1280 |  | Acceptance of EV Chargers | milestone | 0d | 2026-02-13 | 2026-02-13 | PSUAY-MIL-GER-1450 FF+97d |  |  |  | 44d | 2d |  | PSUAY_DIAS_CORRIDOS | MLT | PSUAY-MIL-GER-1280 | MILESTONES | LUZVILLE | YARD 3 |
| PSUAY-MIL-GER-1300 |  | Arrival of panel RTU (SCADA) | milestone | 0d | 2026-03-15 | 2026-03-15 | PSUAY-MIL-GER-1290 FS+50d |  |  |  | 22d | 0d |  | PSUAY_DIAS_CORRIDOS | MLT | PSUAY-MIL-GER-1300 | MILESTONES | LUZVILLE | YARD 3 |
|  | 3 | **YARD 4** |  |  | 2025-11-20 | 2026-01-25 |  |  |  |  |  |  |  |  |  |  |  |  |  |
| PSUAY-MIL-GER-6425 |  | Recieve metal structure of Reefer Racks in Yard 4 | milestone | 0d | 2025-11-20 A | 2025-11-20 A | PSUAY-MIL-GER-1450 FS+12d | 100% | 2025-11-21 | 2025-11-21 |  |  |  | PSUAY_DIAS_CORRIDOS | MLT | PSUAY-MIL-GER-6425 | MILESTONES | BRAFER | YARD 4 |
| PSUAY-MIL-GER-6435 |  | Arrival Steel Structure SE-03 | milestone | 0d | 2026-01-25 | 2026-01-25 | PSUAY-MIL-GER-1450 FS+73d |  |  |  | 33d | 1d |  | PSUAY_DIAS_CORRIDOS | MLT | PSUAY-MIL-GER-6435 | MILESTONES | BRAFER | YARD 4 |
|  | 6 | **SCANNER** |  |  | 2026-02-12 | 2026-03-18 |  |  |  |  |  |  |  |  |  |  |  |  |  |
| PSUAY-MIL-GER-1330 |  | Recieve Steel Structure form Scanner Canopy | milestone | 0d | 2026-02-12 | 2026-02-12 | PSUAY-MIL-GER-1450 |  |  |  | 0d | 25.12d | finish on 2026-02-12 | PSUAY_DIAS_CORRIDOS | MLT | PSUAY-MIL-GER-1330 | MILESTONES | BRAFER | SCANNER |
| PSUAY-MIL-GER-1340 |  | Liberation for installation of Cameras in Scanner Area | milestone | 0d | 2026-03-18 | 2026-03-18 | PSUAY-LZE-ELE-10560, PSUAY-CAG-CIV-10360 |  |  |  | 33.12d | 33d |  | PSUAY_DIAS_CORRIDOS | MLT | PSUAY-MIL-GER-1340 | MILESTONES | G4S | SCANNER |
|  | 7 | **YARD 5** |  |  | 2026-01-25 | 2026-01-28 |  |  |  |  |  |  |  |  |  |  |  |  |  |
| PSUAY-MIL-GER-1350 |  | Recieve Yard 5 complete area from ATP | milestone | 0d | 2026-01-25 | 2026-01-25 | PSUAY-MIL-GER-1450 FS+22d |  |  |  | 1d | 0d |  | PSUAY_DIAS_CORRIDOS | MLT | PSUAY-MIL-GER-1350 | MILESTONES | APM | YARD 5 |
| PSUAY-MIL-GER-1360 |  | Start activities in Yard 5 (Complete site Possession) | milestone | 0d | 2026-01-25 | 2026-01-25 | PSUAY-MIL-GER-1450 FS+23d, PSUAY-MIL-GER-1350 FF |  |  |  | 1d |  |  | PSUAY_DIAS_CORRIDOS | MLT | PSUAY-MIL-GER-1360 | MILESTONES | APM | YARD 5 |
| PSUAY-MIL-GER-1370 |  | Recieve Panel P2.11 | milestone | 0d | 2026-01-25 | 2026-01-25 | PSUAY-MIL-GER-1450 FF+73d |  |  |  | 66d | 1d |  | PSUAY_DIAS_CORRIDOS | MLT | PSUAY-MIL-GER-1370 | MILESTONES | LUZVILLE | YARD 5 |
| PSUAY-MIL-GER-1380 |  | Recieve Panel P2.12 | milestone | 0d | 2026-01-25 | 2026-01-25 | PSUAY-MIL-GER-1450 FF+73d |  |  |  | 60d | 1d |  | PSUAY_DIAS_CORRIDOS | MLT | PSUAY-MIL-GER-1380 | MILESTONES | LUZVILLE | YARD 5 |
| PSUAY-MIL-GER-1390 |  | Recieve EV Charges | milestone | 0d | 2026-01-28 | 2026-01-28 | PSUAY-MIL-GER-1450 FF+81d |  |  |  | 28d | 0d |  | PSUAY_DIAS_CORRIDOS | MLT | PSUAY-MIL-GER-1390 | MILESTONES | LUZVILLE | YARD 5 |
|  | 8 | **GC1** |  |  | 2026-01-25 | 2026-01-25 |  |  |  |  |  |  |  |  |  |  |  |  |  |
| PSUAY-MIL-GER-1400 |  | Recieve GC1 area from APM (Clean, Graded and Clear) | milestone | 0d | 2026-01-25 | 2026-01-25 | PSUAY-MIL-GER-1450 FS+58d |  |  |  | 8.5d | 1d |  | PSUAY_DIAS_CORRIDOS | MLT | PSUAY-MIL-GER-1400 | MILESTONES | APM | CG1 |

Notes:
- PSUAY-MIL-GER-1040.1: Translate: Término das atividades para a entrega da área Alfandegada
- PSUAY-MIL-GER-1290: Translate: Projeto aprovado do painel RTU (SCADA)
- PSUAY-MIL-GER-1280: Translate: Aceitação de carregadores para veículos elétricos
- PSUAY-MIL-GER-1300: Translate: Chegada da RTU do painel (SCADA)
- PSUAY-MIL-GER-6425: Translate: Receber a estrutura metálica dos racks refrigerados no pátio 4.
- PSUAY-MIL-GER-6435: Translate: Chegada da estrutura de Aço da SE-03
- PSUAY-MIL-GER-1330: Translate: Recepção da estrutura de Aço da cobertura do Scanner
- PSUAY-MIL-GER-1340: Translate: Libertação para instalação de câmeras na área de scanners
- PSUAY-MIL-GER-1350: Translate: Recepção da área completa do pátio 5 da ATP
- PSUAY-MIL-GER-1360: Translate: Iniciar atividades no Pátio 5 (Posse completa do local)
- PSUAY-MIL-GER-1370: Translate: Entrega do painel P2.11
- PSUAY-MIL-GER-1380: Translate: Entrega do painel P2.12
- PSUAY-MIL-GER-1390: Translate: Entrega dos carregadores de carros elétricos
- PSUAY-MIL-GER-1400: Translate: Recepção da área do GC1 da APM (Limpeza, Graduado e Limpo)

| ID | WBS | Activity | Type | Duration | Start | Finish | Predecessors | Complete | Remaining | Planned start | Planned finish | Total float | Free float | Constraint | Calendar | Resources | ACTIVITY ID COD. | FASES DE ENTREGA | RESPONSÁVEL | ÁREAS | PHASES - YARD | Atualização | Check Pred |
| --- | --- | --- | --- | --- | --- | --- | --- | --- | --- | --- | --- | --- | --- | --- | --- | --- | --- | --- | --- | --- | --- | --- | --- |
|  | 1 | **CLOSING** |  |  | 2026-04-20 | 2026-04-20 |  |  |  |  |  |  |  |  |  |  |  |  |  |  |  |  |  |
| PSUAY-MIL-GER-1270 |  | Completion and Handover of the Project | milestone | 0d | 2026-04-20 | 2026-04-20 | PSUAY-CAG-INF-5670, PSUAY-CAG-INF-5840, PSUAY-PMC-INF-5890, PSUAY-CAG-CIV-5750, PSUAY-CAG-CIV-5910, PSUAY-CDX-GER-5950, PSUAY-MTB-GER-5990, PSUAY-CAG-CIV-6000, PSUAY-CAG-CIV-6010, PSUAY-LZE-ELE-5970, PSUAY-LZE-ELE-5990, PSUAY-LZE-ELE-6140, PSUAY-LZE-ELE-6010, PSUAY-LZE-ELE-6070, PSUAY-LZE-ELE-6030, PSUAY-LZE-ELE-6260, PSUAY-LZE-GER-6020, PSUAY-LZE-ELE-7620, PSUAY-LZE-ELE-7640, PSUAY-LZE-ELE-7650, PSUAY-LZE-ELE-7710, PSUAY-LZE-ELE-7770, PSUAY-LZE-ELE-7830, PSUAY-LZE-ELE-7840, PSUAY-LZE-ELE-7900, PSUAY-LZE-ELE-7910, PSUAY-LZE-ELE-7930, PSUAY-LZE-ELE-11680, PSUAY-LZE-ELE-11740, PSUAY-LZE-ELE-7990, PSUAY-LZE-ELE-8000, PSUAY-LZE-ELE-8020, PSUAY-LZE-ELE-8040, PSUAY-LZE-ELE-8100, PSUAY-LZE-ELE-8160, PSUAY-LZE-ELE-8220, PSUAY-LZE-ELE-8280, PSUAY-LZE-ELE-8340, PSUAY-LZE-ELE-8400, PSUAY-MTB-GER-7550, PSUAY-CAG-CIV-7560, PSUAY-CAG-CIV-7600, PSUAY-CAG-INF-6880, PSUAY-PMC-INF-6920, PSUAY-CAG-INF-6840, PSUAY-CAG-INF-6950, PSUAY-MIL-GER-1040.1 FF, PSUAY-CAG-CIV-7400, PSUAY-CAG-CIV-7420, PSUAY-CAG-CIV-7480, PSUAY-CAG-CIV-7500, PSUAY-CDX-GER-7020, PSUAY-CDX-GER-7060, PSUAY-CDX-GER-7100, PSUAY-CDX-GER-7140, PSUAY-CAG-INF-10740, PSUAY-ECM-INF-10690, PSUAY-LZE-ELE-11350, PSUAY-CAG-CIV-11450, PSUAY-PMC-INF-10270, PSUAY-CAG-INF-11510, PSUAY-CAG-INF-11570, PSUAY-PMC-INF-11620, PSUAY-G4S-ELE-12520, PSUAY-G4S-ELE-5830, PSUAY-LZE-ELE-8650, PSUAY-LZE-ELE-11390, PSUAY-CAG-INF-6280, PSUAY-CAG-CIV-6980, PSUAY-CAG-CIV-7220, PSUAY-CAG-MEC-7320, PSUAY-CAG-MEC-7340, PSUAY-CAG-CIV-12230, PSUAY-LZE-ELE-9140, PSUAY-CAG-INF-10750, PSUAY-LZE-ELE-6660, PSUAY-CAG-INF-4290, PSUAY-LZE-ELE-8700, PSUAY-LZE-ELE-8430, PSUAY-LZE-ELE-8460, PSUAY-LZE-ELE-8490, PSUAY-ECM-INF-10760, PSUAY-LZE-ELE-8730, PSUAY-LZE-ELE-8760, PSUAY-LZE-ELE-8790, PSUAY-LZE-ELE-8820, PSUAY-LZE-ELE-8850, PSUAY-LZE-ELE-8880, PSUAY-LZE-ELE-8910, PSUAY-LZE-ELE-10560, PSUAY-LZE-ELE-10590, PSUAY-LZE-ELE-8940, PSUAY-LZE-ELE-8970, PSUAY-LZE-ELE-10160 FF, PSUAY-LZE-ELE-9990, PSUAY-LZE-ELE-9820, PSUAY-LZE-ELE-9650, PSUAY-LZE-ELE-9480, PSUAY-LZE-ELE-9310 FF, PSUAY-LZE-ELE-10200 FF, PSUAY-LZE-ELE-11770 FF, PSUAY-LZE-ELE-11800 FF, PSUAY-LZE-ELE-11820 FF, PSUAY-LZE-ELE-11990 FF, PSUAY-LZE-ELE-12040 FF, PSUAY-CAG-INF-10530 FF, PSUAY-LZE-ELE-6690 FF, PSUAY-LZE-ELE-6720 FF, PSUAY-CAG-INF-8520 FF, PSUAY-CAG-CIV-7610 FF, PSUAY-MIL-GER-1340 FF, PSUAY-ECM-CIV-10970 FF, PSUAY-LZE-ELE-6540 FF, PSUAY-BRF-EST-10400 FF, PSUAY-CAG-MEC-10430 FF, PSUAY-LZE-ELE-6270 FF, PSUAY-LZE-ELE-6370 FF, PSUAY-LZE-ELE-6400 FF, PSUAY-LZE-ELE-6430 FF, PSUAY-LZE-ELE-6500 FF, PSUAY-LZE-ELE-6580 FF, PSUAY-CAG-CIV-7300 FF, PSUAY-CAG-INF-10300 FF, PSUAY-CAG-MEC-10460 FF, PSUAY-CAG-MEC-10510 FF, PSUAY-CAG-MEC-10520 FF, PSUAY-LZE-ELE-11440 FF, PSUAY-LZE-ELE-11900 FF, PSUAY-LZE-ELE-11950 FF, PSUAY-LGT-INF-12130 FF, PSUAY-LZE-ELE-12720 FF, PSUAY-LGT-CIV-12800 FF, PSUAY-LZE-MEC-12850 FF, PSUAY-ECM-INF-10700 FF, PSUAY-CAG-INF-10950 FF, PSUAY-CAG-INF-12890 FF, PSUAY-CAG-INF-11280 FF, PSUAY-MIL-GER-1420 FF, PSUAY-MIL-GER-1440 FF, PSUAY-LZE-ELE-11400 FF, PSUAY-LZE-ELE-11410 FF, PSUAY-LZE-ELE-11420 FF, PSUAY-LZE-ELE-11430 FF, PSUAY-G4S-EST-1490 FF |  |  |  |  | 0.12d |  |  | PSUAY_DIAS_CORRIDOS |  | PSUAY-MIL-GER-1270 | MILESTONES | CONSAG | GERAL | MLT |  |  |
|  | 4 | **PRELIMINARY WORK** |  |  | 2025-11-10 | 2026-03-30 |  |  |  |  |  |  |  |  |  |  |  |  |  |  |  |  |  |
| PSUAY-MIL-GER-12920 |  | Cumulative progress up to 14/11/25 |  | 1d | 2025-11-10 A | 2025-11-10 A |  | 100% |  |  |  |  |  |  |  | PROFIS [234353 h] | PSUAY-MIL-GER-1410 |  | CONSAG |  | PRW |  |  |
| PSUAY-MIL-GER-1260 |  | Mobilization of the SS2 commissioning team. |  | 0d | 2026-01-25 | 2026-01-25 | PSUAY-MIL-GER-1450 FS+54d |  |  |  |  | 66d | 1d |  | PSUAY_DIAS_CORRIDOS | PROFIS | PSUAY-MIL-GER-1260 | MILESTONES | LUZVILLE | SS2 | PRW |  |  |
| PSUAY-MIL-GER-12930 |  | Demobilization of Moi/Mod/Eqpto |  | 42d | 2026-01-30 | 2026-03-30 | PSUAY-MIL-GER-12920 FS+54d |  |  |  |  | 34d |  |  |  | PROFIS [13639.6 h] | PSUAY-MIL-GER-1420 |  | CONSAG |  | PRW |  |  |
|  | 1 | **ENGINEERING** |  |  | 2025-11-10 | 2026-03-20 |  |  |  |  |  |  |  |  |  |  |  |  |  |  |  |  |  |
| PSUAY-MIL-GER-1410 |  | Cumulative progress up to 14/11/25 |  | 1d | 2025-11-10 A | 2025-11-10 A | PSUAY-MIL-GER-1450 | 100% |  |  |  |  |  |  |  | PROFIS [2682537 h] | PSUAY-MIL-GER-1410 |  | CONSAG |  | ENG |  |  |
| PSUAY-MIL-GER-1420 |  | Progress expected after 14/11/25 |  | 94d | 2025-11-10 A | 2026-03-20 | PSUAY-MIL-GER-1410 | 70% | 40d | 2025-12-01 | 2026-04-15 | 21d |  |  |  | PROFIS [31256.4 h] | PSUAY-MIL-GER-1420 |  | CONSAG |  | ENG | OK |  |
|  | 3 | **PROCUREMENT** |  |  | 2025-11-10 | 2026-03-20 |  |  |  |  |  |  |  |  |  |  |  |  |  |  |  |  |  |
| PSUAY-MIL-GER-1430 |  | Cumulative progress up to 14/11/25 |  | 1d | 2025-11-10 A | 2025-11-10 A | PSUAY-MIL-GER-1450 | 100% |  |  |  |  |  |  |  | PROFIS [24257064 h] | PSUAY-MIL-GER-1430 |  | CONSAG |  | PRO |  |  |
| PSUAY-MIL-GER-1440 |  | Progress expected after 14/11/25 |  | 94d | 2025-11-10 A | 2026-03-20 | PSUAY-MIL-GER-1430 | 60% | 40d | 2025-12-01 | 2026-04-15 | 21d |  |  |  | PROFIS [348894 h] | PSUAY-MIL-GER-1440 |  | CONSAG |  | PRO | OK |  |
| PSUAY-LZE-GER-5150 |  | Recieve infrastructure for beds and cable trays LV SS2 (HTB) |  | 0d | 2026-01-25 | 2026-01-25 | PSUAY-MIL-GER-1450 FS+21d |  |  |  |  | 32d | 1d |  | PSUAY_DIAS_CORRIDOS | PROFIS | PSUAY-LZE-GER-5150 | MILESTONES | LUZVILLE | SS2 | CNT |  | UDF_G1 |
|  | 10 | **IMPLEMENTATION** |  |  | 2025-11-09 | 2026-04-20 |  |  |  |  |  |  |  |  |  |  |  |  |  |  |  |  |  |
|  | 4 | **PACKAGE - CUMMULATIVE PROGRESS** |  |  | 2025-11-09 | 2025-11-09 |  |  |  |  |  |  |  |  |  |  |  |  |  |  |  |  |  |
| PSUAY-MIL-GER-1450 |  | Cumulative progress up to 14/11/25 |  | 0d | 2025-11-09 A | 2025-11-09 A |  | 100% |  | 2025-11-10 | 2025-11-10 |  |  | start on or after 2025-11-08 | PSUAY_DIAS_CORRIDOS |  | PSUAY-MIL-GER-1450 | CONCLUSÃO | CONSAG | GERAL | CNT |  | UDF_G1 |
|  | 1 | **PACKAGE - SUBSTATION SS1** |  |  | 2025-11-10 | 2026-02-06 |  |  |  |  |  |  |  |  |  |  |  |  |  |  |  |  |  |
|  | 1 | **SUBSTATION - SS1 PRE-COMMISSIONING** |  |  | 2025-11-10 | 2026-01-19 |  |  |  |  |  |  |  |  |  |  |  |  |  |  |  |  |  |
|  | 1 | **PAVEMENT** |  |  | 2025-11-10 | 2025-11-12 |  |  |  |  |  |  |  |  |  |  |  |  |  |  |  |  |  |
|  | 5 | **FLOOR TYPE 04B (LIGHT DUST ASPHALT)** |  |  | 2025-11-10 | 2025-11-12 |  |  |  |  |  |  |  |  |  |  |  |  |  |  |  |  |  |
|  | 3 | **ASPHALT (LIDERMAC)** |  |  | 2025-11-10 | 2025-11-12 |  |  |  |  |  |  |  |  |  |  |  |  |  |  |  |  |  |
| PSUAY-LDM-INF-1460 |  | Execute asphalt paving of type 04B of SS1 |  | 3d | 2025-11-10 A | 2025-11-12 A | PSUAY-MIL-GER-1450 | 100% |  |  |  |  |  |  |  | PROFIS [2223.15 h]; ASPHALT [2200 m³] | PSUAY-LDM-INF-1460 | SS1 | LIDERMAC | SS1-PRE COM | CNT |  |  |
|  | 3 | **POSTS** |  |  | 2025-12-15 | 2026-01-19 |  |  |  |  |  |  |  |  |  |  |  |  |  |  |  |  |  |
|  | 1 | **CT POST** |  |  | 2025-12-15 | 2026-01-19 |  |  |  |  |  |  |  |  |  |  |  |  |  |  |  |  |  |
|  | 1 | **CIVIL** |  |  | 2025-12-15 | 2025-12-15 |  |  |  |  |  |  |  |  |  |  |  |  |  |  |  |  |  |
| PSUAY-CAG-CIV-1470 |  | CT-M07-01 - Execute civil base for SS1 CT poles. |  | 1d | 2025-12-15 A | 2025-12-15 A | PSUAY-MIL-GER-1450 FS+35d | 100% |  |  |  |  |  |  |  | PROFIS [243.62 h] | PSUAY-CAG-CIV-1470 | SS1 | CONSAG | SS1-PRE COM | CNT |  |  |

Notes:
- PSUAY-MIL-GER-1270: Translate: Término e Entrega do Projeto
- PSUAY-MIL-GER-12920: Translate: Progresso acumulado até 14/11/25
- PSUAY-MIL-GER-1260: Translate: Mobilização equipe de comissionamento da SS2
- PSUAY-MIL-GER-12930: Translate: Progresso esperado após 14/11/25
- PSUAY-MIL-GER-1410: Translate: Progresso acumulado até 14/11/25
- PSUAY-MIL-GER-1420: Translate: Progresso esperado após 14/11/25
- PSUAY-MIL-GER-1430: Translate: Progresso acumulado até 14/11/25
- PSUAY-MIL-GER-1440: Translate: Progresso esperado após 14/11/25
- PSUAY-LZE-GER-5150: Translate: Finalizar infraestrutura de leitos e eletrocalhas LV SS2 (HTB)
- PSUAY-MIL-GER-1450: Translate: Avanço acumulado até a data 09/11/25
- PSUAY-LDM-INF-1460: Translate: Executar asfalto do pavimento tipo 04B da SS1
- PSUAY-CAG-CIV-1470: Translate: Executar base civil dos Postes CT da SS1

| ID | WBS | Activity | Duration | Start | Finish | Predecessors | Complete | Planned start | Planned finish | Calendar | Resources | FASES DE ENTREGA | RESPONSÁVEL | PHASES - YARD | Atualização | ACTIVITY ID COD. | ÁREAS | Verif_Campo |
| --- | --- | --- | --- | --- | --- | --- | --- | --- | --- | --- | --- | --- | --- | --- | --- | --- | --- | --- |
|  | 3 | **LIGHT POST (LUZVILLE)** |  | 2026-01-05 | 2026-01-05 |  |  |  |  |  |  |  |  |  |  |  |  |  |
| PSUAY-LZE-ELE-1480 |  | CT-M07-01 - Perform assembly of the SS1 CT (Luzville) poles. | 1d | 2026-01-05 A | 2026-01-05 A | PSUAY-CAG-CIV-1470 | 100% |  |  |  | PROFIS [563.01 h]; POST CCTV [1 un] | SS1 | LUZVILLE | CNT |  |  |  |  |
|  | 2 | **CAMERAS (G4S)** |  | 2026-01-19 | 2026-01-19 |  |  |  |  |  |  |  |  |  |  |  |  |  |
| PSUAY-G4S-EST-1490 |  | CT-M07-01 - Release CT-type pole for installation of SS1 CCTV cameras (G4S). | 1d | 2026-01-19 A | 2026-01-19 A | PSUAY-MIL-GER-1450, PSUAY-LZE-ELE-1480 | 100% |  |  | PSUAY - ELETROMEC - 1T - SEM HE | PROFIS | SS1 | G4S | ENG | OK | PSUAY-G4S-EST-1490 | SS1-PRE COM |  |
|  | 6 | **ELECTRICAL (LUZVILLE)** |  | 2025-11-10 | 2025-11-14 |  |  |  |  |  |  |  |  |  |  |  |  |  |
|  | 3 | **OPEN SUBSTATION SE 69KV** |  | 2025-11-10 | 2025-11-13 |  |  |  |  |  |  |  |  |  |  |  |  |  |
|  | 1 | **GROUNDING RESISTOR 69/13.8KVA** |  | 2025-11-10 | 2025-11-11 |  |  |  |  |  |  |  |  |  |  |  |  |  |
| PSUAY-LZE-ELE-1500 |  | Perform installation of the grounding resistor infrastructure for the open substation SS1. | 2d | 2025-11-10 A | 2025-11-11 A | PSUAY-MIL-GER-1450 | 100% |  |  | PSUAY - ELETROMEC - 1T - SEM HE | PROFIS [1387.25 h] | SS1 | LUZVILLE | CNT |  | PSUAY-LZE-ELE-1500 | SS1-PRE COM | Ok |
|  | 2 | **LIGHTING** |  | 2025-11-10 | 2025-11-13 |  |  |  |  |  |  |  |  |  |  |  |  |  |
| PSUAY-LZE-ELE-1510 |  | Perform electrical infrastructure assembly for the lighting system of the SS1 open substation. | 2d | 2025-11-10 A | 2025-11-11 A | PSUAY-LZE-ELE-1500 SS | 100% |  |  | PSUAY - ELETROMEC - 1T - SEM HE | PROFIS [1387.25 h] | SS1 | LUZVILLE | CNT |  | PSUAY-LZE-ELE-1510 | SS1-PRE COM | Ok |
| PSUAY-LZE-ELE-1520 |  | Perform installation of lighting fixtures for the open substation SS1. | 2d | 2025-11-10 A | 2025-11-11 A | PSUAY-LZE-ELE-1510 SS | 100% |  |  | PSUAY - ELETROMEC - 1T - SEM HE | PROFIS [1387.25 h] | SS1 | LUZVILLE | CNT |  | PSUAY-LZE-ELE-1520 | SS1-PRE COM | Ok |
| PSUAY-LZE-ELE-1530 |  | Perform cable laying for lighting at the open substation SS1. | 2d | 2025-11-10 A | 2025-11-11 A | PSUAY-LZE-ELE-1520 SS | 100% |  |  | PSUAY - ELETROMEC - 1T - SEM HE | PROFIS [1387.25 h] | SS1 | LUZVILLE | CNT |  | PSUAY-LZE-ELE-1530 | SS1-PRE COM | Ok |
| PSUAY-LZE-ELE-1160 |  | Perform interconnection and connection of the lighting cables of the open substation SS1. | 2d | 2025-11-12 A | 2025-11-13 A | PSUAY-LZE-ELE-1530 | 100% |  |  | PSUAY - ELETROMEC - 1T - SEM HE | PROFIS [1387.25 h] | SS1 | LUZVILLE | CNT |  | PSUAY-LZE-ELE-1540 | SS1-PRE COM | Ok |
|  | 2 | **CABLE LAUNCH** |  | 2025-11-10 | 2025-11-14 |  |  |  |  |  |  |  |  |  |  |  |  |  |
|  | 1 | **HV CABLES (LUZVILE)** |  | 2025-11-13 | 2025-11-13 |  |  |  |  |  |  |  |  |  |  |  |  |  |
| PSUAY-LZE-ELE-1170 |  | Perform HV cable laying from SS1 (Luzville) | 1d | 2025-11-13 A | 2025-11-13 A | PSUAY-LZE-ELE-1500 FS+1d | 100% |  |  | PSUAY - ELETROMEC - 1T - SEM HE | PROFIS [693.62 h] | SS1 | LUZVILLE | CNT |  | PSUAY-LZE-ELE-1550 | SS1-PRE COM | Ok |
|  | 5 | **CONTROL CABLES (LUZVILE)** |  | 2025-11-10 | 2025-11-14 |  |  |  |  |  |  |  |  |  |  |  |  |  |
| PSUAY-LZE-ELE-1180 |  | Perform cable laying operation for SS1 Command (Luzville) | 5d | 2025-11-10 A | 2025-11-14 A | PSUAY-MIL-GER-1450 | 100% |  |  | PSUAY - ELETROMEC - 1T - SEM HE | PROFIS [3468.12 h] | SS1 | LUZVILLE | CNT |  | PSUAY-LZE-ELE-1560 | SS1-PRE COM | Ok |
|  | 1 | **GROUNDING** |  | 2025-11-10 | 2025-11-13 |  |  |  |  |  |  |  |  |  |  |  |  |  |
| PSUAY-LZE-ELE-1190 |  | Perform grounding of the equipment at the open substation of SS1. | 4d | 2025-11-10 A | 2025-11-13 A | PSUAY-MIL-GER-1450 | 100% |  |  | PSUAY - ELETROMEC - 1T - SEM HE | PROFIS [2774.5 h] | SS1 | LUZVILLE | CNT |  | PSUAY-LZE-ELE-1570 | SS1-PRE COM | Ok |
|  | 5 | **SUBSTATION - SS1 COMMISSIONING** |  | 2025-11-10 | 2026-02-06 |  |  |  |  |  |  |  |  |  |  |  |  |  |
|  | 2 | **PAVEMENT** |  | 2025-11-10 | 2025-11-29 |  |  |  |  |  |  |  |  |  |  |  |  |  |
|  | 7 | **FLOOR TYPE 08 (LANDSCAPING)** |  | 2025-11-10 | 2025-11-29 |  |  |  |  |  |  |  |  |  |  |  |  |  |
| PSUAY-CAG-INF-1580 |  | Execute Install grass pavement type 08 of SS1 | 24d | 2025-11-10 A | 2025-11-29 A | PSUAY-MIL-GER-1450 | 100% | 2025-11-10 | 2025-12-11 |  | PROFIS [245921 h] | SS1 | CONSAG | CNT |  | PSUAY-CAG-INF-1580 | SS1-PRE COM |  |

Notes:
- PSUAY-G4S-EST-1490: Translate: Liberar poste tipo CT para instalação das câmeras CFTV (G4S) da SS1
- PSUAY-LZE-ELE-1500: Translate: Executar montagem de infraestrutura do resistor de aterramento da subestação aberta da SS1
- PSUAY-LZE-ELE-1510: Translate: Executar montagem de infraesutrura elétrica do sistema de iluminação da subestação aberta da SS1
- PSUAY-LZE-ELE-1520: Translate: Executar montagem de luminárias da subestação aberta do SS1
- PSUAY-LZE-ELE-1530: Translate: Executar lançamento de cabos de iluminação da subestação aberta do SS1
- PSUAY-LZE-ELE-1160: Translate: Executar interligação e conectorização dos cabos de iluminação da subestação aberta do SS1
- PSUAY-LZE-ELE-1170: Translate: Executar lançamento de cabos HV da SS1 (Luzville)
- PSUAY-LZE-ELE-1180: Translate: Executar lançamento de cabos Comando da SS1 (Luzville)
- PSUAY-LZE-ELE-1190: Translate: Executar aterramendo dos equipamentos da subestação aberta da SS1
- PSUAY-CAG-INF-1580: Translate: Executar grama do pavimento tipo 08 da SS1

| ID | WBS | Activity | Duration | Start | Finish | Predecessors | Complete | Planned start | Planned finish | Total float | Free float | Calendar | Resources | Verif_Campo | ACTIVITY ID COD. | FASES DE ENTREGA | RESPONSÁVEL | ÁREAS | PHASES - YARD | Atualização |
| --- | --- | --- | --- | --- | --- | --- | --- | --- | --- | --- | --- | --- | --- | --- | --- | --- | --- | --- | --- | --- |
|  | 3 | **ELECTRICAL (LUZVILLE)** |  | 2025-11-10 | 2026-02-06 |  |  |  |  |  |  |  |  |  |  |  |  |  |  |  |
|  | 8 | **CONVENTIONAL LIGHTING SYSTEM** |  | 2025-11-10 | 2025-11-19 |  |  |  |  |  |  |  |  |  |  |  |  |  |  |  |
| PSUAY-LZE-ELE-1230 |  | Perform assembly of luminaires for the conventional SS1 lighting system. | 3d | 2025-11-10 A | 2025-11-12 A | PSUAY-LZE-ELE-1220 | 100% |  |  |  |  | PSUAY - ELETROMEC - 1T - SEM HE | PROFIS [2080.87 h] | Executado 80% | PSUAY-LZE-ELE-1600 | SS1 | LUZVILLE | SS1-COM | CNT |  |
| PSUAY-LZE-ELE-1620 |  | Perform interconnection of the conventional lighting system of SS1 | 4d | 2025-11-10 A | 2025-11-13 A | PSUAY-LZE-ELE-1240 | 100% |  |  |  |  | PSUAY - ELETROMEC - 1T - SEM HE | PROFIS [2774.5 h] | Executado 80% | PSUAY-LZE-ELE-1620 | SS1 | LUZVILLE | SS1-COM | CNT |  |
| PSUAY-LZE-ELE-1240 |  | Perform cable laying for the conventional lighting system of SS1. | 5d | 2025-11-13 A | 2025-11-19 A | PSUAY-LZE-ELE-1230 | 100% |  |  |  |  | PSUAY - ELETROMEC - 1T - SEM HE | PROFIS [3468.12 h] | Executado 80% | PSUAY-LZE-ELE-1610 | SS1 | LUZVILLE | SS1-COM | CNT |  |
| PSUAY-LZE-ELE-1220 |  | Perform installation of the conventional lighting system infrastructure for SS1. | 4d | 2025-11-14 A | 2025-11-19 A | PSUAY-LZE-ELE-1160 | 100% |  |  |  |  | PSUAY - ELETROMEC - 1T - SEM HE | PROFIS [2774.5 h] | Executado 80% | PSUAY-LZE-ELE-1590 | SS1 | LUZVILLE | SS1-COM | CNT |  |
|  | 2 | **HVAC SYSTEM** |  | 2026-01-26 | 2026-02-06 |  |  |  |  |  |  |  |  |  |  |  |  |  |  |  |
| PSUAY-LZE-ELE-1280 |  | Perform assembly of refrigeration piping and drains for the SS1 HVAC system. | 10d | 2026-01-26 | 2026-02-06 | PSUAY-LZE-ELE-1630 SS |  |  |  | 51d | 0d | PSUAY - ELETROMEC - 1T - SEM HE | PROFIS [6936.24 h] |  | PSUAY-LZE-ELE-1650 | SS1 | LUZVILLE | SS1-COM | CNT |  |
| PSUAY-LZE-ELE-1630 |  | Perform assembly of the evaporator unit for the SS1 HVAC system. | 3d | 2026-01-26 | 2026-01-28 | PSUAY-MIL-GER-1021 |  |  |  | 51d | 0d | PSUAY - ELETROMEC - 1T - SEM HE | PROFIS [2080.87 h] |  | PSUAY-LZE-ELE-1630 | SS1 | LUZVILLE | SS1-COM | CNT |  |
| PSUAY-LZE-ELE-1640 |  | Perform assembly of the condensing unit for the SS1 HVAC system. | 3d | 2026-01-29 | 2026-02-02 | PSUAY-LZE-ELE-1630 |  |  |  | 55d | 4d | PSUAY - ELETROMEC - 1T - SEM HE | PROFIS [2080.87 h] |  | PSUAY-LZE-ELE-1640 | SS1 | LUZVILLE | SS1-COM | CNT |  |
| PSUAY-LZE-ELE-1290 |  | Perform electrical installations for the SS1 HVAC system. | 4d | 2026-02-03 | 2026-02-06 | PSUAY-LZE-ELE-1280 FF |  |  |  | 51d | 0d | PSUAY - ELETROMEC - 1T - SEM HE | PROFIS [2774.5 h] |  | PSUAY-LZE-ELE-1660 | SS1 | LUZVILLE | SS1-COM | CNT |  |
|  | 9 | **LIGHTNING PROTECTION SYSTEM AND GROUNDING MESH** |  | 2025-11-22 | 2025-12-23 |  |  |  |  |  |  |  |  |  |  |  |  |  |  |  |
| PSUAY-LZE-ELE-1300 |  | Perform assembly of the lightning protection and grounding system for SS1. | 11d | 2025-11-22 A | 2025-12-23 A | PSUAY-LZE-ELE-1630 SS | 100% | 2025-12-01 | 2025-12-15 |  |  | PSUAY - ELETROMEC - 1T - SEM HE | PROFIS [9710.74 h] | Executado 0% | PSUAY-LZE-ELE-1670 | SS1 |  | SS1-COM | CNT |  |
|  | 7 | **RTU AUTOMATION PANEL** |  | 2025-12-01 | 2026-01-16 |  |  |  |  |  |  |  |  |  |  |  |  |  |  |  |
| PSUAY-LZE-ELE-1680 |  | Receive RTU equipment on the SS1 website. | 11d | 2025-12-01 A | 2025-12-06 A | PSUAY-MIL-GER-1034 | 100% | 2025-12-01 | 2025-12-15 |  |  | PSUAY - ELETROMEC - 1T - SEM HE | PROFIS [7629.86 h] | Ok | PSUAY-LZE-ELE-1680 | SS1 | LUZVILLE | SS1-COM | PRO |  |
| PSUAY-LZE-ELE-1690 |  | Perform positioning and securing of the RTU in SS1 | 1d | 2025-12-02 A | 2025-12-06 A | PSUAY-LZE-ELE-1680 | 100% | 2025-12-16 | 2025-12-16 |  |  | PSUAY - ELETROMEC - 1T - SEM HE | PROFIS [693.62 h] | Ok | PSUAY-LZE-ELE-1690 | SS1 | LUZVILLE | SS1-COM | CNT |  |
| PSUAY-LZE-ELE-1700 |  | Perform RTU cable laying on SS1 | 2d | 2025-12-22 A | 2025-12-23 A | PSUAY-LZE-ELE-1690 SS | 100% |  |  |  |  | PSUAY - ELETROMEC - 1T - SEM HE | PROFIS [1387.25 h] |  | PSUAY-LZE-ELE-1700 | SS1 | LUZVILLE | SS1-COM | CNT |  |
| PSUAY-LZE-ELE-1710 |  | Perform preparation and connection of the RTU cables on SS1. | 1d | 2025-12-22 A | 2026-01-16 A | PSUAY-LZE-ELE-1700 | 100% | 2025-12-24 | 2025-12-24 |  |  | PSUAY - ELETROMEC - 1T - SEM HE | PROFIS [693.62 h] |  | PSUAY-LZE-ELE-1710 | SS1 | LUZVILLE | SS1-COM | CNT | OK |
|  | 10 | **AUTOMATION PANEL - COMMUNICATION RACK** |  | 2025-12-01 | 2026-01-12 |  |  |  |  |  |  |  |  |  |  |  |  |  |  |  |
| PSUAY-LZE-ELE-1720 |  | Receive equipment from the Communication Rack at the SS1 site. | 11d | 2025-12-01 A | 2025-12-06 A | PSUAY-MIL-GER-1034 | 100% | 2025-12-01 | 2025-12-15 |  |  | PSUAY - ELETROMEC - 1T - SEM HE | PROFIS [7629.86 h] |  | PSUAY-LZE-ELE-1720 | SS1 | LUZVILLE | SS1-COM | PRO |  |
| PSUAY-LZE-ELE-1730 |  | Perform positioning and securing of the Communication Rack in SS1. | 1d | 2025-12-15 A | 2025-12-15 A | PSUAY-LZE-ELE-1720 | 100% |  |  |  |  | PSUAY - ELETROMEC - 1T - SEM HE | PROFIS [693.62 h] |  | PSUAY-LZE-ELE-1730 | SS1 | LUZVILLE | SS1-COM | CNT |  |
| PSUAY-LZE-ELE-1740 |  | Perform cable laying from the Communication Rack to SS1 | 2d | 2025-12-16 A | 2025-12-17 A | PSUAY-LZE-ELE-1730 | 100% |  |  |  |  | PSUAY - ELETROMEC - 1T - SEM HE | PROFIS [1387.25 h] |  | PSUAY-LZE-ELE-1740 | SS1 | LUZVILLE | SS1-COM | CNT |  |
| PSUAY-LZE-ELE-1750 |  | Prepare and connect the cables for the Communication Rack in SS1. | 1d | 2025-12-18 A | 2026-01-12 A | PSUAY-LZE-ELE-1740 | 100% | 2025-12-18 | 2025-12-18 |  |  | PSUAY - ELETROMEC - 1T - SEM HE | PROFIS [693.62 h] |  | PSUAY-LZE-ELE-1750 | SS1 | LUZVILLE | SS1-COM | CNT | OK |
|  | 4 | **SDAI** |  | 2025-11-17 | 2025-12-23 |  |  |  |  |  |  |  |  |  |  |  |  |  |  |  |
| PSUAY-LZE-ELE-1760 |  | Perform SS1 SDAI infrastructure setup | 12d | 2025-11-17 A | 2025-12-06 A | PSUAY-MIL-GER-1450 FS+6d | 100% | 2025-11-17 | 2025-12-02 |  |  | PSUAY - ELETROMEC - 1T - SEM HE | PROFIS [8323.49 h] |  | PSUAY-LZE-ELE-1760 | SS1 | LUZVILLE | SS1-COM | CNT |  |
| PSUAY-LZE-ELE-1770 |  | Perform hydraulic assembly of the SS1 fire detection and alarm system. | 15d | 2025-11-21 A | 2025-12-23 A | PSUAY-LZE-ELE-1760 SS+4d | 100% | 2025-11-21 | 2025-12-11 |  |  | PSUAY - ELETROMEC - 1T - SEM HE | PROFIS [10404.4 h] |  | PSUAY-LZE-ELE-1770 | SS1 | LUZVILLE | SS1-COM | CNT |  |
| PSUAY-LZE-ELE-1780 |  | Perform assembly of the electrical panels for the SS1 fire alarm system. | 2d | 2025-12-01 A | 2025-12-06 A | PSUAY-LZE-ELE-1770 | 100% | 2025-12-22 | 2025-12-23 |  |  | PSUAY - ELETROMEC - 1T - SEM HE | PROFIS [1387.25 h] |  | PSUAY-LZE-ELE-1780 | SS1 | LUZVILLE | SS1-COM | CNT |  |
| PSUAY-LZE-ELE-1790 |  | Perform power supply to the SS1 SDAI electrical panel. | 2d | 2025-12-15 A | 2025-12-23 A | PSUAY-LZE-ELE-1780 FF | 100% | 2025-12-29 | 2025-12-30 |  |  | PSUAY - ELETROMEC - 1T - SEM HE | PROFIS [1387.25 h] |  | PSUAY-LZE-ELE-1790 | SS1 | LUZVILLE | SS1-COM | CNT |  |

Notes:
- PSUAY-LZE-ELE-1230: Translate: Executar montagem de luminárias do sistema de iluminação convencional da SS1
- PSUAY-LZE-ELE-1620: Translate: Executar interligação do sistema de iluminação convencional da SS1
- PSUAY-LZE-ELE-1240: Translate: Executar lançamento de cabos do sistema de iluminação convencional da SS1
- PSUAY-LZE-ELE-1220: Translate: Executar montagem de infraestrutura do sistema de iluminação convencional da SS1
- PSUAY-LZE-ELE-1280: Translate: Executar montagem das tubulações frigoríficas e drenos do sistema de HVAC da SS1
- PSUAY-LZE-ELE-1630: Translate: Executar montagem de unidade evaporadora do sistema de HVAC da SS1
- PSUAY-LZE-ELE-1640: Translate: Executar montagem de unidade condensadora do sistema de HVAC da SS1
- PSUAY-LZE-ELE-1290: Translate: Executar instalações elétricas do sistema de HVAC da SS1
- PSUAY-LZE-ELE-1300: Translate: Executar montagem do sistema de SPDA e Aterramento da SS1
- PSUAY-LZE-ELE-1680: Translate: Receber equipamento do RTU no site da SS1
- PSUAY-LZE-ELE-1690: Translate: Executar posicionamento e fixação do RTU na SS1
- PSUAY-LZE-ELE-1700: Translate: Executar lançamento de cabos do RTU na SS1
- PSUAY-LZE-ELE-1710: Translate: Executar preparação e conexão dos cabos do RTU na SS1
- PSUAY-LZE-ELE-1720: Translate: Receber equipamento do Rack de Comunicação no site da SS1
- PSUAY-LZE-ELE-1730: Translate: Executar posicionamento e fixação do Rack de Comunicação na SS1
- PSUAY-LZE-ELE-1740: Translate: Executar lançamento de cabos do Rack de Comunicação na SS1
- PSUAY-LZE-ELE-1750: Translate: Executar preparação e conexão dos cabos do Rack de Comunicação na SS1
- PSUAY-LZE-ELE-1760: Translate: Executar montagem de infraestrutura do SDAI do SS1
- PSUAY-LZE-ELE-1770: Translate: Executar montagem hidráulica do SDAI do SS1
- PSUAY-LZE-ELE-1780: Translate: Executar montagem dos painéis elétricos do SDAI do SS1
- PSUAY-LZE-ELE-1790: Translate: Executar alimentação do painél elétrico do SDAI do SS1

| ID | WBS | Activity | Duration | Start | Finish | Predecessors | Complete | Planned start | Planned finish | Calendar | Resources | ACTIVITY ID COD. | FASES DE ENTREGA | RESPONSÁVEL | ÁREAS | PHASES - YARD | Check Pred |
| --- | --- | --- | --- | --- | --- | --- | --- | --- | --- | --- | --- | --- | --- | --- | --- | --- | --- |
|  | 6 | **TESTING AND COMMISSIONING** |  | 2025-11-10 | 2026-01-10 |  |  |  |  |  |  |  |  |  |  |  |  |
|  | 4 | **COMMISSIONING FOR ENERGIZATION (NEOENERGIA)** |  | 2025-11-10 | 2026-01-10 |  |  |  |  |  |  |  |  |  |  |  |  |
|  | 1 | **OPEN SUBSTATION - SE-69KV** |  | 2025-11-10 | 2025-11-21 |  |  |  |  |  |  |  |  |  |  |  |  |
|  | 2 | **EQUIPMENT** |  | 2025-11-10 | 2025-11-21 |  |  |  |  |  |  |  |  |  |  |  |  |
| PSUAY-LZE-ELE-1840 |  | Perform tests on the existing power transformer. | 2d | 2025-11-10 A | 2025-11-11 A | PSUAY-LZE-ELE-1830 | 100% |  |  | PSUAY - ELETROMEC - 1T - SEM HE | PROFIS [1387.25 h] | PSUAY-LZE-ELE-1840 | SS1 | LUZVILLE | SS1-COM | CNT |  |
| PSUAY-LZE-ELE-1800 |  | Perform tests on the input TCs and TPs in SS1 - Existing | 2d | 2025-11-12 A | 2025-11-13 A | PSUAY-LZE-ELE-1160 SS | 100% |  |  | PSUAY - ELETROMEC - 1T - SEM HE | PROFIS [1387.25 h] | PSUAY-LZE-ELE-1800 | SS1 | LUZVILLE | SS1-COM | CNT |  |
| PSUAY-LZE-ELE-1810 |  | Perform tests on the current transformers (CTs) and potential transformers (PTs) of transformer 01 in SS1 - Existing | 2d | 2025-11-14 A | 2025-11-17 A | PSUAY-LZE-ELE-1800 | 100% |  |  | PSUAY - ELETROMEC - 1T - SEM HE | PROFIS [1387.25 h] | PSUAY-LZE-ELE-1810 | SS1 | LUZVILLE | SS1-COM | CNT |  |
| PSUAY-LZE-ELE-1820 |  | Perform tests on the current transformers (CTs) and potential transformers (PTs) of transformer 02 in SS1 - Existing | 2d | 2025-11-18 A | 2025-11-19 A | PSUAY-LZE-ELE-1810 | 100% |  |  | PSUAY - ELETROMEC - 1T - SEM HE | PROFIS [1387.25 h] | PSUAY-LZE-ELE-1820 | SS1 | LUZVILLE | SS1-COM | CNT |  |
| PSUAY-LZE-ELE-1830 |  | Perform tests on the High Voltage Circuit Breaker 01 of SS1 - Existing | 2d | 2025-11-20 A | 2025-11-21 A | PSUAY-LZE-ELE-1820 | 100% |  |  | PSUAY - ELETROMEC - 1T - SEM HE | PROFIS [1387.25 h] | PSUAY-LZE-ELE-1830 | SS1 | LUZVILLE | SS1-COM | CNT |  |
|  | 2 | **MEDIUM VOLTAGE SUBSTATION - 13.8KV - SS1** |  | 2025-11-10 | 2025-11-20 |  |  |  |  |  |  |  |  |  |  |  |  |
|  | 1 | **EQUIPMENT** |  | 2025-11-10 | 2025-11-20 |  |  |  |  |  |  |  |  |  |  |  |  |
| PSUAY-LZE-ELE-1850 |  | Perform PS.1 Protection Panel | 9d | 2025-11-10 A | 2025-11-18 A | PSUAY-LZE-ELE-1830 SS | 100% |  |  | 7-Day Workweek | PROFIS [6242.62 h] | PSUAY-LZE-ELE-1850 | SS1 | LUZVILLE | SS1-COM | CNT |  |
| PSUAY-LZE-ELE-1870 |  | Perform PS.2 Protection Panel | 5d | 2025-11-14 A | 2025-11-18 A | PSUAY-LZE-ELE-1860 FF | 100% |  |  | 7-Day Workweek | PROFIS [3468.12 h] | PSUAY-LZE-ELE-1870 | SS1 | LUZVILLE | SS1-COM | CNT |  |
| PSUAY-LZE-ELE-1860 |  | Perform Line Protection Relay | 4d | 2025-11-15 A | 2025-11-18 A | PSUAY-LZE-ELE-1850 FF | 100% |  |  | 7-Day Workweek | PROFIS [2774.5 h] | PSUAY-LZE-ELE-1860 | SS1 | LUZVILLE | SS1-COM | CNT |  |
| PSUAY-LZE-ELE-1880 |  | Perform Transformer 01 Protection Relay | 2d | 2025-11-19 A | 2025-11-20 A | PSUAY-LZE-ELE-1870 | 100% |  |  | 7-Day Workweek | PROFIS [1387.25 h] | PSUAY-LZE-ELE-1880 | SS1 | LUZVILLE | SS1-COM | CNT |  |
| PSUAY-LZE-ELE-1890 |  | Perform Transformer 02 Protection Relay | 2d | 2025-11-19 A | 2025-11-20 A | PSUAY-LZE-ELE-1880 FF | 100% |  |  | 7-Day Workweek | PROFIS [1387.25 h] | PSUAY-LZE-ELE-1890 | SS1 | LUZVILLE | SS1-COM | CNT |  |
| PSUAY-LZE-ELE-1900 |  | Perform Transformer 01 150kVA | 2d | 2025-11-19 A | 2025-11-20 A | PSUAY-LZE-ELE-1890 SS | 100% |  |  | 7-Day Workweek | PROFIS [1387.25 h] | PSUAY-LZE-ELE-1900 | SS1 | LUZVILLE | SS1-COM | CNT |  |
| PSUAY-LZE-ELE-1910 |  | Perform PS.3 Protection Panel | 2d | 2025-11-19 A | 2025-11-20 A | PSUAY-LZE-ELE-1870 | 100% |  |  | 7-Day Workweek | PROFIS [1387.25 h] | PSUAY-LZE-ELE-1910 | SS1 | LUZVILLE | SS1-COM | CNT |  |
| PSUAY-LZE-ELE-1920 |  | Transformer 02 150kVA | 2d | 2025-11-19 A | 2025-11-20 A | PSUAY-LZE-ELE-1910 SS | 100% |  |  | 7-Day Workweek | PROFIS [1387.25 h] | PSUAY-LZE-ELE-1920 | SS1 | LUZVILLE | SS1-COM | CNT |  |
|  | 5 | **TECHNICAL VISIT** |  | 2025-11-10 | 2025-11-24 |  |  |  |  |  |  |  |  |  |  |  |  |
| PSUAY-LZE-ELE-1930 |  | Perform tests and commissioning on the Hubbeel disconnect switch. | 11d | 2025-11-10 A | 2025-11-24 A | PSUAY-LZE-ELE-1800 | 100% |  |  | PSUAY - ELETROMEC - 1T - SEM HE | PROFIS [7629.86 h] | PSUAY-LZE-ELE-1930 | SS1 | LUZVILLE | SS1-COM | CNT | UDF_G1 |
| PSUAY-LZE-ELE-1940 |  | Perform tests and commissioning on the GE Circuit Breaker. | 5d | 2025-11-10 A | 2025-11-14 A | PSUAY-LZE-ELE-1830 | 100% |  |  | PSUAY - ELETROMEC - 1T - SEM HE | PROFIS [3468.12 h] | PSUAY-LZE-ELE-1940 | SS1 | LUZVILLE | SS1-COM | CNT | UDF_G1 |
| PSUAY-LZE-ELE-1950 |  | Perform tests and commissioning on Rectifier - WEG | 4d | 2025-11-13 A | 2025-11-18 A | PSUAY-LZE-ELE-1840 FS+1d | 100% |  |  |  | PROFIS [2774.5 h] | PSUAY-LZE-ELE-1950 | SS1 | LUZVILLE | SS1-COM | CNT |  |
|  | 3 | **ENERGIZATION (NEOENERGY)** |  | 2025-12-01 | 2026-01-10 |  |  |  |  |  |  |  |  |  |  |  |  |
| PSUAY-LZE-ELE-1960 |  | Send SS1 commissioning report to Neoenergia | 1d | 2025-12-01 A | 2025-12-01 A | PSUAY-LZE-ELE-1800, PSUAY-LZE-ELE-1810, PSUAY-LZE-ELE-1820, PSUAY-LZE-ELE-1830, PSUAY-LZE-ELE-1840 FS+17d, PSUAY-LZE-ELE-1850, PSUAY-LZE-ELE-1860, PSUAY-LZE-ELE-1870, PSUAY-LZE-ELE-1880, PSUAY-LZE-ELE-1890, PSUAY-LZE-ELE-1900, PSUAY-LZE-ELE-1910, PSUAY-LZE-ELE-1920, PSUAY-LZE-ELE-1930, PSUAY-LZE-ELE-1940, PSUAY-LZE-ELE-1950 | 100% | 2025-12-05 | 2025-12-05 | PSUAY - ELETROMEC - 1T - SEM HE | PROFIS [1387.25 h] | PSUAY-LZE-ELE-1960 | SS1 | LUZVILLE | SS1-COM | ENG |  |
| PSUAY-LZE-ELE-1970 |  | Awaiting analysis of the SS1 commissioning report and response from Neoenergia. | 21d | 2025-12-22 A | 2026-01-10 A | PSUAY-LZE-ELE-1960 | 100% | 2025-12-21 | 2026-01-10 | PSUAY_DIAS_CORRIDOS | PROFIS [31213.1 h] | PSUAY-LZE-ELE-1970 | SS1 | NEOENERGIA | SS1-COM | CNT |  |
| PSUAY-LZE-ELE-1980 |  | Set the date for the energization of SS1 by Neoenergia. | 1d | 2026-01-05 A | 2026-01-10 A | PSUAY-LZE-ELE-1970 | 100% | 2026-01-12 | 2026-01-12 | PSUAY - ELETROMEC - 1T - SEM HE | PROFIS [693.62 h] | PSUAY-LZE-ELE-1980 | SS1 | NEOENERGIA | SS1-COM | ENG |  |

Notes:
- PSUAY-LZE-ELE-1840: Translate: Executar testes no Transformador de Potência - Existente
- PSUAY-LZE-ELE-1800: Translate: Executar testes nos TC's e TP's de entrada na SS1 - Existente
- PSUAY-LZE-ELE-1810: Translate: Executar testes nos TC's e TP's do Trafo 01 na SS1 - Existente
- PSUAY-LZE-ELE-1820: Translate: Executar testes nos TC's e TP's do Trafo 02 na SS1 - Existente
- PSUAY-LZE-ELE-1830: Translate: Executar testes no Disjuntor de Alta 01 da SS1 - Existente
- PSUAY-LZE-ELE-1850: Translate: Executar testes e comissionamento no Painel P1.1 da SS1
- PSUAY-LZE-ELE-1870: Translate: Executar testes e comissionamento nos Painéis auxiliares da SS1 (P1.3, P1.4, P1.5, P1.6 e P1.7)
- PSUAY-LZE-ELE-1860: Translate: Executar testes e comissionamento no Painel P1.2 da SS1
- PSUAY-LZE-ELE-1880: Translate: Executar testes e comissionamento no Painel P5.1 da SS1
- PSUAY-LZE-ELE-1890: Translate: Executar testes e comissionamento no Painel P5.2 da SS1
- PSUAY-LZE-ELE-1900: Translate: Executar testes e comissionamento no Painel P5.3 da SS1
- PSUAY-LZE-ELE-1910: Translate: Executar testes e comissionamento dos transformadores auxiliares 150KVA
- PSUAY-LZE-ELE-1920: Translate: Transformador 02 150kVA
- PSUAY-LZE-ELE-1930: Translate: Teste de performance e comissionamento no interruptor de desconexão Hubbeel.
- PSUAY-LZE-ELE-1940: Translate: Testes de performance e comissionamento no disjuntor do Circuit de parada da General Electric
- PSUAY-LZE-ELE-1950: Translate: Testes de performance e comissionamento no Rectificador - WEG
- PSUAY-LZE-ELE-1960: Translate: Envio do relatório de comissionamento da SS1 para Neoenergia
- PSUAY-LZE-ELE-1970: Translate: Aguardar análise do relatório de comissionamento da SS1 e retorno da Neoenergia
- PSUAY-LZE-ELE-1980: Translate: Definir data da energização da SS1 pela Neoenergia

| ID | WBS | Activity | Duration | Start | Finish | Predecessors | Complete | Planned start | Planned finish | Total float | Free float | Calendar | Resources | ACTIVITY ID COD. | FASES DE ENTREGA | RESPONSÁVEL | ÁREAS | PHASES - YARD | SERVIÇOS |
| --- | --- | --- | --- | --- | --- | --- | --- | --- | --- | --- | --- | --- | --- | --- | --- | --- | --- | --- | --- |
|  | 1 | **COMMISSIONING COMPLEMENTATION** |  | 2025-11-24 | 2025-12-19 |  |  |  |  |  |  |  |  |  |  |  |  |  |  |
|  | 1 | **MEDIUM VOLTAGE SUBSTATION - 13.8KV - SS1** |  | 2025-11-24 | 2025-12-19 |  |  |  |  |  |  |  |  |  |  |  |  |  |  |
| PSUAY-LZE-ELE-2020 |  | HV cables VLF | 4d | 2025-11-24 A | 2025-12-06 A | PSUAY-LZE-ELE-1990 SS | 100% | 2025-12-05 | 2025-12-10 |  |  | PSUAY - ELETROMEC - 1T - SEM HE | PROFIS [2774.5 h] | PSUAY-LZE-ELE-2020 | SS1 | LUZVILLE | SS1-COM | CNT |  |
| PSUAY-LZE-ELE-2000 |  | Panel P1.2 | 4d | 2025-12-01 A | 2025-12-18 A | PSUAY-LZE-ELE-1990 SS+2d | 100% | 2025-12-09 | 2025-12-12 |  |  | PSUAY - ELETROMEC - 1T - SEM HE | PROFIS [2774.5 h] | PSUAY-LZE-ELE-2000 | SS1 | LUZVILLE | SS1-COM | CNT |  |
| PSUAY-LZE-ELE-1990 |  | Panel P1.1 | 6d | 2025-12-05 A | 2025-12-19 A | PSUAY-LZE-ELE-1890, PSUAY-LZE-ELE-1960 SS | 100% | 2025-12-05 | 2025-12-12 |  |  | PSUAY - ELETROMEC - 1T - SEM HE | PROFIS [4161.74 h] | PSUAY-LZE-ELE-1990 | SS1 | LUZVILLE | SS1-COM | CNT |  |
| PSUAY-LZE-ELE-2030 |  | Execute grounding grid for fences in SS1 | 4d | 2025-12-05 A | 2025-12-11 A | PSUAY-LZE-ELE-2020 SS | 100% | 2025-12-05 | 2025-12-10 |  |  | PSUAY - ELETROMEC - 1T - SEM HE | PROFIS [2774.5 h] | PSUAY-LZE-ELE-2030 | SS1 | LUZVILLE | SS1-COM | CNT |  |
| PSUAY-LZE-ELE-2010 |  | Auxiliary Panels (P1.3, P1.4, P1.5, P1.6, P1.7) | 5d | 2025-12-09 A | 2025-12-19 A | PSUAY-LZE-ELE-2000 SS+2d | 100% | 2025-12-09 | 2025-12-15 |  |  | PSUAY - ELETROMEC - 1T - SEM HE | PROFIS [3468.12 h] | PSUAY-LZE-ELE-2010 | SS1 | LUZVILLE | SS1-COM | CNT |  |
| PSUAY-LZE-ELE-2040 |  | Grounding and SPDA | 2d | 2025-12-15 A | 2025-12-16 A | PSUAY-LZE-ELE-2030 | 100% |  |  |  |  | PSUAY - ELETROMEC - 1T - SEM HE | PROFIS [1387.25 h] | PSUAY-LZE-ELE-2040 | SS1 | LUZVILLE | SS1-COM | CNT |  |
|  | 1 | **FENCING** |  | 2025-12-08 | 2025-12-08 |  |  |  |  |  |  |  |  |  |  |  |  |  |  |
|  | 2 | **GATES (LAGOTELA)** |  | 2025-12-08 | 2025-12-08 |  |  |  |  |  |  |  |  |  |  |  |  |  |  |
| PSUAY-LGT-INF-2050 |  | Receiving the SS1 gate | 0d | 2025-12-08 A | 2025-12-08 A | PSUAY-MIL-GER-1450 FS+15d | 100% |  |  |  |  |  | PROFIS | PSUAY-LGT-INF-2050 | SS1 | CONSAG | SS1-COM | PRO |  |
| PSUAY-LGT-INF-2060 |  | Execute SS1 Gate | 1d | 2025-12-08 A | 2025-12-08 A | PSUAY-LGT-INF-2050 | 100% |  |  |  |  |  | PROFIS [378.34 h] | PSUAY-LGT-INF-2060 | SS1 | LAGOTELA | SS1-COM | CNT |  |
|  | 3 | **PACKAGE - CUSTOMS** |  | 2025-11-10 | 2026-03-26 |  |  |  |  |  |  |  |  |  |  |  |  |  |  |
|  | 2 | **FPS (FIRE PROTECTION SYSTEM)** |  | 2025-11-10 | 2026-02-17 |  |  |  |  |  |  |  |  |  |  |  |  |  |  |
|  | 1 | **PAVEMENT** |  | 2025-11-12 | 2026-02-17 |  |  |  |  |  |  |  |  |  |  |  |  |  |  |
|  | 2 | **PAVEMENT TYPE 4B (LIGHT ASPHALT)** |  | 2026-01-27 | 2026-01-30 |  |  |  |  |  |  |  |  |  |  |  |  |  |  |
|  | 1 | **LEAN CONCRETE** |  | 2026-01-27 | 2026-01-29 |  |  |  |  |  |  |  |  |  |  |  |  |  |  |
| PSUAY-LDM-INF-2070 |  | Execute lean concrete for type 4B pavement of FW1A - Section 01 | 1d | 2026-01-27 | 2026-01-27 | PSUAY-CAG-INF-2130 SS |  |  |  | 58d | 0d |  | PROFIS [120.64 h]; CONCRETE-PAVEMENT [52.5 m³] | PSUAY-LDM-INF-2070 | ALFANDEGAMENTO | LIDERMAC | FW1A | CNT | PAV-CONC |
| PSUAY-LDM-INF-2080 |  | Execute lean concrete for type 4B pavement of FW1A - Section 02 | 1d | 2026-01-29 | 2026-01-29 | PSUAY-CAG-INF-2140 |  |  |  | 56d | 0d |  | PROFIS [120.64 h]; CONCRETE-PAVEMENT [52.5 m³] | PSUAY-LDM-INF-2080 | ALFANDEGAMENTO | LIDERMAC | FW1A | CNT | PAV-CONC |
|  | 3 | **ASPHALT (LIDERMAC)** |  | 2026-01-28 | 2026-01-30 |  |  |  |  |  |  |  |  |  |  |  |  |  |  |
| PSUAY-LDM-INF-2090 |  | Execute asphalt paving of type 4B for FW1A - Section 01 | 1d | 2026-01-28 | 2026-01-28 | PSUAY-LDM-INF-2070 |  |  |  | 58d | 41d |  | PROFIS [505.26 h]; ASPHALT [175 m³] | PSUAY-LDM-INF-2090 | ALFANDEGAMENTO | LIDERMAC | FW1A | CNT |  |
| PSUAY-LDM-INF-2100 |  | Execute asphalt paving of type 4B for FW1A - Section 02 | 1d | 2026-01-30 | 2026-01-30 | PSUAY-LDM-INF-2080 |  |  |  | 56d | 39d |  | PROFIS [505.26 h]; ASPHALT [175 m³] | PSUAY-LDM-INF-2100 | ALFANDEGAMENTO | LIDERMAC | FW1A | CNT |  |
|  | 4 | **PAVEMENT TYPE 05 (REINFORCED CONCRETE)** |  | 2026-01-26 | 2026-01-28 |  |  |  |  |  |  |  |  |  |  |  |  |  |  |
|  | 2 | **SUB-BASE** |  | 2026-01-26 | 2026-01-27 |  |  |  |  |  |  |  |  |  |  |  |  |  |  |
| PSUAY-CAG-INF-2110 |  | Execute sub-base of pavement type 05 of FW1A - Section 01 | 1.95d | 2026-01-26 | 2026-01-26 | PSUAY-CAG-INF-2160 |  |  |  | 120.49d | 0d | PSUAY - CIVIL - 2T - HE SAB | PROFIS [1857.92 h] | PSUAY-CAG-INF-2110 | ALFANDEGAMENTO | CONSAG | FW1A | CNT | PAV-BGTC/BGS |
| PSUAY-CAG-INF-2120 |  | Execute sub-base of pavement type 05 of FW1A - Section 02 | 1.95d | 2026-01-27 | 2026-01-27 | PSUAY-CAG-INF-2110 |  |  |  | 120.49d | 0d | PSUAY - CIVIL - 2T - HE SAB | PROFIS [1857.92 h] | PSUAY-CAG-INF-2120 | ALFANDEGAMENTO | CONSAG | FW1A | CNT | PAV-BGTC/BGS |

Notes:
- PSUAY-LZE-ELE-2020: Planners Notes: Total = 4 circuitos / Tags - Trafo 1 (69 Kva), Trafo 2 (69 Kva), Trafo 1 (150 Kva), Trafo 2 / (150Kva). / Realizado = 1 circuito - Trafo 2 (69 Kva) / Avanço = 25% / Translate: Cabos de Alta Voltagem VLF
- PSUAY-LZE-ELE-2000: Translate: Painel P1.2
- PSUAY-LZE-ELE-1990: Translate: Painel P1.1
- PSUAY-LZE-ELE-2030: Translate: Executar malha de aterramento para cercas da Subestação - SS1
- PSUAY-LZE-ELE-2010: Translate: Painéis auxiliares (P1.3, P1.4, P1.5, P1.6, P1.7)
- PSUAY-LZE-ELE-2040: Translate: Aterramento e Sistema de Proteção Contra Descargas atmosféricas
- PSUAY-LGT-INF-2050: Translate: Recebimento do portão da SS1
- PSUAY-LGT-INF-2060: Translate: Executar Portão da SS1
- PSUAY-LDM-INF-2070: Translate: Executar concreto magro do pavimento tipo 4B do FW1 - Trecho 01
- PSUAY-LDM-INF-2080: Translate: Executar concreto magro do pavimento tipo 4B do FW1 - Trecho 02
- PSUAY-LDM-INF-2090: Translate: Executar asfalto do pavimento tipo 4B do FW1 - Trecho 01
- PSUAY-LDM-INF-2100: Translate: Executar asfalto do pavimento tipo 4B do FW1 - Trecho 02
- PSUAY-CAG-INF-2110: Translate: Executar sub-base do pavimento tipo 05 do FW1 - Trecho 01
- PSUAY-CAG-INF-2120: Translate: Executar sub-base do pavimento tipo 05 do FW1 - Trecho 02

| ID | WBS | Activity | Duration | Start | Finish | Predecessors | Complete | Planned start | Planned finish | Total float | Free float | Calendar | Resources | ACTIVITY ID COD. | FASES DE ENTREGA | RESPONSÁVEL | ÁREAS | SERVIÇOS | PHASES - YARD | Atualização |
| --- | --- | --- | --- | --- | --- | --- | --- | --- | --- | --- | --- | --- | --- | --- | --- | --- | --- | --- | --- | --- |
|  | 1 | **CONCRETE** |  | 2026-01-27 | 2026-01-28 |  |  |  |  |  |  |  |  |  |  |  |  |  |  |  |
| PSUAY-CAG-INF-2130 |  | Execute concrete work for pavement type 05 of FW1A - Section 01 | 1.95d | 2026-01-27 | 2026-01-27 | PSUAY-CAG-INF-2110 |  |  |  | 124.39d | 0.49d | PSUAY - CIVIL - 2T - HE SAB | PROFIS [591.16 h]; CONCRETE-PAVEMENT [28.88 m³] | PSUAY-CAG-INF-2130 | ALFANDEGAMENTO | CONSAG | FW1A | PAV-CONC | CNT |  |
| PSUAY-CAG-INF-2140 |  | Execute concrete work for pavement type 05 of FW1A - Section 02 | 1.95d | 2026-01-28 | 2026-01-28 | PSUAY-CAG-INF-2120 |  |  |  | 120.49d | 0.49d | PSUAY - CIVIL - 2T - HE SAB | PROFIS [591.16 h]; CONCRETE-PAVEMENT [28.88 m³] | PSUAY-CAG-INF-2140 | ALFANDEGAMENTO | CONSAG | FW1A | PAV-CONC | CNT |  |
|  | 1 | **PAVEMENT TYPE 10 (PAVER)** |  | 2025-11-12 | 2026-02-17 |  |  |  |  |  |  |  |  |  |  |  |  |  |  |  |
|  | 1 | **SUB-LEGATE** |  | 2025-11-12 | 2026-01-17 |  |  |  |  |  |  |  |  |  |  |  |  |  |  |  |
| PSUAY-CAG-INF-2150 |  | Execute subgrade of pavement type 10 of FW1A | 14d | 2025-11-12 A | 2026-01-17 A | PSUAY-CAG-INF-2240, PSUAY-CAG-INF-2250, PSUAY-CAG-INF-2260 FS+4d | 100% | 2025-11-12 | 2025-12-02 |  |  |  | PROFIS [25943.3 h] | PSUAY-CAG-INF-2150 | ALFANDEGAMENTO | CONSAG | FW1A |  | CNT | OK |
|  | 5 | **BGTC** |  | 2025-12-29 | 2026-01-20 |  |  |  |  |  |  |  |  |  |  |  |  |  |  |  |
| PSUAY-CAG-INF-2160 |  | Execute BGTC of pavement type 10 of FW1A - Section 01 | 1d | 2025-12-29 A | 2026-01-19 A | PSUAY-CAG-INF-2150 | 100% | 2026-01-07 | 2026-01-07 |  |  |  | PROFIS [1581.53 h]; CEMENT SOIL (BGTC) [288 m³] | PSUAY-CAG-INF-2160 | ALFANDEGAMENTO | CONSAG | FW1A | PAV-BGTC/BGS | CNT | OK |
| PSUAY-CAG-INF-2170 |  | Execute BGTC of pavement type 10 of FW1A - Section 02 | 1d | 2026-01-06 A | 2026-01-20 A | PSUAY-CAG-INF-2160 | 100% | 2026-01-20 | 2026-01-20 |  |  |  | PROFIS [1581.53 h]; CEMENT SOIL (BGTC) [288 m³] | PSUAY-CAG-INF-2170 | ALFANDEGAMENTO | CONSAG | FW1A | PAV-BGTC/BGS | CNT | OK |
|  | 4 | **CONCRETE** |  | 2026-01-26 | 2026-01-26 |  |  |  |  |  |  |  |  |  |  |  |  |  |  |  |
| PSUAY-CAG-INF-2180 |  | Execute concrete work for type 10 pavement of FW1A - Section 01 | 1d | 2026-01-26 | 2026-01-26 | PSUAY-CAG-INF-2160 FS+3d, PSUAY-CAG-INF-6780 |  |  |  | 78d | 14d |  | PROFIS [1134.47 h]; CONCRETE-PAVEMENT [172.8 m³] | PSUAY-CAG-INF-2180 | ALFANDEGAMENTO | CONSAG | FW1A | PAV-CONC | CNT |  |
| PSUAY-CAG-INF-2190 |  | Execute concrete work for pavement type 10 of FW1A - Section 02 | 1d | 2026-01-26 | 2026-01-26 | PSUAY-CAG-INF-2170 FS+3d |  |  |  | 28d | 0d |  | PROFIS [1134.47 h]; CONCRETE-PAVEMENT [172.8 m³] | PSUAY-CAG-INF-2190 | ALFANDEGAMENTO | CONSAG | FW1A | PAV-CONC | CNT |  |
|  | 3 | **SAND (PREMACIL)** |  | 2026-01-27 | 2026-02-16 |  |  |  |  |  |  |  |  |  |  |  |  |  |  |  |
| PSUAY-PMC-INF-2210 |  | Laying a sand layer for pavement type 10 of FW1A - Section 02 | 1d | 2026-01-27 | 2026-01-27 | PSUAY-CAG-INF-2190 |  |  |  | 28d | 0d |  | PROFIS [1037.73 h] | PSUAY-PMC-INF-2210 | ALFANDEGAMENTO | PREMACIL | FW1A | PAV-SAND | CNT |  |
| PSUAY-PMC-INF-2200 |  | Laying a sand layer for pavement type 10 of FW1A - Section 01 | 1d | 2026-02-16 | 2026-02-16 | PSUAY-CAG-INF-2180, PSUAY-PMC-INF-6820 |  |  |  | 64d | 1d |  | PROFIS [1037.73 h] | PSUAY-PMC-INF-2200 | ALFANDEGAMENTO | PREMACIL | FW1A | PAV-SAND | CNT |  |
|  | 2 | **PAVER (PREMACIL)** |  | 2026-01-26 | 2026-02-17 |  |  |  |  |  |  |  |  |  |  |  |  |  |  |  |
| PSUAY-PMC-INF-2230 |  | Install paver block for pavement type 10 of FW1A - Section 02 | 2d | 2026-01-26 | 2026-01-27 | PSUAY-PMC-INF-2210 FF |  |  |  | 29d | 0d |  | PSUAY - PAVIMENTO (BLOCK PAVER - M2) [576 m²]; PROFIS [2853.77 h] | PSUAY-PMC-INF-2230 | ALFANDEGAMENTO | PREMACIL | FW1A | PAV-PAVER | CNT |  |
| PSUAY-PMC-INF-2220 |  | Install paver block for pavement type 10 of FW1A - Section 01 | 2d | 2026-02-16 | 2026-02-17 | PSUAY-PMC-INF-2200 FF, PSUAY-CAG-INF-6840 |  |  |  | 63d | 0d |  | PSUAY - PAVIMENTO (BLOCK PAVER - M2) [576 m²]; PROFIS [2853.77 h] | PSUAY-PMC-INF-2220 | ALFANDEGAMENTO | PREMACIL | FW1A | PAV-PAVER | CNT |  |
|  | 6 | **ELECTRICAL INFRASTRUCTURE** |  | 2025-11-10 | 2025-11-22 |  |  |  |  |  |  |  |  |  |  |  |  |  |  |  |
|  | 1 | **INFRA-FW - FIRE** |  | 2025-11-14 | 2025-11-22 |  |  |  |  |  |  |  |  |  |  |  |  |  |  |  |
| PSUAY-CAG-INF-2240 |  | Execute FW (fire) infrastructure for FW1A | 10d | 2025-11-14 A | 2025-11-22 A | PSUAY-MIL-GER-1450 FS+5d | 100% |  |  |  |  | PSUAY - TERRA - 2T - HE SAB | PROFIS [9949.45 h] | PSUAY-CAG-INF-2240 | ALFANDEGAMENTO | CONSAG | FW1A |  | CNT |  |
|  | 2 | **INFRA-LV - LOW VOLTAGE** |  | 2025-11-10 | 2025-11-12 |  |  |  |  |  |  |  |  |  |  |  |  |  |  |  |
| PSUAY-CAG-INF-2250 |  | Execute FW1A's LV (low voltage) infra | 4d | 2025-11-10 A | 2025-11-12 A | PSUAY-CAG-INF-2240 | 100% |  |  |  |  | PSUAY - TERRA - 2T - HE SAB | PROFIS [2315.08 h]; INFRA-STRUCTURE ELECTRICAL [25.7 m] | PSUAY-CAG-INF-2250 | ALFANDEGAMENTO | CONSAG | FW1A |  | CNT |  |
|  | 3 | **INFRA-PW - POTABLE WATER** |  | 2025-11-12 | 2025-11-14 |  |  |  |  |  |  |  |  |  |  |  |  |  |  |  |
| PSUAY-CAG-INF-2260 |  | Implement PW (potable water) infrastructure for FW1A | 4d | 2025-11-12 A | 2025-11-14 A | PSUAY-CAG-INF-2250 | 100% |  |  |  |  | PSUAY - TERRA - 2T - HE SAB | PROFIS [3513.7 h] | PSUAY-CAG-INF-2260 | ALFANDEGAMENTO | CONSAG | FW1A |  | CNT |  |

Notes:
- PSUAY-CAG-INF-2130: Translate: Executar concreto do pavimento tipo 05 do FW1 - Trecho 01
- PSUAY-CAG-INF-2140: Translate: Executar concreto do pavimento tipo 05 do FW1 - Trecho 02
- PSUAY-CAG-INF-2150: Translate: Executar subleito do pavimento tipo 10 do FW1
- PSUAY-CAG-INF-2160: Translate: Executar BGTC do pavimento tipo 10 do FW1 - Trecho 01
- PSUAY-CAG-INF-2170: Translate: Executar BGTC do pavimento tipo 10 do FW1 - Trecho 02
- PSUAY-CAG-INF-2180: Translate: Executar concreto do pavimento tipo 10 do FW1 - Trecho 01
- PSUAY-CAG-INF-2190: Translate: Executar concreto do pavimento tipo 10 do FW1 - Trecho 02
- PSUAY-PMC-INF-2210: Translate: Executar camada de areia do pavimento tipo 10 do FW1 - Trecho 02
- PSUAY-PMC-INF-2200: Translate: Executar camada de areia do pavimento tipo 10 do FW1 - Trecho 01
- PSUAY-PMC-INF-2230: Translate: Executar paver do pavimento tipo 10 do FW1 - Trecho 02
- PSUAY-PMC-INF-2220: Translate: Executar paver do pavimento tipo 10 do FW1 - Trecho 01
- PSUAY-CAG-INF-2240: Translate: Executar infra FW (incêndio) do FW1
- PSUAY-CAG-INF-2250: Translate: Executar infra LV (baixa tensão) do FW1
- PSUAY-CAG-INF-2260: Translate: Executar infra PW (água potável) do FW1

| ID | WBS | Activity | Duration | Start | Finish | Predecessors | Complete | Remaining | Planned start | Planned finish | Total float | Free float | Calendar | Resources | ACTIVITY ID COD. | FASES DE ENTREGA | RESPONSÁVEL | ÁREAS | PHASES - YARD | Atualização |
| --- | --- | --- | --- | --- | --- | --- | --- | --- | --- | --- | --- | --- | --- | --- | --- | --- | --- | --- | --- | --- |
|  | 2 | **STRUCTURE** |  | 2025-11-10 | 2026-01-30 |  |  |  |  |  |  |  |  |  |  |  |  |  |  |  |
|  | 2 | **DRAINAGE CHANNELS** |  | 2025-11-10 | 2025-11-10 |  |  |  |  |  |  |  |  |  |  |  |  |  |  |  |
|  | 6 | **BOX DRAIN** |  | 2025-11-10 | 2025-11-10 |  |  |  |  |  |  |  |  |  |  |  |  |  |  |  |
| PSUAY-CAG-CIV-2270 |  | Install FW1A Box Drain type conduit | 1d | 2025-11-10 A | 2025-11-10 A | PSUAY-MIL-GER-1450 | 100% |  |  |  |  |  |  | PROFIS [1126.01 h]; SURFACE DRAIN [30 m] | PSUAY-CAG-CIV-2270 | ALFANDEGAMENTO | CONSAG | FW1A | CNT |  |
|  | 1 | **PUMP HOUSE** |  | 2025-11-18 | 2026-01-30 |  |  |  |  |  |  |  |  |  |  |  |  |  |  |  |
|  | 4 | **MASONRY** |  | 2025-11-18 | 2025-12-13 |  |  |  |  |  |  |  |  |  |  |  |  |  |  |  |
| PSUAY-CAG-ARQ-2280 |  | Execute masonry work for the FW1A Pump House. | 15d | 2025-11-18 A | 2025-12-13 A | PSUAY-MIL-GER-1450 FS+10d, PSUAY-LZE-ELE-2140 | 100% |  | 2025-11-20 | 2025-12-10 |  |  |  | PROFIS [75072.4 h] | PSUAY-CAG-ARQ-2280 | ALFANDEGAMENTO | CONSAG | FW1A | CNT |  |
|  | 1 | **WINDOW FRAME** |  | 2026-01-19 | 2026-01-28 |  |  |  |  |  |  |  |  |  |  |  |  |  |  |  |
| PSUAY-CAG-ARQ-2290 |  | Execute the window and door frames for the FW1A Pump House. | 3d | 2026-01-19 A | 2026-01-28 | PSUAY-CAG-ARQ-2280 | 80% | 3d | 2026-01-19 | 2026-01-21 | 58d | 2d |  | PROFIS [4504.05 h] | PSUAY-CAG-ARQ-2290 | ALFANDEGAMENTO | CONSAG | FW1A | CNT | OK |
|  | 3 | **FINISHES** |  | 2025-12-15 | 2026-01-30 |  |  |  |  |  |  |  |  |  |  |  |  |  |  |  |
| PSUAY-CAG-ARQ-2300 |  | Perform finishing work on the FW1A Pump House. | 21d | 2025-12-15 A | 2026-01-30 | PSUAY-CAG-ARQ-2280 SS+6d | 90% | 5d | 2025-12-15 | 2026-01-16 | 56d | 0d |  | PROFIS [113502 h] | PSUAY-CAG-ARQ-2300 | ALFANDEGAMENTO | CONSAG | FW1A | CNT | OK |
|  | 2 | **WATERPROOFING (THIRD)** |  | 2026-01-12 | 2026-01-30 |  |  |  |  |  |  |  |  |  |  |  |  |  |  |  |
| PSUAY-CAG-CIV-2310 |  | Perform waterproofing of the FW1A Pump House. | 6d | 2026-01-12 A | 2026-01-30 A | PSUAY-CAG-ARQ-2300 FF, PSUAY-CAG-ARQ-2290 | 100% |  | 2026-01-16 | 2026-01-23 |  |  |  | PROFIS [35194 h] | PSUAY-CAG-CIV-2310 | ALFANDEGAMENTO | CONSAG | FW1A | CNT | OK |
|  | 5 | **ELECTROMECHANICS (LUZVILE)** |  | 2025-11-10 | 2026-01-30 |  |  |  |  |  |  |  |  |  |  |  |  |  |  |  |
|  | 9 | **PUMP HOUSE** |  | 2025-11-10 | 2026-01-30 |  |  |  |  |  |  |  |  |  |  |  |  |  |  |  |
|  | 1 | **BOMBS** |  | 2025-11-17 | 2025-11-21 |  |  |  |  |  |  |  |  |  |  |  |  |  |  |  |
|  | 1 | **DIESEL PUMP** |  | 2025-11-17 | 2025-11-21 |  |  |  |  |  |  |  |  |  |  |  |  |  |  |  |
| PSUAY-LZE-ELE-2110 |  | Perform positioning and securing of the diesel pump at the base of the FW1A Pump House. | 3d | 2025-11-17 A | 2025-11-19 A | PSUAY-MIL-GER-1450, PSUAY-MIL-GER-1050 | 100% |  |  |  |  |  | PSUAY - ELETROMEC - 1T - SEM HE | PROFIS [5945.35 h] | PSUAY-LZE-ELE-2320 | ALFANDEGAMENTO | LUZVILLE | FW1A | CNT |  |
| PSUAY-LZE-ELE-2330 |  | Perform positioning and securing of the diesel pump tank at the FW1A Pump House. | 2d | 2025-11-20 A | 2025-11-21 A | PSUAY-LZE-ELE-2110 | 100% |  |  |  |  |  | PSUAY - ELETROMEC - 1T - SEM HE | PROFIS [3963.57 h] | PSUAY-LZE-ELE-2330 | ALFANDEGAMENTO | LUZVILLE | FW1A | CNT |  |
|  | 2 | **ELECTRIC PUMP** |  | 2025-11-17 | 2025-11-19 |  |  |  |  |  |  |  |  |  |  |  |  |  |  |  |
| PSUAY-LZE-ELE-2130 |  | Perform positioning and securing of the electric pump on the base of the FW1A Pump House. | 3d | 2025-11-17 A | 2025-11-19 A | PSUAY-LZE-ELE-2110, PSUAY-LZE-ELE-2330 | 100% |  |  |  |  |  | PSUAY - ELETROMEC - 1T - SEM HE | PROFIS [5945.35 h] | PSUAY-LZE-ELE-2340 | ALFANDEGAMENTO | LUZVILLE | FW1A | CNT |  |
|  | 3 | **JOCKEY BOMB** |  | 2025-11-20 | 2025-11-21 |  |  |  |  |  |  |  |  |  |  |  |  |  |  |  |
| PSUAY-LZE-ELE-2140 |  | Perform positioning and securing of the jockey pump at the base of the FW1A Pump House. | 2d | 2025-11-20 A | 2025-11-21 A | PSUAY-LZE-ELE-2130 | 100% |  |  |  |  |  | PSUAY - ELETROMEC - 1T - SEM HE | PROFIS [3963.57 h] | PSUAY-LZE-ELE-2350 | ALFANDEGAMENTO | LUZVILLE | FW1A | CNT |  |
|  | 3 | **PIPING** |  | 2025-11-10 | 2026-01-30 |  |  |  |  |  |  |  |  |  |  |  |  |  |  |  |
| PSUAY-LZE-ELE-2150 |  | Perform assembly of the piping supports for the FW1A Pump House. | 6d | 2025-11-10 A | 2025-11-17 A | PSUAY-LZE-ELE-2140 | 100% |  |  |  |  |  | PSUAY - ELETROMEC - 1T - SEM HE | PROFIS [11890.7 h] | PSUAY-LZE-ELE-2360 | ALFANDEGAMENTO | LUZVILLE | FW1A | CNT |  |
| PSUAY-LZE-TUB-2370 |  | Perform piping assembly for the FW1A Pump House. | 18d | 2025-12-15 A | 2026-01-30 | PSUAY-LZE-ELE-2150 | 90% | 5d | 2025-12-15 | 2026-01-13 | 56d | 0d | PSUAY - ELETROMEC - 1T - SEM HE | PROFIS [23781.4 h] | PSUAY-LZE-TUB-2370 | ALFANDEGAMENTO | LUZVILLE | FW1A | CNT | OK |
| PSUAY-LZE-TUB-2170 |  | Perform assembly of the piping valves for the FW1A Pump House. | 4d | 2026-01-21 A | 2026-01-30 | PSUAY-LZE-TUB-2370 FF | 90% | 1d | 2026-01-14 | 2026-01-19 | 56d | 0d | PSUAY - ELETROMEC - 1T - SEM HE | PROFIS [23781.4 h] | PSUAY-LZE-TUB-2380 | ALFANDEGAMENTO | LUZVILLE | FW1A | CNT | OK |

Notes:
- PSUAY-CAG-CIV-2270: Translate: Executar canaleta do tipo Box Drain do FW1
- PSUAY-CAG-ARQ-2280: Translate: Executar alvenaria da Casa de Bombas do FW1
- PSUAY-CAG-ARQ-2290: Translate: Executar esquadrias da Casa de Bombas do FW1
- PSUAY-CAG-ARQ-2300: Translate: Executar acabamentos da Casa de Bombas do FW1
- PSUAY-CAG-CIV-2310: Translate: Executar impermeabilização da Casa de Bombas do FW1
- PSUAY-LZE-ELE-2110: Translate: Executar posicionamento e fixação da bomba diesel na base da Casa de Bombas do FW1
- PSUAY-LZE-ELE-2330: Translate: Executar posicionamento e fixação do tanque da bomba diesel da Casa de Bombas do FW1
- PSUAY-LZE-ELE-2130: Translate: Executar posicionamento e fixação da bomba elétrica na base da Casa de Bombas do FW1
- PSUAY-LZE-ELE-2140: Translate: Executar posicionamento e fixação da bomba jockey na base da Casa de Bombas do FW1
- PSUAY-LZE-ELE-2150: Translate: Executar montagem dos suportes da tubulação da Casa de Bombas do FW1
- PSUAY-LZE-TUB-2370: Translate: Executar montagem da tubulação da Casa de Bombas do FW1
- PSUAY-LZE-TUB-2170: Translate: Executar montagem das válvulas da tubulação da Casa de Bombas do FW1

| ID | WBS | Activity | Duration | Start | Finish | Predecessors | Complete | Remaining | Planned start | Planned finish | Total float | Free float | Calendar | Resources | Atualização | ACTIVITY ID COD. | FASES DE ENTREGA | RESPONSÁVEL | ÁREAS | PHASES - YARD |
| --- | --- | --- | --- | --- | --- | --- | --- | --- | --- | --- | --- | --- | --- | --- | --- | --- | --- | --- | --- | --- |
|  | 2 | **ELECTRICAL INFRASTRUCTURE** |  | 2025-12-15 | 2026-01-30 |  |  |  |  |  |  |  |  |  |  |  |  |  |  |  |
| PSUAY-LZE-ELE-2390 |  | Perform assembly of the electrical infrastructure supports for the FW1A Pump House. | 5d | 2025-12-15 A | 2026-01-28 | PSUAY-LZE-ELE-2150 | 90% | 3d | 2025-12-15 | 2025-12-19 | 56d | 0d | PSUAY - ELETROMEC - 1T - SEM HE | PROFIS [9908.91 h] | OK | PSUAY-LZE-ELE-2390 | ALFANDEGAMENTO | LUZVILLE | FW1A | CNT |
| PSUAY-LZE-ELE-2400 |  | Perform assembly of cable trays and conduits for the FW1A Pump House. | 8d | 2026-01-12 A | 2026-01-30 | PSUAY-LZE-ELE-2390 SS+2d | 90% | 5d | 2026-01-12 | 2026-01-21 | 56d | 0d | PSUAY - ELETROMEC - 1T - SEM HE | PROFIS [15854.3 h] | OK | PSUAY-LZE-ELE-2400 | ALFANDEGAMENTO | LUZVILLE | FW1A | CNT |
|  | 4 | **ELECTRICAL EQUIPMENT** |  | 2026-01-12 | 2026-01-30 |  |  |  |  |  |  |  |  |  |  |  |  |  |  |  |
| PSUAY-LZE-ELE-2440 |  | Perform assembly of the 380V MAIN SWITCHBOARD panel for the FW1A pump house. | 2d | 2026-01-12 A | 2026-01-17 A | PSUAY-LZE-ELE-2430, PSUAY-LZE-ELE-2140 | 100% |  | 2026-01-27 | 2026-01-28 |  |  | PSUAY - ELETROMEC - 1T - SEM HE | PROFIS [3963.57 h] | OK | PSUAY-LZE-ELE-2440 | ALFANDEGAMENTO | LUZVILLE | FW1A | CNT |
| PSUAY-LZE-ELE-2460 |  | Perform assembly of the ventilation system for Bobmas House on FW1A | 10d | 2026-01-15 A | 2026-01-23 A | PSUAY-LZE-ELE-2400 SS+3d | 100% |  | 2026-01-15 | 2026-01-28 |  |  | PSUAY - ELETROMEC - 1T - SEM HE | PROFIS [19817.8 h] | OK | PSUAY-LZE-ELE-2460 | ALFANDEGAMENTO | LUZVILLE | FW1A | CNT |
| PSUAY-LZE-ELE-2470 |  | Perform SDAI assembly of the FW1A Pump House. | 16d | 2026-01-15 A | 2026-01-30 | PSUAY-LZE-ELE-2460 SS | 70% | 5d | 2026-01-15 | 2026-02-05 | 56d | 0d | PSUAY - ELETROMEC - 1T - SEM HE | PROFIS [31708.5 h] | OK | PSUAY-LZE-ELE-2470 | ALFANDEGAMENTO | LUZVILLE | FW1A | CNT |
| PSUAY-LZE-ELE-2410 |  | Perform assembly of the Diesel Pump Panel for the FW1A Pump House. | 1d | 2026-01-19 A | 2026-01-29 A | PSUAY-LZE-ELE-2400 | 100% |  | 2026-01-29 | 2026-01-29 |  |  | PSUAY - ELETROMEC - 1T - SEM HE | PROFIS [1981.78 h] | OK | PSUAY-LZE-ELE-2410 | ALFANDEGAMENTO | LUZVILLE | FW1A | CNT |
| PSUAY-LZE-ELE-2420 |  | Perform assembly of the Electric Pump Panel for the FW1A Pump House. | 1d | 2026-01-19 A | 2026-01-23 A | PSUAY-LZE-ELE-2410, PSUAY-LZE-ELE-2400 | 100% |  | 2026-01-30 | 2026-01-30 |  |  | PSUAY - ELETROMEC - 1T - SEM HE | PROFIS [1981.78 h] | OK | PSUAY-LZE-ELE-2420 | ALFANDEGAMENTO | LUZVILLE | FW1A | CNT |
| PSUAY-LZE-ELE-2430 |  | Perform assembly of the Jockey Pump Panel for the FW1A Pump House. | 1d | 2026-01-19 A | 2026-01-23 A | PSUAY-LZE-ELE-2420, PSUAY-LZE-ELE-2400 | 100% |  | 2026-02-02 | 2026-02-02 |  |  | PSUAY - ELETROMEC - 1T - SEM HE | PROFIS [1981.78 h] | OK | PSUAY-LZE-ELE-2430 | ALFANDEGAMENTO | LUZVILLE | FW1A | CNT |
| PSUAY-LZE-ELE-2450 |  | Perform assembly of the water reservoir panel for the FW1A pump house. | 1d | 2026-01-19 A | 2026-01-23 A | PSUAY-LZE-ELE-2440 | 100% |  | 2026-02-03 | 2026-02-03 |  |  | PSUAY - ELETROMEC - 1T - SEM HE | PROFIS [1981.78 h] | OK | PSUAY-LZE-ELE-2450 | ALFANDEGAMENTO | LUZVILLE | FW1A | CNT |
|  | 5 | **CABLE LAUNCH** |  | 2026-01-05 | 2026-01-30 |  |  |  |  |  |  |  |  |  |  |  |  |  |  |  |
|  | 1 | **SE-07 BT (STS) X 380V MAIN SWITCHBOARD PANEL** |  | 2026-01-05 | 2026-01-28 |  |  |  |  |  |  |  |  |  |  |  |  |  |  |  |
| PSUAY-LZE-ELE-2480 |  | Perform cable BT laying operation at STS x FW1A Pump House | 10d | 2026-01-05 A | 2026-01-10 A | PSUAY-MIL-GER-1080 | 100% |  | 2026-01-05 | 2026-01-16 |  |  | PSUAY - ELETROMEC - 1T - SEM HE | PROFIS [21957.2 h]; CABLE LOW VOLTAGE [2925 m] |  | PSUAY-LZE-ELE-2480 | ALFANDEGAMENTO | LUZVILLE | FW1A | CNT |
| PSUAY-LZE-ELE-2490 |  | Perform cable termination for STS x Pump House of FW1A | 5d | 2026-01-12 A | 2026-01-23 A | PSUAY-LZE-ELE-2480 | 100% |  | 2026-01-12 | 2026-01-16 |  |  | PSUAY - ELETROMEC - 1T - SEM HE | PROFIS [9908.91 h] | OK | PSUAY-LZE-ELE-2490 | ALFANDEGAMENTO | LUZVILLE | FW1A | CNT |
| PSUAY-LZE-ELE-2500 |  | Perform tests and connections of the STS cables x FW1A Pump House | 3d | 2026-01-26 | 2026-01-28 | PSUAY-LZE-ELE-2490 |  |  |  |  | 58d | 2d | PSUAY - ELETROMEC - 1T - SEM HE | PROFIS [5945.35 h] |  | PSUAY-LZE-ELE-2500 | ALFANDEGAMENTO | LUZVILLE | FW1A | CNT |
|  | 2 | **PUMP HOUSE** |  | 2026-01-19 | 2026-01-30 |  |  |  |  |  |  |  |  |  |  |  |  |  |  |  |
| PSUAY-LZE-ELE-2510 |  | Perform cable BT laying at the FW1A Pumping Station. | 7d | 2026-01-19 A | 2026-01-27 | PSUAY-LZE-ELE-2400 SS+3d | 20% | 2d |  |  | 56d | 0d | PSUAY - ELETROMEC - 1T - SEM HE | PROFIS [15141.1 h]; CABLE LOW VOLTAGE [2017 m] | OK | PSUAY-LZE-ELE-2510 | ALFANDEGAMENTO | LUZVILLE | FW1A | CNT |
| PSUAY-LZE-ELE-2530 |  | Perform tests and connections of the FW1A Pump House cables. | 4d | 2026-01-27 | 2026-01-30 | PSUAY-LZE-ELE-2520 FF |  |  |  |  | 56d | 0d | PSUAY - ELETROMEC - 1T - SEM HE | PROFIS [7927.13 h] |  | PSUAY-LZE-ELE-2530 | ALFANDEGAMENTO | LUZVILLE | FW1A | CNT |
| PSUAY-LZE-ELE-2520 |  | Perform cable termination for the FW1A Pump House. | 3d | 2026-01-28 | 2026-01-30 | PSUAY-LZE-ELE-2510 |  |  |  |  | 56d | 0d | PSUAY - ELETROMEC - 1T - SEM HE | PROFIS [17836 h] |  | PSUAY-LZE-ELE-2520 | ALFANDEGAMENTO | LUZVILLE | FW1A | CNT |
|  | 6 | **GROUNDING** |  | 2026-01-26 | 2026-01-30 |  |  |  |  |  |  |  |  |  |  |  |  |  |  |  |
| PSUAY-LZE-ELE-2550 |  | Perform grounding of the equipment at the FW1A Pump House. | 5d | 2026-01-26 | 2026-01-30 | PSUAY-LZE-ELE-2540 FF, PSUAY-LZE-ELE-2410 FF, PSUAY-LZE-ELE-2420 FF, PSUAY-LZE-ELE-2430 FF, PSUAY-LZE-ELE-2440 FF, PSUAY-LZE-ELE-2450 FF, PSUAY-LZE-ELE-2110 FF, PSUAY-LZE-ELE-2330 FF, PSUAY-LZE-ELE-2130 FF, PSUAY-LZE-ELE-2140 FF |  |  |  |  | 56d | 0d | PSUAY - ELETROMEC - 1T - SEM HE | PROFIS [13872.5 h] |  | PSUAY-LZE-ELE-2550 | ALFANDEGAMENTO | LUZVILLE | FW1A | CNT |
| PSUAY-LZE-ELE-2540 |  | Perform grounding of the FW1A Pump House infrastructure. | 3d | 2026-01-28 | 2026-01-30 | PSUAY-LZE-ELE-2400 FF |  |  |  |  | 56d | 0d | PSUAY - ELETROMEC - 1T - SEM HE | PROFIS [5945.35 h] |  | PSUAY-LZE-ELE-2540 | ALFANDEGAMENTO | LUZVILLE | FW1A | CNT |
|  | 10 | **FIRE NETWORK** |  | 2025-11-10 | 2026-01-30 |  |  |  |  |  |  |  |  |  |  |  |  |  |  |  |
|  | 4 | **FW1** |  | 2025-12-01 | 2026-01-29 |  |  |  |  |  |  |  |  |  |  |  |  |  |  |  |
| PSUAY-LZE-ELE-2560 |  | Perform hydrant installation - FW1A fire network PIT | 1d | 2025-12-01 A | 2025-12-06 A | PSUAY-LZE-ELE-2390 | 100% |  | 2026-01-08 | 2026-01-08 |  |  | PSUAY - ELETROMEC - 1T - SEM HE | PROFIS [1981.78 h] |  | PSUAY-LZE-ELE-2560 | ALFANDEGAMENTO | LUZVILLE | FW1A | CNT |
| PSUAY-LZE-ELE-2570 |  | Perform valve installation - FW1A fire network PIT | 1d | 2025-12-08 A | 2025-12-12 A | PSUAY-LZE-ELE-2560 | 100% |  | 2025-12-15 | 2025-12-15 |  |  | PSUAY - ELETROMEC - 1T - SEM HE | PROFIS [1981.78 h] |  | PSUAY-LZE-ELE-2570 | ALFANDEGAMENTO | LUZVILLE | FW1A | CNT |
| PSUAY-LZE-ELE-2580 |  | Perform assembly of the FW1A fire network enclosure. | 1d | 2026-01-29 | 2026-01-29 | PSUAY-LZE-ELE-2570 |  |  |  |  | 57d | 0d | PSUAY - ELETROMEC - 1T - SEM HE | PROFIS [1981.78 h] |  | PSUAY-LZE-ELE-2580 | ALFANDEGAMENTO | LUZVILLE | FW1A | CNT |
| PSUAY-LZE-TUB-2590 |  | Perform installation of overhead fire hydrants for the FW1A fire network. | 1d | 2026-01-29 | 2026-01-29 | PSUAY-LZE-ELE-2580 FF |  |  |  |  | 57d | 1d | PSUAY - ELETROMEC - 1T - SEM HE | PROFIS [1981.78 h] |  | PSUAY-LZE-TUB-2590 | ALFANDEGAMENTO | LUZVILLE | FW1A | CNT |

Notes:
- PSUAY-LZE-ELE-2390: Translate: Executar montagem dos suportes da infra elétrica da Casa de Bombas do FW1
- PSUAY-LZE-ELE-2400: Translate: Executar montagem de leitos e eletrocalhas da Casa de Bombas do FW1
- PSUAY-LZE-ELE-2440: Translate: Executar montagem do Painel 380V MAIN SWITCHBOARD da Casa de Bombas do FW1
- PSUAY-LZE-ELE-2460: Translate: Executar montagem do sistema de ventilação da Casa de Bobmas do FW1
- PSUAY-LZE-ELE-2470: Translate: Executar montagem SDAI da Casa de Bombas do FW1
- PSUAY-LZE-ELE-2410: Translate: Executar montagem do Painel da Bomba Diesel da Casa de Bombas do FW1
- PSUAY-LZE-ELE-2420: Translate: Executar montagem do Painel da Bomba Elétrica da Casa de Bombas do FW1
- PSUAY-LZE-ELE-2430: Translate: Executar montagem do Painel da Bomba Jockey da Casa de Bombas do FW1
- PSUAY-LZE-ELE-2450: Translate: Executar montagem do Painel do Reservatório de água da Casa de Bombas do FW1
- PSUAY-LZE-ELE-2480: Translate: Executar lançamento de cabos STS x Casa de Bombas do FW1
- PSUAY-LZE-ELE-2490: Translate: Executar terminação dos cabos STS x Casa de Bombas do FW1
- PSUAY-LZE-ELE-2500: Translate: Executar ensaios e conexões dos cabos STS x Casa de Bombas do FW1
- PSUAY-LZE-ELE-2510: Translate: Executar lançamento de cabos da Casa de Bombas do FW1
- PSUAY-LZE-ELE-2530: Translate: Executar ensaios e conexões dos cabos da Casa de Bombas do FW1
- PSUAY-LZE-ELE-2520: Translate: Executar terminação dos cabos da Casa de Bombas do FW1
- PSUAY-LZE-ELE-2550: Translate: Executar aterramento dos equipamentos da Casa de Bombas do FW1
- PSUAY-LZE-ELE-2540: Translate: Executar aterramento da infraestrutura da Casa de Bombas do FW1
- PSUAY-LZE-ELE-2560: Translate: Executar instalação de hidrantes - PIT da rede de incêndio do FW1
- PSUAY-LZE-ELE-2570: Translate: Executar instalação de válulas - PIT da rede de incêndio do FW1
- PSUAY-LZE-ELE-2580: Translate: Executar montagem de abrigo da rede de incêndio do FW1
- PSUAY-LZE-TUB-2590: Translate: Executar instalação de hidrantes aéreos da rede de incêndio do FW1

| ID | WBS | Activity | Duration | Start | Finish | Predecessors | Complete | Remaining | Planned start | Planned finish | Total float | Free float | Calendar | Resources | Atualização | ACTIVITY ID COD. | FASES DE ENTREGA | RESPONSÁVEL | ÁREAS | PHASES - YARD |
| --- | --- | --- | --- | --- | --- | --- | --- | --- | --- | --- | --- | --- | --- | --- | --- | --- | --- | --- | --- | --- |
|  | 1 | **YARD 3'** |  | 2025-11-10 | 2026-01-16 |  |  |  |  |  |  |  |  |  |  |  |  |  |  |  |
| PSUAY-LZE-TUB-2600 |  | Perform valve installation - PIT of the Yard 3' fire network | 7d | 2025-11-10 A | 2026-01-16 A | PSUAY-LZE-TUB-2370 SS | 100% |  | 2025-11-10 | 2025-11-18 |  |  | PSUAY - ELETROMEC - 1T - SEM HE | PROFIS [13872.5 h] | OK | PSUAY-LZE-TUB-2600 | ALFANDEGAMENTO | LUZVILLE | FW1A | CNT |
| PSUAY-LZE-TUB-2610 |  | Perform hydrant installation - PIT of the Yard 3' fire network. | 10d | 2025-11-24 A | 2025-12-06 A | PSUAY-LZE-TUB-2600 SS+3d, PSUAY-LZE-ELE-2570 | 100% |  | 2025-12-16 | 2025-12-31 |  |  | PSUAY - ELETROMEC - 1T - SEM HE | PROFIS [19817.8 h] |  | PSUAY-LZE-TUB-2610 | ALFANDEGAMENTO | LUZVILLE | FW1A | CNT |
|  | 3 | **YARD 3** |  | 2025-11-10 | 2026-01-30 |  |  |  |  |  |  |  |  |  |  |  |  |  |  |  |
| PSUAY-LZE-TUB-2620 |  | Perform HDPE piping installation for the Yard 3 fire protection system. | 10d | 2025-11-10 A | 2025-11-21 A | PSUAY-MIL-GER-1070 | 100% |  |  |  |  |  | PSUAY - ELETROMEC - 1T - SEM HE | PROFIS [19817.8 h] |  | PSUAY-LZE-TUB-2620 | ALFANDEGAMENTO | LUZVILLE | FW1A | CNT |
| PSUAY-LZE-TUB-2640 |  | Perform installation of the overhead fire hydrant for Yard 3. | 5d | 2025-12-01 A | 2026-01-29 | PSUAY-LZE-TUB-2630 | 80% | 1d | 2026-01-30 | 2026-02-05 | 56d | 0d | PSUAY - ELETROMEC - 1T - SEM HE | PROFIS [9908.91 h] |  | PSUAY-LZE-TUB-2640 | ALFANDEGAMENTO | LUZVILLE | FW1A | CNT |
| PSUAY-LZE-TUB-2630 |  | Perform valve assembly - PIT for Yard 3 fire network. | 2d | 2025-12-17 A | 2026-01-10 A | PSUAY-LZE-TUB-2620 SS, PSUAY-LZE-TUB-2610 SS | 100% |  | 2025-12-22 | 2025-12-23 |  |  | PSUAY - ELETROMEC - 1T - SEM HE | PROFIS [3963.57 h] |  | PSUAY-LZE-TUB-2630 | ALFANDEGAMENTO | LUZVILLE | FW1A | CNT |
| PSUAY-LZE-TUB-2650 |  | Perform assembly of the Yard 3 fire network shelter. | 3d | 2026-01-28 | 2026-01-30 | PSUAY-LZE-TUB-2640 FF+1d |  |  |  |  | 56d | 0d | PSUAY - ELETROMEC - 1T - SEM HE | PROFIS [5945.35 h] |  | PSUAY-LZE-TUB-2650 | ALFANDEGAMENTO | LUZVILLE | FW1A | CNT |
|  | 2 | **YARD 4** |  | 2025-11-10 | 2026-01-29 |  |  |  |  |  |  |  |  |  |  |  |  |  |  |  |
| PSUAY-LZE-TUB-2660 |  | Perform HDPE piping installation for the Yard 4 fire protection system. | 25d | 2025-11-10 A | 2026-01-09 A | PSUAY-MIL-GER-1450, PSUAY-MIL-GER-1060 | 100% |  | 2025-11-10 | 2025-12-12 |  |  | PSUAY - ELETROMEC - 1T - SEM HE | PROFIS [49544.6 h] |  | PSUAY-LZE-TUB-2660 | ALFANDEGAMENTO | LUZVILLE | FW1A | CNT |
| PSUAY-LZE-TUB-2690 |  | Perform installation of the overhead fire hydrant for Yard 4. | 10d | 2025-11-24 A | 2026-01-29 | PSUAY-LZE-TUB-2680 SS | 60% | 4d | 2025-12-15 | 2025-12-30 | 57d | 0d | PSUAY - ELETROMEC - 1T - SEM HE | PROFIS [19817.8 h] |  | PSUAY-LZE-TUB-2690 | ALFANDEGAMENTO | LUZVILLE | FW1A | CNT |
| PSUAY-LZE-TUB-2680 |  | Perform hydrant installation - PIT for the Yard 4 fire network. | 20d | 2025-12-01 A | 2026-01-16 A | PSUAY-LZE-TUB-2670 FF | 100% |  | 2026-01-09 | 2026-02-05 |  |  | PSUAY - ELETROMEC - 1T - SEM HE | PROFIS [39635.7 h] | OK | PSUAY-LZE-TUB-2680 | ALFANDEGAMENTO | LUZVILLE | FW1A | CNT |
| PSUAY-LZE-TUB-2670 |  | Perform valve assembly - PIT for Yard 4 fire network. | 20d | 2025-12-08 A | 2026-01-22 A | PSUAY-LZE-TUB-2660 | 100% |  | 2025-12-15 | 2026-01-15 |  |  | PSUAY - ELETROMEC - 1T - SEM HE | PROFIS [39635.7 h] | OK | PSUAY-LZE-TUB-2670 | ALFANDEGAMENTO | LUZVILLE | FW1A | CNT |
| PSUAY-LZE-TUB-2700 |  | Perform assembly of the Yard 4 fire network shelter. | 4d | 2026-01-26 | 2026-01-29 | PSUAY-LZE-TUB-2690 FF |  |  |  |  | 57d | 1d | PSUAY - ELETROMEC - 1T - SEM HE | PROFIS [7927.13 h] |  | PSUAY-LZE-TUB-2700 | ALFANDEGAMENTO | LUZVILLE | FW1A | CNT |
|  | 7 | **COMMISSIONING** |  | 2026-01-26 | 2026-01-30 |  |  |  |  |  |  |  |  |  |  |  |  |  |  |  |
| PSUAY-LZE-GER-2710 |  | Perform testing and commissioning of the FW1A Pump House. | 5d | 2026-01-26 | 2026-01-30 | PSUAY-LZE-ELE-2110 FF, PSUAY-LZE-ELE-2330 FF, PSUAY-LZE-ELE-2130 FF, PSUAY-LZE-ELE-2140 FF, PSUAY-LZE-TUB-2170 FF, PSUAY-LZE-ELE-2410 FF, PSUAY-LZE-ELE-2420 FF, PSUAY-LZE-ELE-2430 FF, PSUAY-LZE-ELE-2440 FF, PSUAY-LZE-ELE-2450 FF, PSUAY-LZE-ELE-2460 FF, PSUAY-LZE-ELE-2470 FF, PSUAY-LZE-ELE-2500 FF, PSUAY-LZE-ELE-2530 FF, PSUAY-LZE-ELE-2540 FF, PSUAY-LZE-ELE-2550 FF |  |  |  |  | 56d | 39d | PSUAY - ELETROMEC - 1T - SEM HE | PROFIS [11890.7 h] |  | PSUAY-LZE-GER-2710 | ALFANDEGAMENTO | LUZVILLE | FW1A | CNT |
| PSUAY-LZE-GER-2720 |  | Perform testing and commissioning of the FW1A Fire Network. | 5d | 2026-01-26 | 2026-01-30 | PSUAY-LZE-ELE-2560 FF, PSUAY-LZE-ELE-2570 FF, PSUAY-LZE-ELE-2580 FF, PSUAY-LZE-TUB-2590 FF, PSUAY-LZE-TUB-2600 FF, PSUAY-LZE-TUB-2610 FF, PSUAY-LZE-TUB-2620 FF, PSUAY-LZE-TUB-2640 FF, PSUAY-LZE-TUB-2650 FF, PSUAY-LZE-TUB-2660 FF, PSUAY-LZE-TUB-2670 FF, PSUAY-LZE-TUB-2680 FF, PSUAY-LZE-TUB-2690 FF, PSUAY-LZE-TUB-2700 FF |  |  |  |  | 56d | 0d | PSUAY - ELETROMEC - 1T - SEM HE | PROFIS [11890.7 h] |  | PSUAY-LZE-GER-2720 | ALFANDEGAMENTO | LUZVILLE | FW1A | CNT |
|  | 1 | **YARD 3 LINE** |  | 2025-11-10 | 2026-02-20 |  |  |  |  |  |  |  |  |  |  |  |  |  |  |  |
|  | 3 | **BUILDING** |  | 2026-01-25 | 2026-02-05 |  |  |  |  |  |  |  |  |  |  |  |  |  |  |  |
| PSUAY-MIL-GER-1180 |  | Release Control Room MFO (DC1) - HTB | 0d | 2026-01-25 | 2026-01-25 | PSUAY-MIL-GER-1450 FS+35d |  |  |  |  | 21d | 0d | PSUAY_DIAS_CORRIDOS | PROFIS |  | PSUAY-MIL-GER-1180 | MILESTONES | HTB | YARD 3 LINE | ENG |
| PSUAY-MIL-GER-1190 |  | Release Control Room Workshop (DC2) - HTB | 0d | 2026-02-05 | 2026-02-05 | PSUAY-MIL-GER-1180 FS+11d |  |  |  |  | 33d | 12d | PSUAY_DIAS_CORRIDOS | PROFIS |  | PSUAY-MIL-GER-1190 | MILESTONES | HTB | YARD 3 LINE | ENG |
|  | 5 | **ELECTROCENTERS** |  | 2025-11-10 | 2026-01-21 |  |  |  |  |  |  |  |  |  |  |  |  |  |  |  |
| PSUAY-MIL-GER-1130 |  | Release the positioning of the SE-07 HV electrical substation. | 0d | 2025-11-10 A | 2025-11-10 A | PSUAY-BRF-EST-3000, PSUAY-CAG-MEC-3010 | 100% |  |  |  |  |  | PSUAY_DIAS_CORRIDOS | PROFIS |  | PSUAY-MIL-GER-1130 | MILESTONES | CONSAG | YARD 3 LINE | CNT |
| PSUAY-MIL-GER-1140 |  | Release the positioning of the SE-07 LV electrical substation. | 0d | 2025-11-10 A | 2025-11-10 A | PSUAY-MIL-GER-1130, PSUAY-CAG-MEC-3020 | 100% |  |  |  |  |  | PSUAY_DIAS_CORRIDOS | PROFIS |  | PSUAY-MIL-GER-1140 | MILESTONES | CONSAG | YARD 3 LINE | CNT |
| PSUAY-MIL-GER-1150 |  | Release the positioning of the SE-05 electrical substation. | 0d | 2025-11-10 A | 2025-11-10 A | PSUAY-MIL-GER-1140, PSUAY-CAG-MEC-3030 | 100% |  |  |  |  |  | PSUAY_DIAS_CORRIDOS | PROFIS |  | PSUAY-MIL-GER-1150 | MILESTONES | CONSAG | YARD 3 LINE | CNT |
| PSUAY-MIL-GER-1160 |  | Release the positioning of the SE-06 electrical substation. | 0d | 2025-11-10 A | 2025-11-10 A | PSUAY-MIL-GER-1150, PSUAY-CAG-MEC-3040 | 100% |  |  |  |  |  | PSUAY_DIAS_CORRIDOS | PROFIS |  | PSUAY-MIL-GER-1160 | MILESTONES | CONSAG | YARD 3 LINE | CNT |
| PSUAY-MIL-GER-1120 |  | Initiate grounding grid for SE-04 | 0d | 2026-01-18 A | 2026-01-21 A | PSUAY-MIL-GER-1170 | 100% |  | 2026-01-18 | 2026-01-18 |  |  | PSUAY_DIAS_CORRIDOS | PROFIS | OK | PSUAY-MIL-GER-1120 | MILESTONES | CONSAG | YARD 3 LINE | CNT |
| PSUAY-MIL-GER-1170 |  | Release concrete base for SE-04 bed infrastructure | 0d | 2026-01-18 A | 2026-01-20 A | PSUAY-CAG-MEC-3310 | 100% |  | 2026-01-18 | 2026-01-18 |  |  | PSUAY_DIAS_CORRIDOS | PROFIS | OK | PSUAY-MIL-GER-1170 | MILESTONES | CONSAG | YARD 3 LINE | CNT |

Notes:
- PSUAY-LZE-TUB-2600: Planners Notes: Total de Válvulas = 7 unidades / Válvulas instaladas = 5 unidade / Avanço = 63% / Translate: Executar intalação de válulas - PIT da rede de incêndio do Yard 3'
- PSUAY-LZE-TUB-2610: Planners Notes: Total de hidrantes 9 unidades / Montados = 6 unidades / Avanço = 67% / Translate: Executar instalação de hidrantes - PIT da rede de incêndio do Yard 3'
- PSUAY-LZE-TUB-2620: Translate: Executar montagem de tubulação PEAD da rede de incêndio do Yard 3
- PSUAY-LZE-TUB-2640: Translate: Executar montagem de hidrante aéreo da rede de incêndio do Yard 3
- PSUAY-LZE-TUB-2630: Translate: Executar montagem de válvula - PIT da rede de incêndio do Yard 3
- PSUAY-LZE-TUB-2650: Translate: Executar montagem de abrigo da rede de incêndio do Yard 3
- PSUAY-LZE-TUB-2660: Planners Notes: Total = 1.225 m / Executado = 1164 m / Avanço = 95% / Translate: Executar montagem de tubulação PEAD da rede de incêndio do Yard 4
- PSUAY-LZE-TUB-2690: Planners Notes: Total = 2 unidades / Executado = 1 unidade / Avanço = 50% / Translate: Executar montagem de hidrante aéreo da rede de incêndio do Yard 4
- PSUAY-LZE-TUB-2680: Translate: Executar montagem de hidrante - PIT da rede de incêndio do Yard 4
- PSUAY-LZE-TUB-2670: Translate: Executar montagem de válvula - PIT da rede de incêndio do Yard 4
- PSUAY-LZE-TUB-2700: Translate: Executar montagem de abrigo da rede de incêndio do Yard 4
- PSUAY-LZE-GER-2710: Translate: Executar testes e comissionamento da Casa de Bombas do FW1
- PSUAY-LZE-GER-2720: Translate: Executar testes e comissionamento da Rede de Incêndio do FW1
- PSUAY-MIL-GER-1180: Translate: MFO da Sala de Controle de Lançamento (DC1) - HTB
- PSUAY-MIL-GER-1190: Translate: Oficina da Sala de Controle de Liberação (DC2) - HTB
- PSUAY-MIL-GER-1130: Translate: Liberar posicionamento do eletrocentro SE-07 HV
- PSUAY-MIL-GER-1140: Translate: Liberar posicionamento do eletrocentro SE-07 LV
- PSUAY-MIL-GER-1150: Translate: Liberar posicionamento do eletrocentro SE-05
- PSUAY-MIL-GER-1160: Translate: Liberar posicionamento do eletrocentro SE-06
- PSUAY-MIL-GER-1120: Translate: Iníciar malha de aterramento da SE-04
- PSUAY-MIL-GER-1170: Translate: Liberar base de concreto para infraestrutura de leitos do SE-04

| ID | WBS | Activity | Duration | Start | Finish | Predecessors | Complete | Planned start | Planned finish | Calendar | Resources | Atualização | ACTIVITY ID COD. | FASES DE ENTREGA | RESPONSÁVEL | ÁREAS | SERVIÇOS | PHASES - YARD |
| --- | --- | --- | --- | --- | --- | --- | --- | --- | --- | --- | --- | --- | --- | --- | --- | --- | --- | --- |
|  | 1 | **PAVEMENT** |  | 2025-11-10 | 2026-01-20 |  |  |  |  |  |  |  |  |  |  |  |  |  |
|  | 4 | **PAVEMENT TYPE 10** |  | 2025-11-10 | 2026-01-20 |  |  |  |  |  |  |  |  |  |  |  |  |  |
|  | 4 | **CONCRETE** |  | 2025-11-10 | 2026-01-17 |  |  |  |  |  |  |  |  |  |  |  |  |  |
| PSUAY-CAG-CIV-2620 |  | Execute concrete work for pavement type 10 of Yard 3' - Section A | 3.9d | 2025-11-10 A | 2026-01-15 A | PSUAY-MIL-GER-1450 | 100% | 2025-11-10 | 2025-11-12 | PSUAY - CIVIL - 2T - HE SAB | PROFIS [4730.05 h]; CONCRETE-PAVEMENT [720.47 m³] | OK | PSUAY-CAG-CIV-2730 | ALFANDEGAMENTO | CONSAG | YARD 3 LINE | PAV-CONC | CNT |
| PSUAY-CAG-CIV-2740 |  | Execute concrete work for pavement type 10 of Yard 3' - Section B | 7.8d | 2025-11-12 A | 2026-01-17 A | PSUAY-CAG-CIV-2620 | 100% | 2025-11-12 | 2025-11-17 | PSUAY - CIVIL - 2T - HE SAB | PROFIS [12467.4 h]; CONCRETE-PAVEMENT [1899 m³] | OK | PSUAY-CAG-CIV-2740 | ALFANDEGAMENTO | CONSAG | YARD 3 LINE | PAV-CONC | CNT |
|  | 3 | **SAND BEDDING (PREMACIL)** |  | 2025-11-10 | 2026-01-20 |  |  |  |  |  |  |  |  |  |  |  |  |  |
| PSUAY-PMC-INF-2750 |  | Laying sand for pavement type 10 of Yard 3' - Section A | 15d | 2025-11-10 A | 2026-01-20 A | PSUAY-CAG-CIV-2620 | 100% | 2025-11-10 | 2025-11-28 |  | PROFIS [15834.5 h] | OK | PSUAY-PMC-INF-2750 | ALFANDEGAMENTO | CONSAG | YARD 3 LINE | PAV-SAND | CNT |
| PSUAY-PMC-INF-2760 |  | Laying sand for pavement type 10 of Yard 3' - Section B | 15d | 2025-11-10 A | 2026-01-17 A | PSUAY-CAG-CIV-2740 | 100% | 2025-11-10 | 2025-11-28 |  | PROFIS [15834.5 h] | OK | PSUAY-PMC-INF-2760 | ALFANDEGAMENTO | CONSAG | YARD 3 LINE | PAV-SAND | CNT |
|  | 2 | **PAVER (PREMACIL)** |  | 2025-11-11 | 2026-01-16 |  |  |  |  |  |  |  |  |  |  |  |  |  |
| PSUAY-PMC-INF-2770 |  | Install paver blocks for pavement type 10 of Yard 3' - Section A | 15d | 2025-11-11 A | 2026-01-16 A | PSUAY-PMC-INF-2750 FF+1d | 100% | 2025-11-11 | 2025-12-01 |  | PSUAY - PAVIMENTO (BLOCK PAVER - M2) [8789.02 m²]; PROFIS [43544.8 h] | OK | PSUAY-PMC-INF-2770 | ALFANDEGAMENTO | CONSAG | YARD 3 LINE | PAV-PAVER | CNT |
| PSUAY-PMC-INF-2780 |  | Install paver blocks for pavement type 10 of Yard 3' - Section B | 15d | 2025-11-11 A | 2026-01-16 A | PSUAY-PMC-INF-2760 FF+1d | 100% | 2025-11-11 | 2025-12-01 |  | PSUAY - PAVIMENTO (BLOCK PAVER - M2) [8789.02 m²]; PROFIS [43544.8 h] | OK | PSUAY-PMC-INF-2780 | ALFANDEGAMENTO | CONSAG | YARD 3 LINE | PAV-PAVER | CNT |
|  | 2 | **STRUCTURE** |  | 2025-11-10 | 2026-02-20 |  |  |  |  |  |  |  |  |  |  |  |  |  |
|  | 5 | **BUSBAR AXIS B** |  | 2025-11-10 | 2025-11-27 |  |  |  |  |  |  |  |  |  |  |  |  |  |
|  | 2 | **BUSBAR (2ND STAGE)** |  | 2025-11-10 | 2025-11-25 |  |  |  |  |  |  |  |  |  |  |  |  |  |
| PSUAY-CAG-CIV-2790 |  | Execute Busbar B form from Yard 3' (2nd stage) | 5d | 2025-11-10 A | 2025-11-14 A | PSUAY-CAG-CIV-2740 | 100% |  |  |  | PROFIS [9944.95 h] |  | PSUAY-CAG-CIV-2790 | ALFANDEGAMENTO | CONSAG | YARD 3 LINE |  | CNT |
| PSUAY-CAG-CIV-2800 |  | Perform concreting of Busbar B of Yard 3' (2nd stage) | 12d | 2025-11-10 A | 2025-11-25 A | PSUAY-CAG-CIV-2790 | 100% |  |  |  | PROFIS [23386.2 h]; CONCRETE-STRUCTURE [19.32 m³] |  | PSUAY-CAG-CIV-2800 | ALFANDEGAMENTO | CONSAG | YARD 3 LINE |  | CNT |
|  | 3 | **FOUNDATION (PANEL BASE)** |  | 2025-11-26 | 2025-11-26 |  |  |  |  |  |  |  |  |  |  |  |  |  |
| PSUAY-CAG-CIV-2810 |  | Construct foundation for Busbar B panels in Yard 3' (2nd stage) | 1d | 2025-11-26 A | 2025-11-26 A | PSUAY-CAG-CIV-2800 | 100% |  |  |  | PROFIS [1210.46 h] |  | PSUAY-CAG-CIV-2810 | ALFANDEGAMENTO | CONSAG | YARD 3 LINE |  | CNT |
|  | 4 | **ASSEMBLY (CONDUCTIX)** |  | 2025-11-27 | 2025-11-27 |  |  |  |  |  |  |  |  |  |  |  |  |  |
| PSUAY-CDX-GER-2820 |  | Handover for installation of Busbar B for Yard 3' (Conductix) | 0.12d | 2025-11-27 A | 2025-11-27 A | PSUAY-CAG-CIV-2810 | 100% |  |  |  | PROFIS [1388.25 h] |  | PSUAY-CDX-GER-2820 | ALFANDEGAMENTO | CONDUCTIX | YARD 3 LINE |  | CNT |
|  | 1 | **BUSBAR AXIS C** |  | 2025-11-10 | 2025-11-27 |  |  |  |  |  |  |  |  |  |  |  |  |  |
|  | 3 | **BUSBAR (2ND STAGE)** |  | 2025-11-10 | 2025-11-25 |  |  |  |  |  |  |  |  |  |  |  |  |  |
| PSUAY-CAG-CIV-2840 |  | Perform concreting of Busbar C in Yard 3' (2nd stage) | 12d | 2025-11-10 A | 2025-11-25 A | PSUAY-CAG-CIV-2830 | 100% |  |  |  | PROFIS [23386.2 h]; CONCRETE-STRUCTURE [19.32 m³] |  | PSUAY-CAG-CIV-2840 | ALFANDEGAMENTO | CONSAG | YARD 3 LINE |  | CNT |
| PSUAY-CAG-CIV-2830 |  | Execute Busbar C form from Yard 3' (2nd stage) | 5d | 2025-11-17 A | 2025-11-21 A | PSUAY-CAG-CIV-2790 | 100% |  |  |  | PROFIS [9944.95 h] |  | PSUAY-CAG-CIV-2830 | ALFANDEGAMENTO | CONSAG | YARD 3 LINE |  | CNT |

Notes:
- PSUAY-CAG-CIV-2620: Translate: Executar concreto do pavimento tipo 10 do Yard 3' - Trecho A
- PSUAY-CAG-CIV-2740: Translate: Executar concreto do pavimento tipo 10 do Yard 3' - Trecho B
- PSUAY-PMC-INF-2750: Translate: Executar areia do pavimento tipo 10 do Yard 3' - Trecho A
- PSUAY-PMC-INF-2760: Translate: Executar areia do pavimento tipo 10 do Yard 3' - Trecho B
- PSUAY-PMC-INF-2770: Translate: Executar paver do pavimento tipo 10 do Yard 3' - Trecho A
- PSUAY-PMC-INF-2780: Translate: Executar paver do pavimento tipo 10 do Yard 3' - Trecho B
- PSUAY-CAG-CIV-2790: Translate: Executar forma do Busbar B do Yard 3' (2ª etapa)
- PSUAY-CAG-CIV-2800: Translate: Executar concretagem do Busbar B do Yard 3' (2ª etapa)
- PSUAY-CAG-CIV-2810: Translate: Executar fundação dos painéis do Busbar B do Yard 3' (2ª etapa)
- PSUAY-CDX-GER-2820: Translate: Liberação para montagem do Busbar B do Yard 3' (Conductix)
- PSUAY-CAG-CIV-2840: Translate: Executar concretagem do Busbar C do Yard 3' (2ª etapa)
- PSUAY-CAG-CIV-2830: Translate: Executar forma do Busbar C do Yard 3' (2ª etapa)

| ID | WBS | Activity | Duration | Start | Finish | Predecessors | Complete | Remaining | Planned start | Planned finish | Total float | Free float | Calendar | Resources | ACTIVITY ID COD. | FASES DE ENTREGA | RESPONSÁVEL | ÁREAS | PHASES - YARD | Atualização |
| --- | --- | --- | --- | --- | --- | --- | --- | --- | --- | --- | --- | --- | --- | --- | --- | --- | --- | --- | --- | --- |
|  | 4 | **FOUNDATION (PANEL BASE)** |  | 2025-11-26 | 2025-11-26 |  |  |  |  |  |  |  |  |  |  |  |  |  |  |  |
| PSUAY-CAG-CIV-2850 |  | Execute foundation for Busbar C panels in Yard 3' (2nd stage) | 1d | 2025-11-26 A | 2025-11-26 A | PSUAY-CAG-CIV-2840 | 100% |  |  |  |  |  |  | PROFIS [1210.46 h] | PSUAY-CAG-CIV-2850 | ALFANDEGAMENTO | CONSAG | YARD 3 LINE | CNT |  |
|  | 5 | **ASSEMBLY (CONDUCTIX)** |  | 2025-11-27 | 2025-11-27 |  |  |  |  |  |  |  |  |  |  |  |  |  |  |  |
| PSUAY-CDX-GER-2860 |  | Handover for installation of Busbar C from Yard 3' (Conductix) | 0.12d | 2025-11-27 A | 2025-11-27 A | PSUAY-CAG-CIV-2850 | 100% |  |  |  |  |  |  | PROFIS [7630.86 h] | PSUAY-CDX-GER-2860 | ALFANDEGAMENTO | CONDUCTIX | YARD 3 LINE | CNT |  |
|  | 2 | **DG-3** |  | 2025-12-04 | 2026-02-20 |  |  |  |  |  |  |  |  |  |  |  |  |  |  |  |
|  | 1 | **BASES** |  | 2025-12-04 | 2026-01-29 |  |  |  |  |  |  |  |  |  |  |  |  |  |  |  |
| PSUAY-CAG-CIV-2870 |  | Execute civilian base of DG-3 from Yard 3' | 4d | 2025-12-04 A | 2026-01-29 | PSUAY-MIL-GER-1450 FS+25d | 80% | 4d | 2025-12-04 | 2025-12-09 | 41d | 0d |  | PROFIS [7746.97 h] | PSUAY-CAG-CIV-2870 | ALFANDEGAMENTO | CONSAG | YARD 3 LINE | CNT | OK |
|  | 3 | **ASSEMBLY** |  | 2026-01-30 | 2026-02-03 |  |  |  |  |  |  |  |  |  |  |  |  |  |  |  |
| PSUAY-LZE-ELE-2880 |  | Perform positioning of generator DG-3 from Yard 3' | 2d | 2026-01-30 | 2026-02-02 | PSUAY-CAG-CIV-2870 |  |  |  |  | 41d | 0d | PSUAY - ELETROMEC - 1T - SEM HE | PROFIS [3963.57 h] | PSUAY-LZE-ELE-2880 | ALFANDEGAMENTO | LUZVILLE | YARD 3 LINE | CNT |  |
| PSUAY-LZE-ELE-2890 |  | Perform grounding of generator DG-3 in Yard 3' | 1d | 2026-02-03 | 2026-02-03 | PSUAY-LZE-ELE-2880 |  |  |  |  | 54d | 37d | PSUAY - ELETROMEC - 1T - SEM HE | PROFIS [1981.78 h] | PSUAY-LZE-ELE-2890 | ALFANDEGAMENTO | LUZVILLE | YARD 3 LINE | CNT |  |
|  | 6 | **ELECTRICAL (LUZVILLE)** |  | 2026-01-05 | 2026-02-20 |  |  |  |  |  |  |  |  |  |  |  |  |  |  |  |
|  | 1 | **CABLE LAUNCH** |  | 2026-01-05 | 2026-02-18 |  |  |  |  |  |  |  |  |  |  |  |  |  |  |  |
|  | 1 | **DG-03 X PANEL SE-07-LV-PN-07** |  | 2026-02-03 | 2026-02-18 |  |  |  |  |  |  |  |  |  |  |  |  |  |  |  |
| PSUAY-LZE-ELE-2900 |  | Perform cable BT laying from DG-3 to Panel SE-07-LV-PN-07 in Yard 3. | 6d | 2026-02-03 | 2026-02-10 | PSUAY-LZE-MEC-3050, PSUAY-LZE-ELE-3000, PSUAY-LZE-ELE-3190, PSUAY-LZE-ELE-2880 |  |  |  |  | 41d | 0d | PSUAY - ELETROMEC - 1T - SEM HE | PROFIS [7356.62 h]; CABLE LOW VOLTAGE [1960 m] | PSUAY-LZE-ELE-2900 | ALFANDEGAMENTO | LUZVILLE | YARD 3 LINE | CNT |  |
| PSUAY-LZE-ELE-2910 |  | Perform cable termination from DG-3 to Panel SE-07-LV-PN-07 in Yard 3. | 3d | 2026-02-11 | 2026-02-13 | PSUAY-LZE-ELE-2900 |  |  |  |  | 41d | 0d | PSUAY - ELETROMEC - 1T - SEM HE | PROFIS [5945.35 h] | PSUAY-LZE-ELE-2910 | ALFANDEGAMENTO | LUZVILLE | YARD 3 LINE | CNT |  |
| PSUAY-LZE-ELE-2920 |  | Perform testing and connection of the DG-3 x SE-07-LV-PN-07 panel cables in Yard 3. | 3d | 2026-02-16 | 2026-02-18 | PSUAY-LZE-ELE-2910 |  |  |  |  | 41d | 0d | PSUAY - ELETROMEC - 1T - SEM HE | PROFIS [5945.35 h] | PSUAY-LZE-ELE-2920 | ALFANDEGAMENTO | LUZVILLE | YARD 3 LINE | CNT |  |
|  | 2 | **SE-07-LV X SE-06-LV** |  | 2026-01-05 | 2026-01-17 |  |  |  |  |  |  |  |  |  |  |  |  |  |  |  |
| PSUAY-LZE-ELE-2930 |  | Perform cable BT laying for SE-07-LV x SE-06-LV from Yard 3' | 2d | 2026-01-05 A | 2026-01-10 A | PSUAY-LZE-ELE-2910 | 100% |  | 2026-01-26 | 2026-01-27 |  |  | PSUAY - ELETROMEC - 1T - SEM HE | PROFIS [1332.45 h]; CABLE LOW VOLTAGE [355 m] | PSUAY-LZE-ELE-2930 | ALFANDEGAMENTO | LUZVILLE | YARD 3 LINE | CNT |  |
| PSUAY-LZE-ELE-2940 |  | Perform cable termination for SE-07-LV x SE-06-LV cables in Yard 3. | 2d | 2026-01-12 A | 2026-01-17 A | PSUAY-LZE-ELE-2930 | 100% |  | 2026-02-02 | 2026-02-03 |  |  | PSUAY - ELETROMEC - 1T - SEM HE | PROFIS [3963.57 h] | PSUAY-LZE-ELE-2940 | ALFANDEGAMENTO | LUZVILLE | YARD 3 LINE | CNT | OK |
| PSUAY-LZE-ELE-2950 |  | Perform testing and connection of cables SE-07-LV x SE-06-LV from Yard 3' | 1d | 2026-01-12 A | 2026-01-17 A | PSUAY-LZE-ELE-2940 | 100% |  | 2026-02-04 | 2026-02-04 |  |  | PSUAY - ELETROMEC - 1T - SEM HE | PROFIS [1981.78 h] | PSUAY-LZE-ELE-2950 | ALFANDEGAMENTO | LUZVILLE | YARD 3 LINE | CNT | OK |
|  | 3 | **SE-07-LV X SE-05-LV** |  | 2026-01-05 | 2026-01-17 |  |  |  |  |  |  |  |  |  |  |  |  |  |  |  |
| PSUAY-LZE-ELE-2850 |  | Perform cable BT laying for SE-07-LV x SE-05-LV from Yard 3' | 3d | 2026-01-05 A | 2026-01-10 A | PSUAY-LZE-ELE-2940 | 100% |  | 2026-01-30 | 2026-02-03 |  |  | PSUAY - ELETROMEC - 1T - SEM HE | PROFIS [1013.41 h]; CABLE LOW VOLTAGE [270 m] | PSUAY-LZE-ELE-2960 | ALFANDEGAMENTO | LUZVILLE | YARD 3 LINE | CNT |  |
| PSUAY-LZE-ELE-2860 |  | Perform cable termination for cables SE-07-LV x SE-05-LV from Yard 3' | 2d | 2026-01-12 A | 2026-01-17 A | PSUAY-LZE-ELE-2850 | 100% |  | 2026-02-04 | 2026-02-05 |  |  | PSUAY - ELETROMEC - 1T - SEM HE | PROFIS [3963.57 h] | PSUAY-LZE-ELE-2970 | ALFANDEGAMENTO | LUZVILLE | YARD 3 LINE | CNT | OK |
| PSUAY-LZE-ELE-2870 |  | Perform testing and connection of cables SE-07-LV x SE-05-LV from Yard 3' | 1d | 2026-01-12 A | 2026-01-17 A | PSUAY-LZE-ELE-2860 | 100% |  | 2026-02-06 | 2026-02-06 |  |  | PSUAY - ELETROMEC - 1T - SEM HE | PROFIS [1981.78 h] | PSUAY-LZE-ELE-2980 | ALFANDEGAMENTO | LUZVILLE | YARD 3 LINE | CNT | OK |

Notes:
- PSUAY-CAG-CIV-2850: Translate: Executar fundação dos painéis do Busbar C do Yard 3' (2ª etapa)
- PSUAY-CDX-GER-2860: Translate: Liberação para montagem do Busbar C do Yard 3' (Conductix)
- PSUAY-CAG-CIV-2870: Translate: Executar base civil do DG-3 do Yard 3'
- PSUAY-LZE-ELE-2880: Translate: Executar posicionamento do gerador DG-3 do Yard 3'
- PSUAY-LZE-ELE-2890: Translate: Executar aterramento do geradaor DG-3 do Yard 3'
- PSUAY-LZE-ELE-2900: Translate: Executar lançamento de cabos do DG-3 x Painel SE-07-LV-PN-07 do Yard 3'
- PSUAY-LZE-ELE-2910: Translate: Executar terminação dos cabos do DG-3 x Painel SE-07-LV-PN-07 do Yard 3'
- PSUAY-LZE-ELE-2920: Translate: Executar teste e conectorização dos cabos do DG-3 x Painel SE-07-LV-PN-07 do Yard 3'
- PSUAY-LZE-ELE-2930: Translate: Executar lançamento dos cabos SE-07-LV x SE-06-LV do Yard 3'
- PSUAY-LZE-ELE-2940: Translate: Executar terminação dos cabos SE-07-LV x SE-06-LV do Yard 3'
- PSUAY-LZE-ELE-2950: Translate: Executar teste e conectorização dos cabos SE-07-LV x SE-06-LV do Yard 3'
- PSUAY-LZE-ELE-2850: Translate: Executar lançamento dos cabos SE-07-LV x SE-05-LV do Yard 3'
- PSUAY-LZE-ELE-2860: Translate: Executar terminação dos cabos cabos SE-07-LV x SE-05-LV do Yard 3'
- PSUAY-LZE-ELE-2870: Translate: Executar teste e conectorização dos cabos cabos SE-07-LV x SE-05-LV do Yard 3'

| ID | WBS | Activity | Duration | Start | Finish | Predecessors | Complete | Planned start | Planned finish | Total float | Free float | Calendar | Resources | ACTIVITY ID COD. | FASES DE ENTREGA | RESPONSÁVEL | ÁREAS | PHASES - YARD |
| --- | --- | --- | --- | --- | --- | --- | --- | --- | --- | --- | --- | --- | --- | --- | --- | --- | --- | --- |
|  | 2 | **COMMISSIONING** |  | 2026-02-19 | 2026-02-20 |  |  |  |  |  |  |  |  |  |  |  |  |  |
| PSUAY-LZE-GER-2990 |  | Perform commissioning of generator DG-3 in Yard 3' | 2d | 2026-02-19 | 2026-02-20 | PSUAY-LZE-GER-3220, PSUAY-LZE-ELE-2920, PSUAY-LZE-ELE-1980 |  |  |  | 41d | 24d | PSUAY - ELETROMEC - 1T - SEM HE | PROFIS [3963.57 h] | PSUAY-LZE-GER-2990 | ALFANDEGAMENTO | LUZVILLE | YARD 3 LINE | CNT |
|  | 3 | **QUAYSIDE - SUBSTATION (SE-05, SE-06, SE-07)** |  | 2025-11-10 | 2026-01-27 |  |  |  |  |  |  |  |  |  |  |  |  |  |
|  | 3 | **METAL STRUCTURE (BRAFER)** |  | 2025-11-10 | 2025-11-18 |  |  |  |  |  |  |  |  |  |  |  |  |  |
| PSUAY-BRF-EST-3000 |  | Execute metal structure of Quayside/Substation (SE-07 HV/LV, SE-06, SE-05) Yard 3' | 7d | 2025-11-10 A | 2025-11-18 A | PSUAY-MIL-GER-1450 | 100% |  |  |  |  |  | PROFIS [298281 h]; PSUAY-STE-STRUC [26.49 T] | PSUAY-BRF-EST-3000 | ALFANDEGAMENTO | BRAFER | YARD 3 LINE | CNT |
|  | 2 | **LIFTING** |  | 2025-11-19 | 2025-11-20 |  |  |  |  |  |  |  |  |  |  |  |  |  |
| PSUAY-CAG-MEC-3010 |  | Perform lifting of the SE-07 HV from Yard 3' | 1d | 2025-11-19 A | 2025-11-19 A | PSUAY-BRF-EST-3000 | 100% |  |  |  |  |  | PROFIS [992.08 h] | PSUAY-CAG-MEC-3010 | ALFANDEGAMENTO | CONSAG | YARD 3 LINE | CNT |
| PSUAY-CAG-MEC-3020 |  | Perform lifting of the SE-07 LV from Yard 3' | 1d | 2025-11-19 A | 2025-11-19 A | PSUAY-CAG-MEC-3010 SS | 100% |  |  |  |  |  | PROFIS [992.08 h] | PSUAY-CAG-MEC-3020 | ALFANDEGAMENTO | CONSAG | YARD 3 LINE | CNT |
| PSUAY-CAG-MEC-3030 |  | Perform lifting of SE-05 from Yard 3' | 1d | 2025-11-20 A | 2025-11-20 A | PSUAY-CAG-MEC-3020 | 100% |  |  |  |  |  | PROFIS [992.08 h] | PSUAY-CAG-MEC-3030 | ALFANDEGAMENTO | CONSAG | YARD 3 LINE | CNT |
| PSUAY-CAG-MEC-3040 |  | Perform lifting of SE-06 from Yard 3' | 1d | 2025-11-20 A | 2025-11-20 A | PSUAY-CAG-MEC-3030 SS | 100% |  |  |  |  |  | PROFIS [992.08 h] | PSUAY-CAG-MEC-3040 | ALFANDEGAMENTO | CONSAG | YARD 3 LINE | CNT |
|  | 1 | **ELECTRON CENTERS (LUZVILLE)** |  | 2025-11-10 | 2026-01-27 |  |  |  |  |  |  |  |  |  |  |  |  |  |
| PSUAY-LZE-MEC-3050 |  | Perform assembly of supports and cable trays for the Yard 3 electrical substations. | 16d | 2025-11-10 A | 2025-12-12 A | PSUAY-MIL-GER-1130, PSUAY-MIL-GER-1140, PSUAY-MIL-GER-1150, PSUAY-MIL-GER-1160 | 100% | 2025-11-10 | 2025-12-01 |  |  | PSUAY - ELETROMEC - 1T - SEM HE | PROFIS [31708.5 h] | PSUAY-LZE-MEC-3050 | ALFANDEGAMENTO | LUZVILLE | YARD 3 LINE | CNT |
|  | 1 | **SE-07 HV** |  | 2025-11-10 | 2025-12-13 |  |  |  |  |  |  |  |  |  |  |  |  |  |
|  | 1 | **ELECTRICAL CENTER** |  | 2025-11-10 | 2025-11-11 |  |  |  |  |  |  |  |  |  |  |  |  |  |
| PSUAY-LZE-ELE-2960 |  | Perform fixing to the base of the SE-07 HV electrical substation in Yard 3' | 2d | 2025-11-10 A | 2025-11-11 A | PSUAY-MIL-GER-1130, PSUAY-MIL-GER-1160 | 100% |  |  |  |  | PSUAY - ELETROMEC - 1T - SEM HE | PROFIS [3963.57 h] | PSUAY-LZE-ELE-3060 | ALFANDEGAMENTO | LUZVILLE | YARD 3 LINE | CNT |
|  | 2 | **MT CABLE PREPARATION - SECTION K** |  | 2025-12-01 | 2025-12-13 |  |  |  |  |  |  |  |  |  |  |  |  |  |
| PSUAY-LZE-ELE-2970 |  | Perform cable termination on MT-Section K of SE-07 HV in Yard 3' | 2d | 2025-12-01 A | 2025-12-06 A | PSUAY-LZE-MEC-3050, PSUAY-LZE-ELE-2960 | 100% | 2025-12-23 | 2025-12-24 |  |  | PSUAY - ELETROMEC - 1T - SEM HE | PROFIS [3963.57 h] | PSUAY-LZE-ELE-3070 | ALFANDEGAMENTO | LUZVILLE | YARD 3 LINE | CNT |
| PSUAY-LZE-ELE-2980 |  | Perform VLF test on the MT-Section K cables of the SE-07 HV in Yard 3' | 1d | 2025-12-08 A | 2025-12-13 A | PSUAY-LZE-ELE-2970 FS+2d | 100% | 2025-12-17 | 2025-12-17 |  |  | PSUAY - ELETROMEC - 1T - SEM HE | PROFIS [1981.78 h] | PSUAY-LZE-ELE-3080 | ALFANDEGAMENTO | LUZVILLE | YARD 3 LINE | CNT |
| PSUAY-LZE-ELE-2990 |  | Perform cable connection for MT-Section K of SE-07 HV in Yard 3' | 1d | 2025-12-08 A | 2025-12-13 A | PSUAY-LZE-ELE-2980 | 100% | 2025-12-18 | 2025-12-18 |  |  | PSUAY - ELETROMEC - 1T - SEM HE | PROFIS [1981.78 h] | PSUAY-LZE-ELE-3090 | ALFANDEGAMENTO | LUZVILLE | YARD 3 LINE | CNT |
|  | 2 | **SE-07 LV** |  | 2025-11-12 | 2025-11-13 |  |  |  |  |  |  |  |  |  |  |  |  |  |
|  | 1 | **ELECTRICAL CENTER** |  | 2025-11-12 | 2025-11-13 |  |  |  |  |  |  |  |  |  |  |  |  |  |
| PSUAY-LZE-ELE-3000 |  | Perform fixing to the base of the SE-07 LV electrical substation in Yard 3' | 2d | 2025-11-12 A | 2025-11-13 A | PSUAY-MIL-GER-1140, PSUAY-LZE-ELE-2960 | 100% |  |  |  |  | PSUAY - ELETROMEC - 1T - SEM HE | PROFIS [3963.57 h] | PSUAY-LZE-ELE-3100 | ALFANDEGAMENTO | LUZVILLE | YARD 3 LINE | CNT |
|  | 4 | **SE-05** |  | 2025-11-14 | 2026-01-22 |  |  |  |  |  |  |  |  |  |  |  |  |  |
|  | 1 | **ELECTRICAL CENTER** |  | 2025-11-14 | 2025-11-17 |  |  |  |  |  |  |  |  |  |  |  |  |  |
| PSUAY-LZE-ELE-3010 |  | Perform fixing to the base of the SE-05 LV electrical substation in Yard 3' | 2d | 2025-11-14 A | 2025-11-17 A | PSUAY-MIL-GER-1150, PSUAY-MIL-GER-1160, PSUAY-LZE-ELE-3000 | 100% |  |  |  |  | PSUAY - ELETROMEC - 1T - SEM HE | PROFIS [3963.57 h] | PSUAY-LZE-ELE-3110 | ALFANDEGAMENTO | LUZVILLE | YARD 3 LINE | CNT |

Notes:
- PSUAY-LZE-GER-2990: Translate: Executar comissionamento do gerador DG-3 do Yard 3'
- PSUAY-BRF-EST-3000: Translate: Executar estrutura metálica do Quayside/Subestação do Yard 3'
- PSUAY-CAG-MEC-3010: Translate: Executar içamento do SE-07 HV do Yard 3'
- PSUAY-CAG-MEC-3020: Translate: Executar içamento do SE-07 LV do Yard 3'
- PSUAY-CAG-MEC-3030: Translate: Executar içamento do SE-05 do Yard 3'
- PSUAY-CAG-MEC-3040: Translate: Executar içamento do SE-06 do Yard 3'
- PSUAY-LZE-MEC-3050: Translate: Executar montagem de suportes e leitos dos eletrocentros do Yard 3'
- PSUAY-LZE-ELE-2960: Translate: Executar fixação na base do eletrocentro SE-07 HV do Yard 3'
- PSUAY-LZE-ELE-2970: Translate: Executar mufla dos cabos MT-Trecho K da SE-07 HV do Yard 3'
- PSUAY-LZE-ELE-2980: Translate: Executar teste VLF dos cabos MT-Trecho K da SE-07 HV do Yard 3'
- PSUAY-LZE-ELE-2990: Translate: Executar conectorização dos cabos MT-Trecho K da SE-07 HV do Yard 3'
- PSUAY-LZE-ELE-3000: Translate: Executar fixação na base do eletrocentro SE-07 LV do Yard 3'
- PSUAY-LZE-ELE-3010: Translate: Executar fixação na base do eletrocentro SE-05 LV do Yard 3'

| ID | WBS | Activity | Duration | Start | Finish | Predecessors | Complete | Planned start | Planned finish | Total float | Free float | Calendar | Resources | Atualização | ACTIVITY ID COD. | FASES DE ENTREGA | RESPONSÁVEL | ÁREAS | PHASES - YARD |
| --- | --- | --- | --- | --- | --- | --- | --- | --- | --- | --- | --- | --- | --- | --- | --- | --- | --- | --- | --- |
|  | 2 | **MT CABLE PREPARATION - SECTION K** |  | 2025-12-08 | 2026-01-22 |  |  |  |  |  |  |  |  |  |  |  |  |  |  |
| PSUAY-LZE-ELE-3020 |  | Perform cable termination for MT-Section K of SE-05 in Yard 3' | 2d | 2025-12-08 A | 2026-01-20 A | PSUAY-LZE-ELE-2970 FS+2d | 100% | 2025-12-17 | 2025-12-18 |  |  | PSUAY - ELETROMEC - 1T - SEM HE | PROFIS [3963.57 h] | OK | PSUAY-LZE-ELE-3120 | ALFANDEGAMENTO | LUZVILLE | YARD 3 LINE | CNT |
| PSUAY-LZE-ELE-3030 |  | Perform VLF test on the MT cables - Section K of SE-05 in Yard 3' | 1d | 2026-01-21 A | 2026-01-21 A | PSUAY-LZE-ELE-3020 | 100% |  |  |  |  | PSUAY - ELETROMEC - 1T - SEM HE | PROFIS [1981.78 h] | OK | PSUAY-LZE-ELE-3130 | ALFANDEGAMENTO | LUZVILLE | YARD 3 LINE | CNT |
| PSUAY-LZE-ELE-3040 |  | Perform cable connection for MT-Section K of SE-05 in Yard 3' | 1d | 2026-01-22 A | 2026-01-22 A | PSUAY-LZE-ELE-3030 | 100% |  |  |  |  | PSUAY - ELETROMEC - 1T - SEM HE | PROFIS [1981.78 h] | OK | PSUAY-LZE-ELE-3140 | ALFANDEGAMENTO | LUZVILLE | YARD 3 LINE | CNT |
|  | 3 | **SE-06** |  | 2025-11-18 | 2025-12-13 |  |  |  |  |  |  |  |  |  |  |  |  |  |  |
|  | 1 | **ELECTRICAL CENTER** |  | 2025-11-18 | 2025-11-19 |  |  |  |  |  |  |  |  |  |  |  |  |  |  |
| PSUAY-LZE-ELE-3050 |  | Perform fixing to the base of the SE-06 electrical substation in Yard 3' | 2d | 2025-11-18 A | 2025-11-19 A | PSUAY-MIL-GER-1160, PSUAY-LZE-ELE-3010 | 100% |  |  |  |  | PSUAY - ELETROMEC - 1T - SEM HE | PROFIS [3963.57 h] |  | PSUAY-LZE-ELE-3150 | ALFANDEGAMENTO | LUZVILLE | YARD 3 LINE | CNT |
|  | 2 | **SE-05 X SE-06 LAUNCH** |  | 2025-12-05 | 2025-12-13 |  |  |  |  |  |  |  |  |  |  |  |  |  |  |
| PSUAY-LZE-ELE-3060 |  | Perform cable laying SE-05 x SE-06 from Yard 3' | 3d | 2025-12-05 A | 2025-12-05 A | PSUAY-LZE-MEC-3050, PSUAY-LZE-ELE-3050, PSUAY-LZE-ELE-3010 | 100% | 2025-12-23 | 2025-12-29 |  |  | PSUAY - ELETROMEC - 1T - SEM HE | PROFIS [585.53 h]; MATERIAL - CABO HV [78 m] |  | PSUAY-LZE-ELE-3160 | ALFANDEGAMENTO | LUZVILLE | YARD 3 LINE | CNT |
| PSUAY-LZE-ELE-3070 |  | Perform cable termination on MT-Section K cables of SE-06 in Yard 3' | 2d | 2025-12-08 A | 2025-12-13 A | PSUAY-LZE-ELE-3060 FS+3d | 100% | 2025-12-18 | 2025-12-19 |  |  | PSUAY - ELETROMEC - 1T - SEM HE | PROFIS [3963.57 h] |  | PSUAY-LZE-ELE-3170 | ALFANDEGAMENTO | LUZVILLE | YARD 3 LINE | CNT |
| PSUAY-LZE-ELE-3180 |  | Perform VLF test on the MT cables - Section K of SE-06 in Yard 3' | 1d | 2025-12-08 A | 2025-12-13 A | PSUAY-LZE-ELE-3070 | 100% | 2025-12-22 | 2025-12-22 |  |  | PSUAY - ELETROMEC - 1T - SEM HE | PROFIS [1981.78 h] |  | PSUAY-LZE-ELE-3180 | ALFANDEGAMENTO | LUZVILLE | YARD 3 LINE | CNT |
| PSUAY-LZE-ELE-3190 |  | Perform cable connection for MT-Section K of SE-06 in Yard 3' | 1d | 2025-12-08 A | 2025-12-13 A | PSUAY-LZE-ELE-3180 | 100% | 2025-12-23 | 2025-12-23 |  |  | PSUAY - ELETROMEC - 1T - SEM HE | PROFIS [1981.78 h] |  | PSUAY-LZE-ELE-3190 | ALFANDEGAMENTO | LUZVILLE | YARD 3 LINE | CNT |
|  | 5 | **GROUNDING** |  | 2025-12-08 | 2025-12-13 |  |  |  |  |  |  |  |  |  |  |  |  |  |  |
| PSUAY-LZE-ELE-3200 |  | Perform grounding of the electrical substation infrastructure in Yard 3' | 3d | 2025-12-08 A | 2025-12-13 A | PSUAY-LZE-MEC-3050, PSUAY-LZE-ELE-3350 SS | 100% | 2026-01-09 | 2026-01-13 |  |  | PSUAY - ELETROMEC - 1T - SEM HE | PROFIS [5945.35 h] |  | PSUAY-LZE-ELE-3200 | ALFANDEGAMENTO | LUZVILLE | YARD 3 LINE | CNT |
| PSUAY-LZE-ELE-3210 |  | Perform grounding of the electrical centers in Yard 3' | 2d | 2025-12-08 A | 2025-12-13 A | PSUAY-LZE-ELE-3000, PSUAY-LZE-ELE-3200, PSUAY-LZE-ELE-2960, PSUAY-LZE-ELE-3010, PSUAY-LZE-ELE-3050, PSUAY-LZE-ELE-3360 SS | 100% | 2026-01-14 | 2026-01-15 |  |  | PSUAY - ELETROMEC - 1T - SEM HE | PROFIS [3963.57 h] |  | PSUAY-LZE-ELE-3210 | ALFANDEGAMENTO | LUZVILLE | YARD 3 LINE | CNT |
|  | 6 | **STARTUP** |  | 2026-01-19 | 2026-01-27 |  |  |  |  |  |  |  |  |  |  |  |  |  |  |
| PSUAY-LZE-GER-3220 |  | Release the SE-07 HV power substation in Yard 3 for energization. | 1d | 2026-01-19 A | 2026-01-19 A | PSUAY-LZE-ELE-2990, PSUAY-LZE-ELE-1980 | 100% |  |  |  |  | PSUAY - ELETROMEC - 1T - SEM HE | PROFIS [1981.78 h] | OK | PSUAY-LZE-GER-3220 | ALFANDEGAMENTO | LUZVILLE | YARD 3 LINE | CNT |
| PSUAY-LZE-GER-3230 |  | Release the SE-05 electrical substation in Yard 3 for energization. | 1d | 2026-01-26 | 2026-01-26 | PSUAY-LZE-ELE-1980 |  |  |  | 58d | 0d | PSUAY - ELETROMEC - 1T - SEM HE | PROFIS [1981.78 h] |  | PSUAY-LZE-GER-3230 | ALFANDEGAMENTO | LUZVILLE | YARD 3 LINE | CNT |
| PSUAY-LZE-GER-3240 |  | Release the SE-06 electrical substation in Yard 3 for energization. | 1d | 2026-01-27 | 2026-01-27 | PSUAY-LZE-GER-3230, PSUAY-LZE-ELE-1980 |  |  |  | 58d | 0d | PSUAY - ELETROMEC - 1T - SEM HE | PROFIS [1981.78 h] |  | PSUAY-LZE-GER-3240 | ALFANDEGAMENTO | LUZVILLE | YARD 3 LINE | CNT |
|  | 4 | **TOILET BLOCK** |  | 2025-11-10 | 2026-01-30 |  |  |  |  |  |  |  |  |  |  |  |  |  |  |
|  | 3 | **BASE** |  | 2025-12-01 | 2025-12-16 |  |  |  |  |  |  |  |  |  |  |  |  |  |  |
| PSUAY-CAG-CIV-3250 |  | Execute steel base for the Yard 3 Toilet Box. | 4d | 2025-12-01 A | 2025-12-04 A | PSUAY-MIL-GER-1450 FS+15d, PSUAY-CAG-CIV-3300 | 100% |  |  |  |  |  | PROFIS [34572.9 h] |  | PSUAY-CAG-CIV-3250 | ALFANDEGAMENTO | CONSAG | YARD 3 LINE | CNT |
| PSUAY-CAG-CIV-3260 |  | Execute the formwork for the civil foundation of the Yard 3 Toilet Box. | 1d | 2025-12-15 A | 2025-12-15 A | PSUAY-CAG-CIV-3250 | 100% |  |  |  |  |  | PROFIS [5626.46 h] |  | PSUAY-CAG-CIV-3260 | ALFANDEGAMENTO | CONSAG | YARD 3 LINE | CNT |
| PSUAY-CAG-CIV-3270 |  | Execute concrete foundation for the Yard 3 Toilet Box. | 1d | 2025-12-16 A | 2025-12-16 A | PSUAY-CAG-CIV-3260 | 100% |  |  |  |  |  | PROFIS [326.87 h] |  | PSUAY-CAG-CIV-3270 | ALFANDEGAMENTO | CONSAG | YARD 3 LINE | CNT |

Notes:
- PSUAY-LZE-ELE-3020: Translate: Executar mufla dos cabos MT-Trecho K da SE-05 do Yard 3'
- PSUAY-LZE-ELE-3030: Translate: Executar teste VLF dos cabos MT-Trecho K da SE-05 do Yard 3'
- PSUAY-LZE-ELE-3040: Translate: Executar conectorização dos cabos MT-Trecho K da SE-05 do Yard 3'
- PSUAY-LZE-ELE-3050: Translate: Executar fixação na base do eletrocentro SE-06 do Yard 3'
- PSUAY-LZE-ELE-3060: Translate: Executar lançamento de cabos SE-05 x SE-06 do Yard 3'
- PSUAY-LZE-ELE-3070: Translate: Executar mufla dos cabos MT-Trecho K da SE-06 do Yard 3'
- PSUAY-LZE-ELE-3180: Translate: Executar teste VLF dos cabos MT-Trecho K da SE-06 do Yard 3'
- PSUAY-LZE-ELE-3190: Translate: Executar conectorização dos cabos MT-Trecho K da SE-06 do Yard 3'
- PSUAY-LZE-ELE-3200: Translate: Executar aterramento das infraestruturas dos eletrocentros do Yard 3'
- PSUAY-LZE-ELE-3210: Translate: Executar aterramento dos eletrocentros do Yard 3'
- PSUAY-LZE-GER-3220: Translate: Liberar para energização o eletrocentro SE-07 HV do Yard 3'
- PSUAY-LZE-GER-3230: Translate: Liberar para energização o eletrocentro SE-05 do Yard 3'
- PSUAY-LZE-GER-3240: Translate: Liberar para energização o eletrocentro SE-06 do Yard 3'
- PSUAY-CAG-CIV-3250: Translate: Executar aço da base civil do Toilet Box do Yard 3'
- PSUAY-CAG-CIV-3260: Translate: Executar forma da base civil do Toilet Box do Yard 3'
- PSUAY-CAG-CIV-3270: Translate: Executar concreto da base civil do Toilet Box do Yard 3'

| ID | WBS | Activity | Duration | Start | Finish | Predecessors | Complete | Planned start | Planned finish | Total float | Free float | Calendar | Resources | ACTIVITY ID COD. | FASES DE ENTREGA | RESPONSÁVEL | ÁREAS | PHASES - YARD | Atualização |
| --- | --- | --- | --- | --- | --- | --- | --- | --- | --- | --- | --- | --- | --- | --- | --- | --- | --- | --- | --- |
|  | 1 | **SEPTIC TANK** |  | 2025-11-10 | 2025-11-29 |  |  |  |  |  |  |  |  |  |  |  |  |  |  |
| PSUAY-CAG-CIV-3300 |  | Execute septic tank of the Toilet Block of Yard 3' | 29d | 2025-11-10 A | 2025-11-29 A | PSUAY-MIL-GER-1450 | 100% | 2025-11-10 | 2025-12-18 |  |  |  | PROFIS [60151.6 h] | PSUAY-CAG-CIV-3280 | ALFANDEGAMENTO | CONSAG | YARD 3 LINE | CNT |  |
|  | 2 | **STRUCTURE (METALBOX)** |  | 2026-01-26 | 2026-01-30 |  |  |  |  |  |  |  |  |  |  |  |  |  |  |
| PSUAY-MTB-EST-3290 |  | Execute the structure of the Toilet Box in Yard 3' | 5d | 2026-01-26 | 2026-01-30 | PSUAY-CAG-CIV-3300, PSUAY-CAG-CIV-3270 FS+13d |  |  |  | 56d | 39d |  | PROFIS [9008.1 h] | PSUAY-MTB-EST-3290 | ALFANDEGAMENTO | METALBOX | YARD 3 LINE | CNT |  |
|  | 7 | **ERTG AND SUBSTATION SE-04** |  | 2025-11-17 | 2026-02-19 |  |  |  |  |  |  |  |  |  |  |  |  |  |  |
|  | 5 | **SUBSTATION SE-04** |  | 2025-11-17 | 2026-01-28 |  |  |  |  |  |  |  |  |  |  |  |  |  |  |
|  | 3 | **SE-04 METAL STRUCTURE (BRAFER)** |  | 2025-12-15 | 2025-12-23 |  |  |  |  |  |  |  |  |  |  |  |  |  |  |
| PSUAY-BRF-EST-3300 |  | Execute metal structure of SE-04 Yard 3' | 6d | 2025-12-15 A | 2025-12-23 A | PSUAY-BRF-EST-3000 FS+15d | 100% | 2025-12-15 | 2025-12-22 |  |  |  | PROFIS [74570.2 h]; PSUAY-STE-STRUC [6.62 T] | PSUAY-BRF-EST-3300 | ALFANDEGAMENTO | BRAFER | YARD 3 LINE | CNT |  |
|  | 2 | **LIFTING SE-04** |  | 2025-12-23 | 2025-12-23 |  |  |  |  |  |  |  |  |  |  |  |  |  |  |
| PSUAY-CAG-MEC-3310 |  | Perform lifting of SE-04 from Yard 3' | 1d | 2025-12-23 A | 2025-12-23 A | PSUAY-CAG-MEC-3040, PSUAY-BRF-EST-3300 | 100% | 2026-01-05 | 2026-01-05 |  |  |  | PROFIS [992.08 h] | PSUAY-CAG-MEC-3310 | ALFANDEGAMENTO | CONSAG | YARD 3 LINE | CNT |  |
|  | 4 | **ELECTRICAL** |  | 2025-11-17 | 2026-01-24 |  |  |  |  |  |  |  |  |  |  |  |  |  |  |
|  | 1 | **ELECTRICAL CENTER** |  | 2025-11-17 | 2026-01-17 |  |  |  |  |  |  |  |  |  |  |  |  |  |  |
| PSUAY-LZE-ELE-3320 |  | Install grounding grid for SE-04 on Yard 3' | 10d | 2025-11-17 A | 2025-11-22 A | PSUAY-MIL-GER-1120 | 100% | 2025-11-26 | 2025-12-09 |  |  | PSUAY - ELETROMEC - 1T - SEM HE | PROFIS [19817.8 h] | PSUAY-LZE-ELE-3320 | ALFANDEGAMENTO | LUZVILLE | YARD 3 LINE | CNT |  |
| PSUAY-LZE-ELE-3330 |  | Perform the installation of the SE-04 on the Yard 3 bases. | 2d | 2026-01-05 A | 2026-01-06 A | PSUAY-LZE-ELE-3320, PSUAY-MIL-GER-1170, PSUAY-BRF-EST-3300 SS | 100% |  |  |  |  | PSUAY - ELETROMEC - 1T - SEM HE | PROFIS [3963.57 h] | PSUAY-LZE-ELE-3330 | ALFANDEGAMENTO | LUZVILLE | YARD 3 LINE | CNT |  |
| PSUAY-LZE-ELE-3340 |  | Perform assembly of supports and beds for SE-04 in Yard 3' | 9d | 2026-01-06 A | 2026-01-17 A | PSUAY-MIL-GER-1170, PSUAY-LZE-ELE-3330 | 100% | 2026-01-07 | 2026-01-19 |  |  | PSUAY - ELETROMEC - 1T - SEM HE | PROFIS [17836 h] | PSUAY-LZE-ELE-3340 | ALFANDEGAMENTO | LUZVILLE | YARD 3 LINE | CNT | OK |
| PSUAY-LZE-ELE-3350 |  | Perform grounding of the SE-04 infrastructure in Yard 3' | 2d | 2026-01-12 A | 2026-01-17 A | PSUAY-LZE-ELE-3340 | 100% | 2026-01-23 | 2026-01-26 |  |  | PSUAY - ELETROMEC - 1T - SEM HE | PROFIS [3963.57 h] | PSUAY-LZE-ELE-3350 | ALFANDEGAMENTO | LUZVILLE | YARD 3 LINE | CNT | OK |
| PSUAY-LZE-ELE-3360 |  | Perform grounding of SE-04 in Yard 3' | 1d | 2026-01-12 A | 2026-01-17 A | PSUAY-LZE-ELE-3330, PSUAY-LZE-ELE-3340, PSUAY-LZE-ELE-3350 | 100% | 2026-01-27 | 2026-01-27 |  |  | PSUAY - ELETROMEC - 1T - SEM HE | PROFIS [1981.78 h] | PSUAY-LZE-ELE-3360 | ALFANDEGAMENTO | LUZVILLE | YARD 3 LINE | CNT | OK |
|  | 2 | **MT CABLE PREPARATION - SECTION K** |  | 2026-01-19 | 2026-01-24 |  |  |  |  |  |  |  |  |  |  |  |  |  |  |
| PSUAY-LZE-ELE-3370 |  | Perform cable termination on medium voltage cables - Section K of SE-04 in Yard 3' | 3d | 2026-01-19 A | 2026-01-21 A | PSUAY-LZE-ELE-3330, PSUAY-LZE-ELE-3340, PSUAY-LZE-ELE-3350, PSUAY-LZE-ELE-3360 | 100% |  |  |  |  | PSUAY - ELETROMEC - 1T - SEM HE | PROFIS [5945.35 h] | PSUAY-LZE-ELE-3370 | ALFANDEGAMENTO | LUZVILLE | YARD 3 LINE | CNT | OK |
| PSUAY-LZE-ELE-3380 |  | Perform VLF tests on MT cables - Section K of SE-04 in Yard 3' | 2d | 2026-01-22 A | 2026-01-23 A | PSUAY-LZE-ELE-3370 | 100% |  |  |  |  | PSUAY - ELETROMEC - 1T - SEM HE | PROFIS [3963.57 h] | PSUAY-LZE-ELE-3380 | ALFANDEGAMENTO | LUZVILLE | YARD 3 LINE | CNT | OK |
| PSUAY-LZE-ELE-3390 |  | Perform connectorization of MT cables - Section K of SE-04 of Yard 3' | 1d | 2026-01-22 A | 2026-01-24 A | PSUAY-LZE-ELE-3380 | 100% | 2026-01-26 | 2026-01-26 |  |  | PSUAY - ELETROMEC - 1T - SEM HE | PROFIS [1981.78 h] | PSUAY-LZE-ELE-3390 | ALFANDEGAMENTO | LUZVILLE | YARD 3 LINE | CNT | OK |
|  | 1 | **STARTUP** |  | 2026-01-28 | 2026-01-28 |  |  |  |  |  |  |  |  |  |  |  |  |  |  |
| PSUAY-LZE-GER-3400 |  | Release the SE-04 electrical substation in Yard 3 for energization. | 1d | 2026-01-28 | 2026-01-28 | PSUAY-LZE-ELE-1980, PSUAY-LZE-ELE-3390, PSUAY-LZE-GER-3240 |  |  |  | 58d | 41d | PSUAY - ELETROMEC - 1T - SEM HE | PROFIS [1981.78 h] | PSUAY-LZE-GER-3400 | ALFANDEGAMENTO | LUZVILLE | YARD 3 LINE | CNT |  |
|  | 1 | **ERTG (LUZVILLE)** |  | 2025-12-01 | 2026-02-19 |  |  |  |  |  |  |  |  |  |  |  |  |  |  |
|  | 1 | **CABLE LAUNCH** |  | 2025-12-01 | 2026-02-19 |  |  |  |  |  |  |  |  |  |  |  |  |  |  |
|  | 2 | **ERTG1-FP-02** |  | 2025-12-01 | 2025-12-23 |  |  |  |  |  |  |  |  |  |  |  |  |  |  |
| PSUAY-LZE-ELE-3410 |  | Perform BT cable deployment from eRTG1-FP-02 in Yard 3' | 5d | 2025-12-01 A | 2025-12-03 A | PSUAY-LZE-MEC-3050, PSUAY-LZE-ELE-3060 | 100% | 2025-12-30 | 2026-01-07 |  |  | PSUAY - ELETROMEC - 1T - SEM HE | PROFIS [9908.91 h]; CABLE LOW VOLTAGE [2640 m] | PSUAY-LZE-ELE-3410 | ALFANDEGAMENTO | LUZVILLE | YARD 3 LINE | CNT |  |
| PSUAY-LZE-ELE-3420 |  | Perform BT cable termination for eRTG1-FP-02 from Yard 3' | 2d | 2025-12-18 A | 2025-12-19 A | PSUAY-LZE-ELE-3410 FS+10d | 100% |  |  |  |  | PSUAY - ELETROMEC - 1T - SEM HE | PROFIS [3963.57 h] | PSUAY-LZE-ELE-3420 | ALFANDEGAMENTO | LUZVILLE | YARD 3 LINE | CNT |  |
| PSUAY-LZE-ELE-3430 |  | Perform tests and connection of BT cables from eRTG1-FP-02in Yard 3' | 2d | 2025-12-22 A | 2025-12-23 A | PSUAY-LZE-ELE-3420 | 100% |  |  |  |  | PSUAY - ELETROMEC - 1T - SEM HE | PROFIS [3963.57 h] | PSUAY-LZE-ELE-3430 | ALFANDEGAMENTO | LUZVILLE | YARD 3 LINE | CNT |  |

Notes:
- PSUAY-CAG-CIV-3300: Translate: Executar fossa séptica do Toilet Block do Yard 3'
- PSUAY-MTB-EST-3290: Translate: Executar estrutura do Toilet Box do Yard 3'
- PSUAY-BRF-EST-3300: Translate: Executar içamento do SE-04 do Yard 3'
- PSUAY-CAG-MEC-3310: Translate: Executar içamento do SE-04 do Yard 3'
- PSUAY-LZE-ELE-3320: Translate: Executar malha de aterramento do SE-04 do Yard 3'
- PSUAY-LZE-ELE-3330: Translate: Executar fixação do SE-04 nas bases do Yard 3'
- PSUAY-LZE-ELE-3340: Translate: Executar montagem de suportes e leitos do SE-04 do Yard 3'
- PSUAY-LZE-ELE-3350: Translate: Executar aterramento das infraestruturas do SE-04 do Yard 3'
- PSUAY-LZE-ELE-3360: Translate: Executar aterramento do SE-04 do Yard 3'
- PSUAY-LZE-ELE-3370: Translate: Executar mufla dos cabos MT - Trecho K da SE-04 do Yard 3'
- PSUAY-LZE-ELE-3380: Translate: Executar testes VLF dos cabos MT - Trecho K da SE-04 do Yard 3'
- PSUAY-LZE-ELE-3390: Translate: Executar conectorização dos cabos MT - Trecho K da SE-04 do Yard 3'
- PSUAY-LZE-GER-3400: Translate: Liberar para energização o eletrocentro SE-04 do Yard 3'
- PSUAY-LZE-ELE-3410: Translate: Executar lançamento de cabos BT do eRTG1-FP-02 do Yard 3'
- PSUAY-LZE-ELE-3420: Translate: Executar terminação de cabos BT do eRTG1-FP-02 do Yard 3'
- PSUAY-LZE-ELE-3430: Translate: Executar ensaios e conexão de cabos BT do eRTG1-FP-02 do Yard 3'

| ID | WBS | Activity | Duration | Start | Finish | Predecessors | Complete | Remaining | Planned start | Planned finish | Total float | Free float | Calendar | Resources | ACTIVITY ID COD. | FASES DE ENTREGA | RESPONSÁVEL | ÁREAS | PHASES - YARD | Atualização |
| --- | --- | --- | --- | --- | --- | --- | --- | --- | --- | --- | --- | --- | --- | --- | --- | --- | --- | --- | --- | --- |
|  | 4 | **ERTG1-FP-03** |  | 2025-12-03 | 2025-12-23 |  |  |  |  |  |  |  |  |  |  |  |  |  |  |  |
| PSUAY-LZE-ELE-3440 |  | Perform BT cable deployment from eRTG1-FP-03 in Yard 3' | 6d | 2025-12-03 A | 2025-12-13 A | PSUAY-LZE-ELE-3410 | 100% |  | 2026-01-08 | 2026-01-15 |  |  | PSUAY - ELETROMEC - 1T - SEM HE | PROFIS [11034.9 h]; CABLE LOW VOLTAGE [2940 m] | PSUAY-LZE-ELE-3440 | ALFANDEGAMENTO | LUZVILLE | YARD 3 LINE | CNT |  |
| PSUAY-LZE-ELE-3450 |  | Perform BT cable termination for eRTG1-FP-03 from Yard 3' | 2d | 2025-12-15 A | 2025-12-16 A | PSUAY-LZE-ELE-3440 | 100% |  |  |  |  |  | PSUAY - ELETROMEC - 1T - SEM HE | PROFIS [3963.57 h] | PSUAY-LZE-ELE-3450 | ALFANDEGAMENTO | LUZVILLE | YARD 3 LINE | CNT |  |
| PSUAY-LZE-ELE-3460 |  | Perform testing and connection of BT cables from eRTG1-FP-03 in Yard 3' | 2d | 2025-12-22 A | 2025-12-23 A | PSUAY-LZE-ELE-3450 | 100% |  |  |  |  |  | PSUAY - ELETROMEC - 1T - SEM HE | PROFIS [3963.57 h] | PSUAY-LZE-ELE-3460 | ALFANDEGAMENTO | LUZVILLE | YARD 3 LINE | CNT |  |
|  | 5 | **ERTG1-FP-01** |  | 2026-01-26 | 2026-02-06 |  |  |  |  |  |  |  |  |  |  |  |  |  |  |  |
| PSUAY-LZE-ELE-3470 |  | Perform BT cable deployment from eRTG1-FP-01 in Yard 3' | 6d | 2026-01-26 | 2026-02-02 | PSUAY-LZE-ELE-3440 |  |  |  |  | 51d | 0d | PSUAY - ELETROMEC - 1T - SEM HE | PROFIS [11034.9 h]; CABLE LOW VOLTAGE [2940 m] | PSUAY-LZE-ELE-3470 | ALFANDEGAMENTO | LUZVILLE | YARD 3 LINE | CNT |  |
| PSUAY-LZE-ELE-3480 |  | Perform BT cable termination for eRTG1-FP-01 from Yard 3' | 2d | 2026-02-03 | 2026-02-04 | PSUAY-LZE-ELE-3470 |  |  |  |  | 51d | 0d | PSUAY - ELETROMEC - 1T - SEM HE | PROFIS [3963.57 h] | PSUAY-LZE-ELE-3480 | ALFANDEGAMENTO | LUZVILLE | YARD 3 LINE | CNT |  |
| PSUAY-LZE-ELE-3490 |  | Perform testing and connection of BT cables from eRTG1-FP-01 in Yard 3' | 2d | 2026-02-05 | 2026-02-06 | PSUAY-LZE-ELE-3480 |  |  |  |  | 51d | 34d | PSUAY - ELETROMEC - 1T - SEM HE | PROFIS [3963.57 h] | PSUAY-LZE-ELE-3490 | ALFANDEGAMENTO | LUZVILLE | YARD 3 LINE | CNT |  |
|  | 1 | **OPTIC FIBER (LOOP 6)** |  | 2026-01-30 | 2026-02-19 |  |  |  |  |  |  |  |  |  |  |  |  |  |  |  |
| PSUAY-LZE-ELE-3500 |  | Execute optic fiber pulling in Yard 3' | 7d | 2026-01-30 | 2026-02-09 | PSUAY-MIL-GER-1180 FS+5d |  |  |  |  | 15d | 0d | PSUAY - ELETROMEC - 1T - SEM HE | PROFIS [13753.4 h]; CABLE FIBER OPTICS [2565 m] | PSUAY-LZE-ELE-3500 | ALFANDEGAMENTO | LUZVILLE | YARD 3 LINE | CNT |  |
| PSUAY-LZE-ELE-3510 |  | Execute optic cable fusioning in Yard 3' | 5d | 2026-02-10 | 2026-02-16 | PSUAY-LZE-ELE-3500 |  |  |  |  | 15d | 0d | PSUAY - ELETROMEC - 1T - SEM HE | PROFIS [9908.91 h] | PSUAY-LZE-ELE-3510 | ALFANDEGAMENTO | LUZVILLE | YARD 3 LINE | CNT |  |
| PSUAY-LZE-ELE-3520 |  | Execute optic cable connection in Yard 3' | 3d | 2026-02-17 | 2026-02-19 | PSUAY-LZE-ELE-3510, PSUAY-MIL-GER-1190 |  |  |  |  | 15d | 0d | PSUAY - ELETROMEC - 1T - SEM HE | PROFIS [5945.35 h] | PSUAY-LZE-ELE-3520 | ALFANDEGAMENTO | LUZVILLE | YARD 3 LINE | CNT |  |
|  | 4 | **PITS (LIDS)** |  | 2025-12-08 | 2026-02-10 |  |  |  |  |  |  |  |  |  |  |  |  |  |  |  |
|  | 1 | **FW BOXES - FIREWATER** |  | 2025-12-08 | 2026-01-29 |  |  |  |  |  |  |  |  |  |  |  |  |  |  |  |
|  | 3 | **COVER** |  | 2025-12-08 | 2026-01-29 |  |  |  |  |  |  |  |  |  |  |  |  |  |  |  |
| PSUAY-CAG-CIV-3410 |  | Execute concrete work for the FW box covers in Yard 3' | 3.5d | 2025-12-08 A | 2026-01-29 | PSUAY-PMC-INF-2780 SS+1d, PSUAY-PMC-INF-2770 SS+1d | 17% | 3.5d | 2025-12-16 | 2025-12-19 | 49.5d | 0d |  | PROFIS [5630.06 h] | PSUAY-CAG-CIV-3530 | ALFANDEGAMENTO | CONSAG | YARD 3 LINE | CNT |  |
|  | 5 | **SW BOXES - DRAINAGE** |  | 2026-01-12 | 2026-02-02 |  |  |  |  |  |  |  |  |  |  |  |  |  |  |  |
|  | 3 | **COVER** |  | 2026-01-12 | 2026-02-02 |  |  |  |  |  |  |  |  |  |  |  |  |  |  |  |
| PSUAY-CAG-CIV-3420 |  | Execute concrete work for the SW box covers in Yard 3' | 2d | 2026-01-12 A | 2026-02-02 | PSUAY-CAG-CIV-3410 | 50% | 2d | 2026-01-23 | 2026-01-27 | 49.5d | 0d |  | PROFIS [2502.25 h] | PSUAY-CAG-CIV-3540 | ALFANDEGAMENTO | CONSAG | YARD 3 LINE | CNT | OK |
|  | 4 | **LV BOXES - LOW VOLTAGE** |  | 2026-01-13 | 2026-02-06 |  |  |  |  |  |  |  |  |  |  |  |  |  |  |  |
|  | 3 | **COVER** |  | 2026-01-13 | 2026-02-06 |  |  |  |  |  |  |  |  |  |  |  |  |  |  |  |
| PSUAY-CAG-CIV-3430 |  | Construct concrete for the LV box covers in Yard 3. | 4d | 2026-01-13 A | 2026-02-06 | PSUAY-CAG-CIV-3420 | 36% | 4d | 2026-01-13 | 2026-01-19 | 49.5d | 0d |  | PROFIS [6255.63 h] | PSUAY-CAG-CIV-3550 | ALFANDEGAMENTO | CONSAG | YARD 3 LINE | CNT | OK |
|  | 3 | **HV BOXES - HIGH VOLTAGE** |  | 2026-02-06 | 2026-02-09 |  |  |  |  |  |  |  |  |  |  |  |  |  |  |  |
|  | 3 | **COVER** |  | 2026-02-06 | 2026-02-09 |  |  |  |  |  |  |  |  |  |  |  |  |  |  |  |
| PSUAY-CAG-CIV-3440 |  | Construct concrete for the HV box covers in Yard 3. | 1d | 2026-02-06 | 2026-02-09 | PSUAY-CAG-CIV-3430 |  |  |  |  | 49.5d | 0d |  | PROFIS [1251.13 h] | PSUAY-CAG-CIV-3560 | ALFANDEGAMENTO | CONSAG | YARD 3 LINE | CNT |  |

Notes:
- PSUAY-LZE-ELE-3440: Translate: Executar lançamento de cabos BT do eRTG1-FP-03 do Yard 3'
- PSUAY-LZE-ELE-3450: Translate: Executar terminação de cabos BT do eRTG1-FP-032 do Yard 3'
- PSUAY-LZE-ELE-3460: Translate: Executar ensaio e conexão de cabos BT do eRTG1-FP-03 do Yard 3'
- PSUAY-LZE-ELE-3470: Translate: Executar lançamento de cabos BT do eRTG1-FP-01 do Yard 3'
- PSUAY-LZE-ELE-3480: Translate: Executar terminação de cabos BT do eRTG1-FP-01 do Yard 3'
- PSUAY-LZE-ELE-3490: Translate: Executar ensaio e coneão de cabos BT do eRTG1-FP-01 do Yard 3'
- PSUAY-LZE-ELE-3500: Translate: Executar lançamento de fibra óptica no Pátio 3'
- PSUAY-LZE-ELE-3510: Translate: Executar fusão de cabos ópticos no pátio 3'
- PSUAY-LZE-ELE-3520: Translate: Executar conexão de cabos ópticos no pátio 3'
- PSUAY-CAG-CIV-3410: Translate: Executar concreto das tampas das caixas FW do Yard 3'
- PSUAY-CAG-CIV-3420: Translate: Executar concreto das tampas das caixas SW do Yard 3'
- PSUAY-CAG-CIV-3430: Translate: Executar concreto das tampas das caixas LV do Yard 3'
- PSUAY-CAG-CIV-3440: Translate: Executar concreto das tampas das caixas HV do Yard 3'

| ID | WBS | Activity | Duration | Start | Finish | Predecessors | Complete | Remaining | Planned start | Planned finish | Total float | Free float | Resources | Translate | ACTIVITY ID COD. | FASES DE ENTREGA | RESPONSÁVEL | ÁREAS | PHASES - YARD | Atualização |
| --- | --- | --- | --- | --- | --- | --- | --- | --- | --- | --- | --- | --- | --- | --- | --- | --- | --- | --- | --- | --- |
|  | 2 | **PW TANKS - POTABLE WATER** |  | 2026-02-09 | 2026-02-10 |  |  |  |  |  |  |  |  |  |  |  |  |  |  |  |
|  | 3 | **COVER** |  | 2026-02-09 | 2026-02-10 |  |  |  |  |  |  |  |  |  |  |  |  |  |  |  |
| PSUAY-CAG-CIV-3450 |  | Pour concrete for the PW box covers in Yard 3' | 1d | 2026-02-09 | 2026-02-10 | PSUAY-CAG-CIV-3440 |  |  |  |  | 49.5d | 32.5d | PROFIS [1251.13 h] | Executar concreto das tampas das caixas PW do Yard 3' | PSUAY-CAG-CIV-3570 | ALFANDEGAMENTO | CONSAG | YARD 3 LINE | CNT |  |
|  | 4 | **YARD 3 A** |  | 2025-11-10 | 2026-02-25 |  |  |  |  |  |  |  |  |  |  |  |  |  |  |  |
|  | 1 | **PITS** |  | 2025-11-10 | 2026-02-17 |  |  |  |  |  |  |  |  |  |  |  |  |  |  |  |
|  | 1 | **FW BOXES - FIREWATER** |  | 2025-12-03 | 2026-01-30 |  |  |  |  |  |  |  |  |  |  |  |  |  |  |  |
| PSUAY-CAG-CIV-3470 |  | Execute box FW-H01-01 from Yard 3 | 3d | 2025-12-03 A | 2025-12-23 A | PSUAY-MIL-GER-1450 FS+23d, PSUAY-CAG-INF-3670 SS | 100% |  | 2025-12-03 | 2025-12-05 |  |  | PROFIS [4705.83 h] | Executar caixa FW-H01-01 do Yard 3 | PSUAY-CAG-CIV-3580 | ALFANDEGAMENTO | CONSAG | YARD 3 A | CNT |  |
| PSUAY-CAG-CIV-3590 |  | Execute the cover of the FW boxes in Yard 3. | 1d | 2026-01-30 | 2026-01-30 | PSUAY-CAG-CIV-3470, PSUAY-CAG-CIV-3740 |  |  |  |  | 44d | 0d | PROFIS [625.56 h] | Executar tampa das caixas FW do Yard 3 | PSUAY-CAG-CIV-3590 | ALFANDEGAMENTO | CONSAG | YARD 3 A | CNT |  |
|  | 5 | **SW BOXES - DRAINAGE** |  | 2025-11-10 | 2026-02-12 |  |  |  |  |  |  |  |  |  |  |  |  |  |  |  |
| PSUAY-CAG-CIV-3490 |  | Execute box SW-H01-01 from Yard 3 | 4d | 2025-11-10 A | 2025-11-13 A | PSUAY-CAG-CIV-3470 | 100% |  |  |  |  |  | PROFIS [7732.56 h] | Executar caixa SW-H01-01 do Yard 3 | PSUAY-CAG-CIV-3600 | ALFANDEGAMENTO | CONSAG | YARD 3 A | CNT |  |
| PSUAY-CAG-CIV-3510 |  | Execute box SW-H01-03 from Yard 3 | 5d | 2025-11-10 A | 2025-11-14 A | PSUAY-CAG-CIV-3610 | 100% |  |  |  |  |  | PROFIS [8249.62 h] | Executar caixa SW-H01-03 do Yard 3 | PSUAY-CAG-CIV-3620 | ALFANDEGAMENTO | CONSAG | YARD 3 A | CNT |  |
| PSUAY-CAG-CIV-3530 |  | Execute box SW-F02-01 from Yard 3 | 8d | 2025-11-10 A | 2025-11-19 A | PSUAY-CAG-CIV-3520 | 100% |  |  |  |  |  | PROFIS [14164.3 h] | Executar caixa SW-F02-01 do Yard 3 | PSUAY-CAG-CIV-3640 | ALFANDEGAMENTO | CONSAG | YARD 3 A | CNT |  |
| PSUAY-CAG-CIV-3610 |  | Execute box SW-H01-02 from Yard 3 | 4d | 2025-11-14 A | 2025-11-19 A | PSUAY-CAG-CIV-3490 | 100% |  |  |  |  |  | PROFIS [7022.72 h] | Executar caixa SW-H01-02 do Yard 3 | PSUAY-CAG-CIV-3610 | ALFANDEGAMENTO | CONSAG | YARD 3 A | CNT |  |
| PSUAY-CAG-CIV-3520 |  | Execute box SW-F01-01 from Yard 3 | 5d | 2025-11-17 A | 2025-11-21 A | PSUAY-CAG-CIV-3510 | 100% |  |  |  |  |  | PROFIS [8624.36 h] | Executar caixa SW-F01-01 do Yard 3 | PSUAY-CAG-CIV-3630 | ALFANDEGAMENTO | CONSAG | YARD 3 A | CNT |  |
| PSUAY-CAG-CIV-3650 |  | Execute Yard 3 SW box cover | 2d | 2026-01-05 A | 2026-02-12 | PSUAY-CAG-CIV-3590 FS+7d, PSUAY-CAG-CIV-3530, PSUAY-CAG-INF-3980 | 50% | 2d | 2026-01-26 | 2026-01-27 | 44d | 0d | PROFIS [3127.81 h] | Executar tampa das caixas SW do Yard 3 | PSUAY-CAG-CIV-3650 | ALFANDEGAMENTO | CONSAG | YARD 3 A | CNT | OK |
|  | 4 | **LV BOXES - LOW VOLTAGE** |  | 2025-11-24 | 2026-02-13 |  |  |  |  |  |  |  |  |  |  |  |  |  |  |  |
| PSUAY-CAG-CIV-3660 |  | Execute box LV-H01-01 from Yard 3 | 5d | 2025-11-24 A | 2025-11-29 A | PSUAY-CAG-CIV-3470 SS | 100% |  | 2025-12-03 | 2025-12-09 |  |  | PROFIS [9429.68 h] | Executar caixa LV-H01-01 do Yard 3 | PSUAY-CAG-CIV-3660 | ALFANDEGAMENTO | CONSAG | YARD 3 A | CNT |  |
| PSUAY-CAG-CIV-3690 |  | Perform lid installation on Yard 3 LV boxes | 1d | 2025-12-01 A | 2026-02-13 | PSUAY-CAG-CIV-3650, PSUAY-CAG-CIV-3680 | 92% | 1d | 2025-12-22 | 2025-12-22 | 44d | 0d | PROFIS [1876.69 h] | Executar tampa das caixas LV do Yard 3 | PSUAY-CAG-CIV-3690 | ALFANDEGAMENTO | CONSAG | YARD 3 A | CNT | OK |
| PSUAY-CAG-CIV-3680 |  | Execute box LV-F01-03 from Yard 3 | 5d | 2025-12-15 A | 2026-01-30 | PSUAY-CAG-CIV-3670 SS | 84% | 5d | 2025-12-15 | 2025-12-19 | 53d | 0d | PROFIS [9118 h] | Executar caixa LV-F01-03 do Yard 3 | PSUAY-CAG-CIV-3680 | ALFANDEGAMENTO | CONSAG | YARD 3 A | CNT | OK |
| PSUAY-CAG-CIV-3670 |  | Execute box LV-F01-02 from Yard 3 | 5d | 2026-01-05 A | 2026-01-23 A | PSUAY-CAG-CIV-3660 SS | 100% |  | 2026-01-05 | 2026-01-09 |  |  | PROFIS [8613.55 h] | Executar caixa LV-F01-02 do Yard 3 | PSUAY-CAG-CIV-3670 | ALFANDEGAMENTO | CONSAG | YARD 3 A | CNT |  |
|  | 3 | **HV BOXES - HIGH VOLTAGE** |  | 2025-11-10 | 2026-02-16 |  |  |  |  |  |  |  |  |  |  |  |  |  |  |  |
| PSUAY-CAG-CIV-3700 |  | Execute box HV-H01-01 from Yard 3 | 5d | 2025-11-10 A | 2025-11-14 A | PSUAY-CAG-CIV-3660 | 100% |  |  |  |  |  | PROFIS [8795.51 h] | Executar caixa HV-H01-01 do Yard 3 | PSUAY-CAG-CIV-3700 | ALFANDEGAMENTO | CONSAG | YARD 3 A | CNT |  |
| PSUAY-CAG-CIV-3710 |  | Perform cover installation on Yard 3 HV boxes. | 1d | 2026-01-12 A | 2026-02-16 | PSUAY-CAG-CIV-3700, PSUAY-CAG-CIV-3690 | 50% | 1d | 2026-02-05 | 2026-02-05 | 44d | 0d | PROFIS [625.56 h] | Executar tampa das caixas HV do Yard 3 | PSUAY-CAG-CIV-3710 | ALFANDEGAMENTO | CONSAG | YARD 3 A | CNT |  |
|  | 2 | **DC - DRAINAGE CONTROL** |  | 2025-11-10 | 2026-02-17 |  |  |  |  |  |  |  |  |  |  |  |  |  |  |  |
| PSUAY-CAG-CIV-3720 |  | Execute box DC-F01-01 from Yard 3 | 6d | 2025-11-10 A | 2025-11-17 A | PSUAY-CAG-CIV-3700, PSUAY-CAG-MEC-3770 | 100% |  |  |  |  |  | PROFIS [11261.9 h] | Executar caixa DC-F01-01 do Yard 3 | PSUAY-CAG-CIV-3720 | ALFANDEGAMENTO | CONSAG | YARD 3 A | CNT |  |
| PSUAY-CAG-CIV-3730 |  | Execute box DC-F01-02 from Yard 3 | 6d | 2025-11-24 A | 2026-01-29 | PSUAY-CAG-CIV-3720 | 84% | 4d | 2025-12-10 | 2025-12-17 | 14d | 0d | PROFIS [11370 h] | Executar caixa DC-F01-02 do Yard 3 | PSUAY-CAG-CIV-3730 | ALFANDEGAMENTO | CONSAG | YARD 3 A | CNT |  |
| PSUAY-CAG-CIV-3740 |  | Execute box DC-H01-01 from Yard 3 | 4d | 2025-11-24 A | 2026-01-16 A | PSUAY-CAG-CIV-3730 | 100% |  | 2025-12-18 | 2025-12-23 |  |  | PROFIS [14769.7 h] | Executar caixa DC-H01-01 do Yard 3 | PSUAY-CAG-CIV-3740 | ALFANDEGAMENTO | CONSAG | YARD 3 A | CNT | OK |
| PSUAY-CAG-CIV-3750 |  | Run the lid of the DC boxes in Yard 3 | 1d | 2026-02-17 | 2026-02-17 | PSUAY-CAG-CIV-3740, PSUAY-CAG-CIV-3710 |  |  |  |  | 44d | 27d | PROFIS [1876.69 h] | Executar tampa das caixas DC do Yard 3 | PSUAY-CAG-CIV-3750 | ALFANDEGAMENTO | CONSAG | YARD 3 A | CNT |  |

Notes:
- PSUAY-CAG-CIV-3470: Planners Notes: FABRICADO = / 35% / (PESO = 35% - ARM E FUNDO) / LANÇADO = / 51% (PESO / = 16%) / PAREDES CONCRETADAS = / 84% / (PESO = 33%) / PESCOÇO CONCLUÍDO = / 100% / (PESO = 14%) / TAMPA FABRICADA E APLICADA = / 100% (PESO = / 02%) / TOTAL CONCLUÍDO (PESO = / 100%)

| ID | WBS | Activity | Duration | Start | Finish | Predecessors | Complete | Planned start | Planned finish | Calendar | Resources | ACTIVITY ID COD. | FASES DE ENTREGA | RESPONSÁVEL | ÁREAS | PHASES - YARD | Atualização |
| --- | --- | --- | --- | --- | --- | --- | --- | --- | --- | --- | --- | --- | --- | --- | --- | --- | --- |
|  | 6 | **INFRASTRUCTURE** |  | 2025-11-10 | 2026-01-17 |  |  |  |  |  |  |  |  |  |  |  |  |
|  | 4 | **SAO - OIL AND WATER SEPARATOR BOX** |  | 2025-11-10 | 2025-11-18 |  |  |  |  |  |  |  |  |  |  |  |  |
|  | 1 | **LEAN CONCRETE** |  | 2025-11-10 | 2025-11-12 |  |  |  |  |  |  |  |  |  |  |  |  |
| PSUAY-CAG-CIV-3760 |  | Execute lean concrete work for the SAO tank in Yard 3. | 3d | 2025-11-10 A | 2025-11-12 A | PSUAY-MIL-GER-1450 | 100% |  |  |  | PROFIS [56527.9 h]; CONCRETE-STRUCTURE [76.06 m³] | PSUAY-CAG-CIV-3760 | ALFANDEGAMENTO | CONSAG | YARD 3 A | CNT |  |
|  | 2 | **TANK** |  | 2025-11-13 | 2025-11-13 |  |  |  |  |  |  |  |  |  |  |  |  |
| PSUAY-CAG-MEC-3770 |  | Perform positioning of the SAO tank in Yard 3 | 1d | 2025-11-13 A | 2025-11-13 A | PSUAY-CAG-CIV-3760 | 100% |  |  |  | PROFIS [2567.31 h] | PSUAY-CAG-MEC-3770 | ALFANDEGAMENTO | CONSAG | YARD 3 A | CNT |  |
|  | 3 | **FILLING** |  | 2025-11-14 | 2025-11-18 |  |  |  |  |  |  |  |  |  |  |  |  |
| PSUAY-CAG-INF-3670 |  | Perform filling/backfilling of the SAO tank in Yard 3. | 3d | 2025-11-14 A | 2025-11-18 A | PSUAY-CAG-MEC-3770 | 100% |  |  |  | PROFIS [9803.68 h] | PSUAY-CAG-INF-3780 | ALFANDEGAMENTO | CONSAG | YARD 3 A | CNT |  |
|  | 4 | **AUTOMATION** |  | 2025-11-10 | 2025-11-14 |  |  |  |  |  |  |  |  |  |  |  |  |
| PSUAY-CAG-AUT-3790 |  | Perform automation of the Yard 3 SAO tank. | 5d | 2025-11-10 A | 2025-11-14 A | PSUAY-CAG-INF-3670 | 100% |  |  | PSUAY - ELETROMEC - 1T - SEM HE | PROFIS [9908.91 h] | PSUAY-CAG-AUT-3790 | ALFANDEGAMENTO | LUZVILLE | YARD 3 A | CNT |  |
|  | 1 | **INFRA-FW - FIREWATER** |  | 2025-12-01 | 2026-01-17 |  |  |  |  |  |  |  |  |  |  |  |  |
| PSUAY-CAG-INF-3700 |  | Perform FW (fire) infrastructure from box FW-D01-01 to FW-H01-01 from Yard 3 | 15d | 2025-12-01 A | 2026-01-17 A | PSUAY-CAG-INF-3690 SS | 100% | 2025-12-15 | 2026-01-08 |  | PROFIS [29605.1 h] | PSUAY-CAG-INF-3810 | ALFANDEGAMENTO | CONSAG | YARD 3 A | CNT | OK |
| PSUAY-CAG-INF-3690 |  | Install FW (fire) infrastructure from box FW-H01-01 to FW-H01-02 of Yard 3 | 5d | 2025-12-15 A | 2026-01-09 A | PSUAY-CAG-CIV-3470 SS, PSUAY-CAG-CIV-3470 FF | 100% | 2025-12-15 | 2025-12-19 |  | PROFIS [3873.48 h] | PSUAY-CAG-INF-3800 | ALFANDEGAMENTO | CONSAG | YARD 3 A | CNT |  |
|  | 2 | **INFRA-LV - LOW VOLTAGE** |  | 2025-12-01 | 2026-01-17 |  |  |  |  |  |  |  |  |  |  |  |  |
| PSUAY-CAG-INF-3710 |  | Execute infra LV from box LV-H01-02 to LV-H01-01 of Yard 3 | 1d | 2025-12-01 A | 2025-12-06 A | PSUAY-CAG-INF-3690, PSUAY-CAG-CIV-3680 | 100% | 2025-12-15 | 2025-12-15 |  | PROFIS [2792.51 h]; INFRA-STRUCTURE ELECTRICAL [31 m] | PSUAY-CAG-INF-3820 | ALFANDEGAMENTO | CONSAG | YARD 3 A | CNT |  |
| PSUAY-CAG-INF-3720 |  | Execute infra LV from box LV-H01-01 to LV-G01-02 of Yard 3 | 2d | 2025-12-01 A | 2025-12-06 A | PSUAY-CAG-INF-3710 | 100% | 2025-12-16 | 2025-12-17 |  | PROFIS [4954.46 h]; INFRA-STRUCTURE ELECTRICAL [55 m] | PSUAY-CAG-INF-3830 | ALFANDEGAMENTO | CONSAG | YARD 3 A | CNT |  |
| PSUAY-CAG-INF-3730 |  | Execute infra LV from box LV-G01-02 to LV-G01-01 of Yard 3 | 1d | 2025-12-01 A | 2025-12-06 A | PSUAY-CAG-INF-3720 | 100% | 2025-12-18 | 2025-12-18 |  | PROFIS [3323.99 h]; INFRA-STRUCTURE ELECTRICAL [36.9 m] | PSUAY-CAG-INF-3840 | ALFANDEGAMENTO | CONSAG | YARD 3 A | CNT |  |
| PSUAY-CAG-INF-3750 |  | Execute infra LV from box LV-F01-03 to LV-F01-02 of Yard 3 | 1d | 2025-12-01 A | 2025-12-06 A | PSUAY-CAG-INF-3740 | 100% | 2025-12-23 | 2025-12-23 |  | PROFIS [2161.94 h]; INFRA-STRUCTURE ELECTRICAL [24 m] | PSUAY-CAG-INF-3860 | ALFANDEGAMENTO | CONSAG | YARD 3 A | CNT |  |
| PSUAY-CAG-INF-3760 |  | Execute infra LV from box LV-F01-02 to LV-F01-01 of Yard 3 | 1d | 2025-12-01 A | 2026-01-10 A | PSUAY-CAG-INF-3750 FS+1d | 100% | 2025-12-24 | 2025-12-24 |  | PROFIS [2252.03 h]; INFRA-STRUCTURE ELECTRICAL [25 m] | PSUAY-CAG-INF-3870 | ALFANDEGAMENTO | CONSAG | YARD 3 A | CNT |  |
| PSUAY-CAG-INF-3740 |  | Execute infra LV from box LV-F01-03 to LV-G01-01 from Yard 3 | 2d | 2026-01-05 A | 2026-01-17 A | PSUAY-CAG-INF-3730 FS+5d | 100% | 2026-01-12 | 2026-01-13 |  | PROFIS [5494.94 h]; INFRA-STRUCTURE ELECTRICAL [61 m] | PSUAY-CAG-INF-3850 | ALFANDEGAMENTO | CONSAG | YARD 3 A | CNT |  |
|  | 5 | **INFRA-HV - HIGH VOLTAGE** |  | 2025-12-03 | 2026-01-17 |  |  |  |  |  |  |  |  |  |  |  |  |
| PSUAY-CAG-INF-3770 |  | Run the HV infrastructure from box HV-H01-01 to HV-H01-02 in Yard 3. | 1d | 2025-12-03 A | 2025-12-03 A | PSUAY-CAG-CIV-3700, PSUAY-CAG-CIV-3720 | 100% |  |  |  | PROFIS [2252.03 h]; INFRA-STRUCTURE ELECTRICAL [25 m] | PSUAY-CAG-INF-3880 | ALFANDEGAMENTO | CONSAG | YARD 3 A | CNT |  |
| PSUAY-CAG-INF-3800 |  | Execute HV infrastructure from box HV-F01-02 to HV-F01-01 of Yard 3 | 1d | 2025-12-03 A | 2026-01-17 A | PSUAY-CAG-INF-3790 | 100% | 2025-12-08 | 2025-12-08 |  | PROFIS [2702.43 h]; INFRA-STRUCTURE ELECTRICAL [30 m] | PSUAY-CAG-INF-3910 | ALFANDEGAMENTO | CONSAG | YARD 3 A | CNT |  |
| PSUAY-CAG-INF-3780 |  | Run the HV infrastructure from box HV-H01-02 to HV-G01-01 from Yard 3. | 1d | 2025-12-04 A | 2025-12-04 A | PSUAY-CAG-INF-3770 | 100% |  |  |  | PROFIS [5675.11 h]; INFRA-STRUCTURE ELECTRICAL [63 m] | PSUAY-CAG-INF-3890 | ALFANDEGAMENTO | CONSAG | YARD 3 A | CNT |  |
| PSUAY-CAG-INF-3790 |  | Run the HV infrastructure from box HV-G01-01 to HV-F01-02 from Yard 3. | 1d | 2025-12-05 A | 2025-12-05 A | PSUAY-CAG-INF-3780 | 100% |  |  |  | PROFIS [8094.68 h]; INFRA-STRUCTURE ELECTRICAL [89.86 m] | PSUAY-CAG-INF-3900 | ALFANDEGAMENTO | CONSAG | YARD 3 A | CNT |  |

Notes:
- PSUAY-CAG-CIV-3760: Translate: Executar concreto magro do tanque SAO do Yard 3
- PSUAY-CAG-MEC-3770: Translate: Executar posicionamento do tanque SAO do Yard 3
- PSUAY-CAG-INF-3670: Translate: Executar enchimento/aterro do tanque SAO do Yard 3
- PSUAY-CAG-AUT-3790: Translate: Executar automação do tanque SAO do Yard 3
- PSUAY-CAG-INF-3700: Planners Notes: Extensão Total = 328m / Executado = 140m / Avanço = 42,68% / Translate: Executar infra FW (incêndio) da caixa FW-D01-01 para FW-H01-01 do Yard 3
- PSUAY-CAG-INF-3690: Translate: Executar infra FW (incêndio) da caixa FW-H01-01 para FW-H01-02 do Yard 3
- PSUAY-CAG-INF-3710: Translate: Executar infra LV da caixa LV-H01-02 para LV-H01-01 do Yard 3
- PSUAY-CAG-INF-3720: Translate: Executar infra LV da caixa LV-H01-01 para LV-G01-02 do Yard 3
- PSUAY-CAG-INF-3730: Translate: Executar infra LV da caixaLV-G01-02 para LV-G01-01 do Yard 3
- PSUAY-CAG-INF-3750: Translate: Executar infra LV da caixa LV-F01-03 para LV-F01-02 do Yard 3
- PSUAY-CAG-INF-3760: Translate: Executar infra LV da caixa LV-F01-02 para LV-F01-01 do Yard 3
- PSUAY-CAG-INF-3740: Translate: Executar infra LV da caixa LV-F01-03 para LV-G01-01 do Yard 3
- PSUAY-CAG-INF-3770: Translate: Executar infra HV da caixa HV-H01-01 para HV-H01-02 do Yard 3
- PSUAY-CAG-INF-3800: Translate: Executar infra HV da caixaHV-F01-02 para HV-F01-01 do Yard 3
- PSUAY-CAG-INF-3780: Translate: Executar infra HV da caixa HV-H01-02 para HV-G01-01 do Yard 3
- PSUAY-CAG-INF-3790: Translate: Executar infra HV da caixa HV-G01-01 para HV-F01-02 do Yard 3

| ID | WBS | Activity | Duration | Start | Finish | Predecessors | Complete | Planned start | Planned finish | Total float | Free float | Calendar | Resources | ACTIVITY ID COD. | FASES DE ENTREGA | RESPONSÁVEL | ÁREAS | PHASES - YARD | Atualização |
| --- | --- | --- | --- | --- | --- | --- | --- | --- | --- | --- | --- | --- | --- | --- | --- | --- | --- | --- | --- |
|  | 3 | **INFRA-SW - STORMWATER** |  | 2025-12-02 | 2026-01-05 |  |  |  |  |  |  |  |  |  |  |  |  |  |  |
| PSUAY-CAG-INF-3960 |  | Execute infrastructure SW from box SW-F01-02 to SW-F03-01 of Yard 3 | 1d | 2025-12-02 A | 2026-01-05 A | PSUAY-CAG-INF-3840 | 100% | 2025-12-12 | 2025-12-12 |  |  |  | PROFIS [9008.1 h] | PSUAY-CAG-INF-3960 | ALFANDEGAMENTO | CONSAG | YARD 3 A | CNT |  |
| PSUAY-CAG-INF-3810 |  | Execute infrastructure SW from box SW-H01-02 to SW-H01-01 of Yard 3 | 1d | 2025-12-03 A | 2025-12-03 A | PSUAY-CAG-INF-3770 SS, PSUAY-CAG-CIV-3490 | 100% | 2025-12-08 | 2025-12-08 |  |  |  | PROFIS [609.85 h] | PSUAY-CAG-INF-3920 | ALFANDEGAMENTO | CONSAG | YARD 3 A | CNT |  |
| PSUAY-CAG-INF-3830 |  | Execute infrastructure SW from box SW-H01-03 to SW-H01-02 of Yard 3 | 1d | 2025-12-04 A | 2025-12-06 A | PSUAY-CAG-INF-3820 | 100% | 2025-12-10 | 2025-12-10 |  |  |  | PROFIS [1351.22 h] | PSUAY-CAG-INF-3940 | ALFANDEGAMENTO | CONSAG | YARD 3 A | CNT |  |
| PSUAY-CAG-INF-3970 |  | Execute infrastructure SW from box SAO 03 to SW-F01-02 of Yard 3 | 1d | 2025-12-04 A | 2025-12-04 A | PSUAY-CAG-INF-3960 | 100% | 2025-12-15 | 2025-12-15 |  |  |  | PROFIS [450.41 h] | PSUAY-CAG-INF-3970 | ALFANDEGAMENTO | CONSAG | YARD 3 A | CNT |  |
| PSUAY-CAG-INF-3820 |  | Execute infrastructure SW from box SAO 02 to SW-H01-02 of Yard 3 | 1d | 2025-12-05 A | 2025-12-05 A | PSUAY-CAG-INF-3810 | 100% | 2025-12-09 | 2025-12-09 |  |  |  | PROFIS [450.41 h] | PSUAY-CAG-INF-3930 | ALFANDEGAMENTO | CONSAG | YARD 3 A | CNT |  |
| PSUAY-CAG-INF-3840 |  | Execute infrastructure SW from box SAO 01 to SW-H01-03 of Yard 3 | 1d | 2025-12-06 A | 2025-12-06 A | PSUAY-CAG-INF-3830 | 100% | 2025-12-11 | 2025-12-11 |  |  |  | PROFIS [450.41 h] | PSUAY-CAG-INF-3950 | ALFANDEGAMENTO | CONSAG | YARD 3 A | CNT |  |
| PSUAY-CAG-INF-3980 |  | Execute infrastructure SW from box SAO 04 to SW-F01-02 of Yard 3 | 1d | 2025-12-06 A | 2025-12-06 A | PSUAY-CAG-INF-3970 | 100% | 2025-12-16 | 2025-12-16 |  |  |  | PROFIS [1351.22 h] | PSUAY-CAG-INF-3980 | ALFANDEGAMENTO | CONSAG | YARD 3 A | CNT |  |
|  | 6 | **DC INFRARIT - DRAINAGE CONTROL** |  | 2025-12-01 | 2026-01-10 |  |  |  |  |  |  |  |  |  |  |  |  |  |  |
| PSUAY-CAG-INF-3990 |  | Run DC infrastructure from box DC-F01-02 to SAO F02 of Yard 3 | 1d | 2025-12-01 A | 2025-12-01 A | PSUAY-CAG-CIV-3740, PSUAY-CAG-AUT-3790 | 100% | 2025-12-17 | 2025-12-17 |  |  |  | PROFIS [1351.22 h] | PSUAY-CAG-INF-3990 | ALFANDEGAMENTO | CONSAG | YARD 3 A | CNT |  |
| PSUAY-CAG-INF-4040 |  | Run the DC infrastructure from box DC-H01-01 to SAO H01 of Yard 3. | 1d | 2025-12-01 A | 2025-12-06 A | PSUAY-CAG-INF-4030 | 100% | 2025-12-29 | 2025-12-30 |  |  |  | PROFIS [450.41 h] | PSUAY-CAG-INF-4040 | ALFANDEGAMENTO | CONSAG | YARD 3 A | CNT |  |
| PSUAY-CAG-INF-4030 |  | Run DC infrastructure from box DC-H01-01 to Yard 3 Dock | 1d | 2025-12-01 A | 2025-12-06 A | PSUAY-CAG-INF-4020 FS+0.5d | 100% | 2025-12-24 | 2025-12-29 |  |  |  | PROFIS [1351.22 h] | PSUAY-CAG-INF-4030 | ALFANDEGAMENTO | CONSAG | YARD 3 A | CNT |  |
| PSUAY-CAG-INF-4000 |  | Run DC infrastructure from box DC-F01-02 to Yard 3 Dock | 1d | 2025-12-02 A | 2026-01-10 A | PSUAY-CAG-INF-3990 FS+0.5d | 100% | 2025-12-18 | 2025-12-19 |  |  |  | PROFIS [1801.62 h] | PSUAY-CAG-INF-4000 | ALFANDEGAMENTO | CONSAG | YARD 3 A | CNT |  |
| PSUAY-CAG-INF-4010 |  | Run DC infrastructure from box DC-F01-01 to SAO F01 of Yard 3 | 1d | 2025-12-03 A | 2025-12-03 A | PSUAY-CAG-INF-4000 FS+0.5d | 100% | 2025-12-22 | 2025-12-22 |  |  |  | PROFIS [270.24 h] | PSUAY-CAG-INF-4010 | ALFANDEGAMENTO | CONSAG | YARD 3 A | CNT |  |
| PSUAY-CAG-INF-4050 |  | Run DC infrastructure from box DC-H01-01 to Yard 3 Dock | 1d | 2025-12-03 A | 2025-12-06 A | PSUAY-CAG-INF-4040 FS+0.5d | 100% | 2025-12-31 | 2025-12-31 |  |  |  | PROFIS [1351.22 h] | PSUAY-CAG-INF-4050 | ALFANDEGAMENTO | CONSAG | YARD 3 A | CNT |  |
| PSUAY-CAG-INF-4020 |  | Run DC infrastructure from box DC-F01-01 to Yard 3 Dock | 1d | 2025-12-04 A | 2026-01-10 A | PSUAY-CAG-INF-4010 | 100% | 2025-12-23 | 2025-12-23 |  |  |  | PROFIS [1621.46 h] | PSUAY-CAG-INF-4020 | ALFANDEGAMENTO | CONSAG | YARD 3 A | CNT |  |
| PSUAY-CAG-INF-4060 |  | Run the DC infrastructure from box DC-H01-01 to SAO H02 from Yard 3. | 1d | 2026-01-01 A | 2026-01-03 A | PSUAY-CAG-INF-4050 FS+0.5d | 100% | 2026-01-05 | 2026-01-06 |  |  |  | PROFIS [2252.03 h] | PSUAY-CAG-INF-4060 | ALFANDEGAMENTO | CONSAG | YARD 3 A | CNT |  |
|  | 3 | **ELECTRICAL (LUZVILLE)** |  | 2026-01-22 | 2026-02-25 |  |  |  |  |  |  |  |  |  |  |  |  |  |  |
|  | 2 | **STS X PORTEINER 01 CABLE LAUNCH** |  | 2026-01-23 | 2026-02-04 |  |  |  |  |  |  |  |  |  |  |  |  |  |  |
|  | 4 | **HV - HIGH VOLTAGE** |  | 2026-01-23 | 2026-02-03 |  |  |  |  |  |  |  |  |  |  |  |  |  |  |
| PSUAY-LZE-ELE-4070 |  | Perform cable laying MT STS x Porteiner 01 from Yard 3 | 3d | 2026-01-23 A | 2026-01-24 A | PSUAY-CAG-INF-3990 | 100% | 2026-01-23 | 2026-01-27 |  |  | PSUAY - ELETROMEC - 1T - SEM HE | PROFIS [4774.3 h]; MATERIAL - CABO HV [636 m] | PSUAY-LZE-ELE-4070 | ALFANDEGAMENTO | LUZVILLE | YARD 3 A | CNT | OK |
| PSUAY-LZE-ELE-4080 |  | Perform preparation and cable termination for MT STS x Porteiner 01 cables in Yard 3. | 2d | 2026-01-30 | 2026-02-02 | PSUAY-LZE-ELE-4070 |  |  |  | 54d | 0d | PSUAY - ELETROMEC - 1T - SEM HE | PROFIS [3963.57 h] | PSUAY-LZE-ELE-4080 | ALFANDEGAMENTO | LUZVILLE | YARD 3 A | CNT |  |
| PSUAY-LZE-ELE-4090 |  | Perform VLF on the MT STS cables x Porteiner 01 of Yard 3 | 1d | 2026-02-03 | 2026-02-03 | PSUAY-LZE-ELE-4080 |  |  |  | 54d | 37d | PSUAY - ELETROMEC - 1T - SEM HE | PROFIS [1981.78 h] | PSUAY-LZE-ELE-4090 | ALFANDEGAMENTO | LUZVILLE | YARD 3 A | CNT |  |
|  | 3 | **BT - LOW VOLTAGE** |  | 2026-01-30 | 2026-02-04 |  |  |  |  |  |  |  |  |  |  |  |  |  |  |
| PSUAY-LZE-ELE-4100 |  | Perform cable laying BT STS x Porteiner 01 from Yard 3 | 2d | 2026-01-30 | 2026-02-02 | PSUAY-LZE-ELE-4130, PSUAY-CAG-INF-4030 |  |  |  | 31d | 0d | PSUAY - ELETROMEC - 1T - SEM HE | PROFIS [2263.29 h]; CABLE LOW VOLTAGE [603 m] | PSUAY-LZE-ELE-4100 | ALFANDEGAMENTO | LUZVILLE | YARD 3 A | CNT |  |
| PSUAY-LZE-ELE-4110 |  | Perform preparation and termination of MT STS x Porteiner 01 cables in Yard | 1d | 2026-02-03 | 2026-02-03 | PSUAY-LZE-ELE-4100 |  |  |  | 53d | 0d | PSUAY - ELETROMEC - 1T - SEM HE | PROFIS [1981.78 h] | PSUAY-LZE-ELE-4110 | ALFANDEGAMENTO | LUZVILLE | YARD 3 A | CNT |  |
| PSUAY-LZE-ELE-4120 |  | Perform testing and connections of the MT STS cables x Porteiner 01 of Yard 3 | 1d | 2026-02-04 | 2026-02-04 | PSUAY-LZE-ELE-4110 |  |  |  | 53d | 36d | PSUAY - ELETROMEC - 1T - SEM HE | PROFIS [1981.78 h] | PSUAY-LZE-ELE-4120 | ALFANDEGAMENTO | LUZVILLE | YARD 3 A | CNT |  |

Notes:
- PSUAY-CAG-INF-3960: Translate: Executar infra SW da caixa SW-F01-02 para SW-F03-01 do Yard 3
- PSUAY-CAG-INF-3810: Translate: Executar infra SW da caixa SW-H01-02 para SW-H01-01 do Yard 3
- PSUAY-CAG-INF-3830: Translate: Executar infra SW da caixa SW-H01-03 para SW-H01-02 do Yard 3
- PSUAY-CAG-INF-3970: Translate: Executar infra SW da caixa SAO 03 para SW-F01-02 do Yard 3
- PSUAY-CAG-INF-3820: Translate: Executar infra SW da caixa SAO 02 para SW-H01-02 do Yard 3
- PSUAY-CAG-INF-3840: Translate: Executar infra SW da caixa SAO 01 para SW-H01-03 do Yard 3
- PSUAY-CAG-INF-3980: Translate: Executar infra SW da caixa SAO 04 para SW-F01-02 do Yard 3 ********
- PSUAY-CAG-INF-3990: Translate: Executar infra DC da caixa DC-F01-02 para SAO F02 do Yard 3
- PSUAY-CAG-INF-4040: Translate: Executar infra DC da caixa DC-H01-01 para SAO H01 do Yard 3
- PSUAY-CAG-INF-4030: Translate: Executar infra DC da caixa DC-H01-01 para CAIS do Yard 3
- PSUAY-CAG-INF-4000: Translate: Executar infra DC da caixa DC-F01-02 para CAIS do Yard 3
- PSUAY-CAG-INF-4010: Translate: Executar infra DC da caixa DC-F01-01 para SAO F01 do Yard 3
- PSUAY-CAG-INF-4050: Translate: Executar infra DC da caixa DC-H01-01 para CAIS do Yard 3
- PSUAY-CAG-INF-4020: Translate: Executar infra DC da caixa DC-F01-01 para CAIS do Yard 3
- PSUAY-CAG-INF-4060: Translate: Executar infra DC da caixa DC-H01-01 para SAO H02 do Yard 3
- PSUAY-LZE-ELE-4070: Translate: Executar lançamento de cabos MT STS x Porteiner 01 do Yard 3
- PSUAY-LZE-ELE-4080: Translate: Executar preparação e mufla dos cabos MT STS x Porteiner 01 do Yard 3
- PSUAY-LZE-ELE-4090: Translate: Executar VLF nos cabos MT STS x Porteiner 01 do Yard 3
- PSUAY-LZE-ELE-4100: Translate: Executar lançamento de cabos BT STS x Porteiner 01 do Yard 3
- PSUAY-LZE-ELE-4110: Translate: Executar preparação e terminação dos cabos MT STS x Porteiner 01 do Yard
- PSUAY-LZE-ELE-4120: Translate: Executar ensaio e conexões dos cabos MT STS x Porteiner 01 do Yard 3

| ID | WBS | Activity | Duration | Start | Finish | Predecessors | Complete | Remaining | Planned start | Planned finish | Total float | Free float | Calendar | Resources | Atualização | ACTIVITY ID COD. | FASES DE ENTREGA | RESPONSÁVEL | ÁREAS | PHASES - YARD | SERVIÇOS |
| --- | --- | --- | --- | --- | --- | --- | --- | --- | --- | --- | --- | --- | --- | --- | --- | --- | --- | --- | --- | --- | --- |
|  | 5 | **STS X PORTEINER 02 CABLE LAUNCH** |  | 2026-01-22 | 2026-02-06 |  |  |  |  |  |  |  |  |  |  |  |  |  |  |  |  |
|  | 1 | **HV - HIGH VOLTAGE** |  | 2026-01-22 | 2026-02-03 |  |  |  |  |  |  |  |  |  |  |  |  |  |  |  |  |
| PSUAY-LZE-ELE-4130 |  | Perform cable laying MT STS x Porteiner 02 from Yard 3 | 3d | 2026-01-22 A | 2026-01-24 A | PSUAY-LZE-ELE-4070, PSUAY-CAG-INF-4000 | 100% |  | 2026-01-28 | 2026-01-30 |  |  | PSUAY - ELETROMEC - 1T - SEM HE | PROFIS [5112.1 h]; MATERIAL - CABO HV [681 m] | OK | PSUAY-LZE-ELE-4130 | ALFANDEGAMENTO | LUZVILLE | YARD 3 A | CNT |  |
| PSUAY-LZE-ELE-4140 |  | Perform preparation and cable termination for MT STS x Porteiner 02 cables in Yard 3. | 2d | 2026-01-30 | 2026-02-02 | PSUAY-LZE-ELE-4130 |  |  |  |  | 14d | 0d | PSUAY - ELETROMEC - 1T - SEM HE | PROFIS [3963.57 h] |  | PSUAY-LZE-ELE-4140 | ALFANDEGAMENTO | LUZVILLE | YARD 3 A | CNT |  |
| PSUAY-LZE-ELE-4150 |  | Perform VLF on the MT STS cables x Porteiner 02 of Yard 3 | 1d | 2026-02-03 | 2026-02-03 | PSUAY-LZE-ELE-4140 |  |  |  |  | 14d | 0d | PSUAY - ELETROMEC - 1T - SEM HE | PROFIS [1981.78 h] |  | PSUAY-LZE-ELE-4150 | ALFANDEGAMENTO | LUZVILLE | YARD 3 A | CNT |  |
|  | 2 | **BT - LOW VOLTAGE** |  | 2026-02-03 | 2026-02-06 |  |  |  |  |  |  |  |  |  |  |  |  |  |  |  |  |
| PSUAY-LZE-ELE-4160 |  | Perform cable laying BT STS x Porteiner 02 from Yard 3 | 2d | 2026-02-03 | 2026-02-04 | PSUAY-LZE-ELE-4100, PSUAY-CAG-INF-4050 |  |  |  |  | 31d | 0d | PSUAY - ELETROMEC - 1T - SEM HE | PROFIS [2544.79 h]; CABLE LOW VOLTAGE [678 m] |  | PSUAY-LZE-ELE-4160 | ALFANDEGAMENTO | LUZVILLE | YARD 3 A | CNT |  |
| PSUAY-LZE-ELE-4170 |  | Perform preparation and termination of MT STS x Porteiner 02 cables from Yard 3 | 1d | 2026-02-05 | 2026-02-05 | PSUAY-LZE-ELE-4160 |  |  |  |  | 31d | 0d | PSUAY - ELETROMEC - 1T - SEM HE | PROFIS [1981.78 h] |  | PSUAY-LZE-ELE-4170 | ALFANDEGAMENTO | LUZVILLE | YARD 3 A | CNT |  |
| PSUAY-LZE-ELE-4180 |  | Perform testing and connections of the MT STS cables x Porteiner 02 of Yard 3 | 1d | 2026-02-06 | 2026-02-06 | PSUAY-LZE-ELE-4170 |  |  |  |  | 31d | 0d | PSUAY - ELETROMEC - 1T - SEM HE | PROFIS [1981.78 h] |  | PSUAY-LZE-ELE-4180 | ALFANDEGAMENTO | LUZVILLE | YARD 3 A | CNT |  |
|  | 1 | **OPTIC FIBER** |  | 2026-02-10 | 2026-02-25 |  |  |  |  |  |  |  |  |  |  |  |  |  |  |  |  |
| PSUAY-LZE-ELE-4190 |  | Execute optic fiber pulling in Yard 3A | 5d | 2026-02-10 | 2026-02-16 | PSUAY-LZE-ELE-3500 |  |  |  |  | 38d | 0d | PSUAY - ELETROMEC - 1T - SEM HE | PROFIS [9555.02 h]; CABLE FIBER OPTICS [1782 m] |  | PSUAY-LZE-ELE-4190 | ALFANDEGAMENTO | LUZVILLE | YARD 3 A | CNT |  |
| PSUAY-LZE-ELE-4200 |  | Execute optic cable fusioning in Yard 3A | 4d | 2026-02-17 | 2026-02-20 | PSUAY-LZE-ELE-4190 |  |  |  |  | 38d | 0d | PSUAY - ELETROMEC - 1T - SEM HE | PROFIS [7927.13 h] |  | PSUAY-LZE-ELE-4200 | ALFANDEGAMENTO | LUZVILLE | YARD 3 A | CNT |  |
| PSUAY-LZE-ELE-4210 |  | Execute optic cable connection in Yard 3A | 3d | 2026-02-23 | 2026-02-25 | PSUAY-LZE-ELE-4200 |  |  |  |  | 38d | 21d | PSUAY - ELETROMEC - 1T - SEM HE | PROFIS [5945.35 h] |  | PSUAY-LZE-ELE-4210 | ALFANDEGAMENTO | LUZVILLE | YARD 3 A | CNT |  |
|  | 5 | **YARD 4 GATE** |  | 2025-11-10 | 2026-03-26 |  |  |  |  |  |  |  |  |  |  |  |  |  |  |  |  |
|  | 5 | **ENGINEERING** |  | 2025-11-25 | 2026-01-22 |  |  |  |  |  |  |  |  |  |  |  |  |  |  |  |  |
| PSUAY-MIL-ENG-4220 |  | Tropicalization of the Gate Complex projects (electrical and civil).. | 14d | 2025-11-25 A | 2025-12-06 A | PSUAY-MIL-GER-1220 | 100% |  | 2025-12-01 | 2025-12-18 |  |  |  | PROFIS [23781.4 h] |  | PSUAY-MIL-ENG-4220 | ALFANDEGAMENTO | CONSAG | YARD 4 GATE | ENG |  |
| PSUAY-MIL-ENG-4230 |  | Analysis of tropicalization projects complete of the Gate Complex (electrical and civil).. | 14d | 2025-12-08 A | 2026-01-22 A | PSUAY-MIL-GER-1220, PSUAY-MIL-ENG-4220 | 100% |  | 2025-12-08 | 2025-12-29 |  |  |  |  |  | PSUAY-MIL-ENG-4230 | ALFANDEGAMENTO | APM | YARD 4 GATE | ENG |  |
|  | 1 | **PAVEMENT** |  | 2025-12-08 | 2026-02-28 |  |  |  |  |  |  |  |  |  |  |  |  |  |  |  |  |
|  | 1 | **PAVEMENT TYPE 3B(ASPHALT)** |  | 2025-12-08 | 2026-02-24 |  |  |  |  |  |  |  |  |  |  |  |  |  |  |  |  |
|  | 1 | **SUB-GRADE** |  | 2025-12-08 | 2026-02-14 |  |  |  |  |  |  |  |  |  |  |  |  |  |  |  |  |
| PSUAY-CAG-INF-4240 |  | Construct subgrade for pavement type 3B of Yard 04 - Gate | 9.76d | 2025-12-08 A | 2026-02-14 | PSUAY-CAG-INF-4270 SS | 95% | 4d | 2026-02-10 | 2026-02-16 | 85.83d | 0d | PSUAY - CIVIL - 2T - HE SAB | PROFIS [170776 h] |  | PSUAY-CAG-INF-4240 | ALFANDEGAMENTO | CONSAG | YARD 4 GATE | CNT |  |
|  | 4 | **CONCRETE** |  | 2025-12-08 | 2026-02-23 |  |  |  |  |  |  |  |  |  |  |  |  |  |  |  |  |
| PSUAY-CAG-INF-4250 |  | Execute concrete work for type 3B pavement at Yard 04 - Gate | 15.61d | 2025-12-08 A | 2026-02-23 | PSUAY-CAG-INF-4240 SS | 50% | 15.61d | 2026-02-16 | 2026-02-26 | 85.83d | 0.95d | PSUAY - CIVIL - 2T - HE SAB | PROFIS [27382 h]; CONCRETE-PAVEMENT [4170.76 m³] |  | PSUAY-CAG-INF-4250 | ALFANDEGAMENTO | CONSAG | YARD 4 GATE | CNT | PAV-CONC |
|  | 3 | **ASPHALT (LIDERMAC)** |  | 2026-02-20 | 2026-02-24 |  |  |  |  |  |  |  |  |  |  |  |  |  |  |  |  |
| PSUAY-LDM-INF-4260 |  | Execute asphalt paving type 3B for Yard 04 - Gate | 2d | 2026-02-20 | 2026-02-24 | PSUAY-CAG-INF-4250 FF+1d |  |  |  |  | 40d | 23d |  | PROFIS [21894.3 h]; ASPHALT [7583.2 m³] |  | PSUAY-LDM-INF-4260 | ALFANDEGAMENTO | LIDERMAC | YARD 4 GATE | CNT |  |

Notes:
- PSUAY-LZE-ELE-4130: Translate: Executar lançamento de cabos MT STS x Porteiner 02 do Yard 3
- PSUAY-LZE-ELE-4140: Translate: Executar preparação e mufla dos cabos MT STS x Porteiner 02 do Yard 3
- PSUAY-LZE-ELE-4150: Translate: Executar VLF nos cabos MT STS x Porteiner 02 do Yard 3
- PSUAY-LZE-ELE-4160: Translate: Executar lançamento de cabos BT STS x Porteiner 02 do Yard 3
- PSUAY-LZE-ELE-4170: Translate: Executar preparação e terminação dos cabos MT STS x Porteiner 02 do Yard 3
- PSUAY-LZE-ELE-4180: Translate: Executar ensaio e conexões dos cabos MT STS x Porteiner 02 do Yard 3
- PSUAY-LZE-ELE-4190: Translate: Executar lançamento de fibre optica no Pátio 3A
- PSUAY-LZE-ELE-4200: Translate: Executar fusão de cabo óptico no Pátio 3A
- PSUAY-LZE-ELE-4210: Translate: Executar conexão de cabo óptico no Pátio 3A
- PSUAY-MIL-ENG-4220: Translate: Receber detalhamento tropicalização dos projetos Gate Complex
- PSUAY-MIL-ENG-4230: Translate: Receber detalhamento tropicalização dos projetos Gate Complex
- PSUAY-CAG-INF-4240: Translate: Executar subleito do pavimento tipo 3B do Yard 04 - Gate
- PSUAY-CAG-INF-4250: Translate: Executar concreto do pavimento tipo 3B do Yard 04 - Gate
- PSUAY-LDM-INF-4260: Translate: Executar asfalto do pavimento tipo 3B do Yard 04 - Gate

| ID | WBS | Activity | Duration | Start | Finish | Predecessors | Complete | Remaining | Planned start | Planned finish | Total float | Free float | Calendar | Resources | Translate | ACTIVITY ID COD. | FASES DE ENTREGA | RESPONSÁVEL | ÁREAS | PHASES - YARD | SERVIÇOS | Atualização |
| --- | --- | --- | --- | --- | --- | --- | --- | --- | --- | --- | --- | --- | --- | --- | --- | --- | --- | --- | --- | --- | --- | --- |
|  | 5 | **PAVEMENT TYPE 05B (REINFORCED CONCRETE)** |  | 2026-01-05 | 2026-02-28 |  |  |  |  |  |  |  |  |  |  |  |  |  |  |  |  |  |
|  | 2 | **SUB-GRADE** |  | 2026-01-05 | 2026-02-23 |  |  |  |  |  |  |  |  |  |  |  |  |  |  |  |  |  |
| PSUAY-CAG-INF-4270 |  | Construct subgrade for pavement type 05B of Yard 04 - Gate | 15.61d | 2026-01-05 A | 2026-02-23 | PSUAY-CAG-INF-4960, PSUAY-CAG-INF-4940, PSUAY-CAG-INF-4950, PSUAY-CAG-CIV-4880, PSUAY-CAG-CIV-5080 SS, PSUAY-CAG-CIV-5090 SS, PSUAY-CAG-CIV-5100 SS, PSUAY-CAG-CIV-5130 SS, PSUAY-CAG-CIV-5160 SS, PSUAY-CAG-CIV-5190 | 30% | 15.61d | 2026-02-24 | 2026-03-05 | 76.95d | 0d | PSUAY - CIVIL - 2T - HE SAB | PROFIS [281551 h] | Executar subleito do pavimento tipo 05B do Yard 04 - Gate | PSUAY-CAG-INF-4270 | ALFANDEGAMENTO | CONSAG | YARD 4 GATE | CNT |  |  |
|  | 1 | **CONCRETE** |  | 2026-02-23 | 2026-02-28 |  |  |  |  |  |  |  |  |  |  |  |  |  |  |  |  |  |
| PSUAY-CAG-INF-4280 |  | Execute concrete pavement type 05B of Yard 04 - Gate | 10d | 2026-02-23 | 2026-02-28 | PSUAY-CAG-INF-4270, PSUAY-CAG-CIV-4870 |  |  |  |  | 76.95d | 0d | PSUAY - CIVIL - 2T - HE SAB | PROFIS [28727.7 h]; CONCRETE-PAVEMENT [4375.73 m³] | Executar concreto do pavimento tipo 05B do Yard 04 - Gate | PSUAY-CAG-INF-4280 | ALFANDEGAMENTO | CONSAG | YARD 4 GATE | CNT | PAV-CONC |  |
|  | 2 | **KERB** |  | 2026-02-03 | 2026-02-23 |  |  |  |  |  |  |  |  |  |  |  |  |  |  |  |  |  |
| PSUAY-CAG-INF-4290 |  | Execute medium duty concrete kerb and channel | 14d | 2026-02-03 | 2026-02-23 | PSUAY-CAG-INF-4270 FF |  |  |  |  | 41d |  |  | PROFIS [25335.3 h] | Executar concretagem do meio-fio e canaleta | PSUAY-CAG-INF-4290 | ALFANDEGAMENTO | CONSAG | YARD 4 GATE | CNT |  |  |
|  | 8 | **BOXES** |  | 2025-11-10 | 2026-02-06 |  |  |  |  |  |  |  |  |  |  |  |  |  |  |  |  |  |
|  | 1 | **FW BOXES - FIREWATER** |  | 2025-11-13 | 2026-01-29 |  |  |  |  |  |  |  |  |  |  |  |  |  |  |  |  |  |
| PSUAY-CAG-CIV-4170 |  | Execute Yard 4 Gate FW-L07-03 box | 4d | 2025-11-13 A | 2025-11-18 A | PSUAY-CAG-CIV-4160 | 100% |  |  |  |  |  |  | PROFIS [6610.94 h] | Executar caixa FW-L07-03 do Yard 4 Gate | PSUAY-CAG-CIV-4310 | ALFANDEGAMENTO | CONSAG | YARD 4 GATE | CNT |  |  |
| PSUAY-CAG-CIV-4180 |  | Execute Yard 4 Gate FW-L08-01 box | 3d | 2025-11-19 A | 2025-11-21 A | PSUAY-CAG-CIV-4170 | 100% |  |  |  |  |  |  | PROFIS [4590.53 h] | Executar caixa FW-L08-01 do Yard 4 Gate | PSUAY-CAG-CIV-4320 | ALFANDEGAMENTO | CONSAG | YARD 4 GATE | CNT |  | ok |
| PSUAY-CAG-CIV-4160 |  | Execute Yard 4 Gate FW-K07-01 box | 3d | 2025-12-01 A | 2026-01-21 A | PSUAY-MIL-GER-1450 FS+21d | 100% |  | 2025-12-01 | 2025-12-03 |  |  |  | PROFIS [4489.64 h] | Executar caixa FW-K07-01 do Yard 4 Gate | PSUAY-CAG-CIV-4300 | ALFANDEGAMENTO | CONSAG | YARD 4 GATE | CNT |  |  |
| PSUAY-CAG-CIV-4330 |  | Execute the cover of the FW boxes in Yard 4. | 4d | 2026-01-26 | 2026-01-29 | PSUAY-CAG-CIV-4180, PSUAY-CAG-INF-4560 |  |  |  |  | 55d | 0d |  | PROFIS [7506.75 h] | Executar tampa das caixas FW do Yard 4 | PSUAY-CAG-CIV-4330 | ALFANDEGAMENTO | CONSAG | YARD 4 GATE | CNT |  |  |
|  | 5 | **SW BOXES - DRAINAGE** |  | 2025-11-10 | 2026-01-28 |  |  |  |  |  |  |  |  |  |  |  |  |  |  |  |  |  |
| PSUAY-CAG-CIV-4200 |  | Execute box SW-J07-01 from Yard 4 Gate | 2d | 2025-11-10 A | 2025-11-11 A | PSUAY-CAG-CIV-4180 | 100% |  |  |  |  |  |  | PROFIS [3113.27 h] | Executar caixa SW-J07-01 do Yard 4 Gate | PSUAY-CAG-CIV-4340 | ALFANDEGAMENTO | CONSAG | YARD 4 GATE | CNT |  |  |
| PSUAY-CAG-CIV-4230 |  | Execute Yard 4 Gate SW-J09-02 box | 4d | 2025-11-10 A | 2025-11-13 A | PSUAY-CAG-CIV-4210, PSUAY-CAG-CIV-4220 | 100% |  |  |  |  |  |  | PROFIS [7973.54 h] | Executar caixa SW-J09-02 do Yard 4 Gate | PSUAY-CAG-CIV-4370 | ALFANDEGAMENTO | CONSAG | YARD 4 GATE | CNT |  |  |
| PSUAY-CAG-CIV-4250 |  | Execute Yard 4 Gate SW-L09-02 box | 8d | 2025-11-10 A | 2025-11-19 A | PSUAY-CAG-CIV-4240 | 100% |  | 2025-12-04 | 2025-12-15 |  |  |  | PROFIS [14316.5 h] | Executar caixa SW-L09-02 do Yard 4 Gate | PSUAY-CAG-CIV-4390 | ALFANDEGAMENTO | CONSAG | YARD 4 GATE | CNT |  |  |
| PSUAY-CAG-CIV-4220 |  | Execute Yard 4 Gate SW-J09-01 box | 4d | 2025-11-12 A | 2025-11-17 A | PSUAY-CAG-CIV-4200 | 100% |  |  |  |  |  |  | PROFIS [7459.86 h] | Executar caixa SW-J09-01 do Yard 4 Gate | PSUAY-CAG-CIV-4360 | ALFANDEGAMENTO | CONSAG | YARD 4 GATE | CNT |  |  |
| PSUAY-CAG-CIV-4240 |  | Execute box SW-K09-01 from Yard 4 Gate | 5d | 2025-11-14 A | 2025-11-20 A | PSUAY-CAG-CIV-4170, PSUAY-CAG-CIV-4230 | 100% |  |  |  |  |  |  | PROFIS [8539.11 h] | Executar caixa SW-K09-01 do Yard 4 Gate | PSUAY-CAG-CIV-4380 | ALFANDEGAMENTO | CONSAG | YARD 4 GATE | CNT |  |  |
| PSUAY-CAG-CIV-4210 |  | Execute box SW-L07-01 from Yard 4 Gate | 2d | 2025-11-18 A | 2025-11-19 A | PSUAY-CAG-CIV-4220, PSUAY-CAG-CIV-4200 | 100% |  |  |  |  |  |  | PROFIS [3178.06 h] | Executar caixa SW-L07-01 do Yard 4 Gate | PSUAY-CAG-CIV-4350 | ALFANDEGAMENTO | CONSAG | YARD 4 GATE | CNT |  |  |
| PSUAY-CAG-CIV-4260 |  | Execute Yard 4 Gate SW-M09-01 box | 8d | 2025-11-20 A | 2025-11-29 A | PSUAY-CAG-CIV-4250 | 100% |  | 2025-12-16 | 2025-12-29 |  |  |  | PROFIS [14012.5 h] | Executar caixa SW-M09-01 do Yard 4 Gate | PSUAY-CAG-CIV-4400 | ALFANDEGAMENTO | CONSAG | YARD 4 GATE | CNT |  |  |
| PSUAY-CAG-CIV-4270 |  | Perform cover installation on Yard 4 Gate SW boxes | 3d | 2026-01-26 | 2026-01-28 | PSUAY-CAG-CIV-4260, PSUAY-CAG-CIV-4330 SS, PSUAY-CAG-INF-4940 |  |  |  |  | 55d | 0d |  | PROFIS [5004.5 h] | Executar tampa das caixas SW do Yard 4 Gate | PSUAY-CAG-CIV-4410 | ALFANDEGAMENTO | CONSAG | YARD 4 GATE | CNT |  |  |
|  | 4 | **LV BOXES - LOW VOLTAGE** |  | 2025-11-10 | 2026-02-02 |  |  |  |  |  |  |  |  |  |  |  |  |  |  |  |  |  |
| PSUAY-CAG-CIV-4280 |  | Execute Yard 4 Gate LV-J07-01 box | 8d | 2025-11-10 A | 2025-11-19 A | PSUAY-CAG-CIV-4160 | 100% |  |  |  |  |  |  | PROFIS [13893.5 h] | Executar caixa LV-J07-01 do Yard 4 Gate | PSUAY-CAG-CIV-4420 | ALFANDEGAMENTO | CONSAG | YARD 4 GATE | CNT |  |  |
| PSUAY-CAG-CIV-4290 |  | Execute Yard 4 Gate LV-K06-01 box | 4d | 2025-11-10 A | 2025-11-13 A | PSUAY-CAG-CIV-4280 | 100% |  |  |  |  |  |  | PROFIS [6028.58 h] | Executar caixa LV-K06-01 do Yard 4 Gate | PSUAY-CAG-CIV-4430 | ALFANDEGAMENTO | CONSAG | YARD 4 GATE | CNT |  |  |
| PSUAY-CAG-CIV-4300 |  | Perform Yard 4 Gate LV box cover operation. | 6d | 2026-01-12 A | 2026-02-02 | PSUAY-CAG-CIV-4290, PSUAY-CAG-CIV-4270 SS, PSUAY-CAG-INF-4880 | 64% | 6d | 2026-01-22 | 2026-01-29 | 55d | 4d |  | PROFIS [13762.4 h] | Executar tampa das caixas LV do Yard 4 Gate | PSUAY-CAG-CIV-4440 | ALFANDEGAMENTO | CONSAG | YARD 4 GATE | CNT |  |  |

| ID | WBS | Activity | Duration | Start | Finish | Predecessors | Complete | Remaining | Planned start | Planned finish | Total float | Free float | Calendar | Resources | ACTIVITY ID COD. | FASES DE ENTREGA | RESPONSÁVEL | ÁREAS | PHASES - YARD | Atualização |
| --- | --- | --- | --- | --- | --- | --- | --- | --- | --- | --- | --- | --- | --- | --- | --- | --- | --- | --- | --- | --- |
|  | 2 | **DC - DRAINAGE CONTROL** |  | 2025-12-08 | 2026-01-30 |  |  |  |  |  |  |  |  |  |  |  |  |  |  |  |
| PSUAY-CAG-CIV-4310 |  | Execute box DC-N09-01 from Yard 4 Gate | 9d | 2025-12-08 A | 2026-01-29 | PSUAY-CAG-CIV-4160 SS | 35% | 4d | 2025-12-08 | 2025-12-18 | 45d | 0d |  | PROFIS [16044.5 h] | PSUAY-CAG-CIV-4450 | ALFANDEGAMENTO | CONSAG | YARD 4 GATE | CNT |  |
| PSUAY-CAG-CIV-4320 |  | Run the cover of the Yard 4 Gate DC boxes. | 1d | 2025-12-08 A | 2026-01-30 | PSUAY-CAG-CIV-4310, PSUAY-CAG-INF-4950, PSUAY-CAG-CIV-4300 SS | 3% | 1d | 2026-01-19 | 2026-01-19 | 51d | 0d |  | PROFIS [625.56 h] | PSUAY-CAG-CIV-4460 | ALFANDEGAMENTO | CONSAG | YARD 4 GATE | CNT |  |
|  | 3 | **GP BOXES - SURFACE DRAINAGE** |  | 2025-11-10 | 2026-02-06 |  |  |  |  |  |  |  |  |  |  |  |  |  |  |  |
| PSUAY-CAG-CIV-4530 |  | Execute Yard 4 Gate GP-K09-01 box | 2d | 2025-11-10 A | 2025-11-11 A | PSUAY-CAG-CIV-4520 | 100% |  |  |  |  |  |  | PROFIS [2133.12 h] | PSUAY-CAG-CIV-4530 | ALFANDEGAMENTO | CONSAG | YARD 4 GATE | CNT |  |
| PSUAY-CAG-CIV-4570 |  | Execute Yard 4 Gate GP-H10-01 box | 3d | 2025-11-10 A | 2025-11-12 A | PSUAY-CAG-CIV-4560 | 100% |  | 2025-12-01 | 2025-12-03 |  |  |  | PROFIS [5059.67 h] | PSUAY-CAG-CIV-4570 | ALFANDEGAMENTO | CONSAG | YARD 4 GATE | CNT |  |
| PSUAY-CAG-CIV-4510 |  | Execute Yard 4 Gate GP-L08-03 box | 3d | 2025-11-14 A | 2026-01-23 A | PSUAY-CAG-CIV-4500 | 100% |  | 2025-11-14 | 2025-11-18 |  |  |  | PROFIS [4471.33 h] | PSUAY-CAG-CIV-4510 | ALFANDEGAMENTO | CONSAG | YARD 4 GATE | CNT | OK |
| PSUAY-CAG-CIV-4550 |  | Execute Yard 4 Gate GP-H09-02 box | 3d | 2025-11-14 A | 2025-11-18 A | PSUAY-CAG-CIV-4540 | 100% |  |  |  |  |  |  | PROFIS [4508.81 h] | PSUAY-CAG-CIV-4550 | ALFANDEGAMENTO | CONSAG | YARD 4 GATE | CNT |  |
| PSUAY-CAG-CIV-4520 |  | Execute Yard 4 Gate GP-K09-03 box | 2d | 2025-11-19 A | 2025-11-20 A | PSUAY-CAG-CIV-4510 | 100% |  |  |  |  |  |  | PROFIS [2454.53 h] | PSUAY-CAG-CIV-4520 | ALFANDEGAMENTO | CONSAG | YARD 4 GATE | CNT |  |
| PSUAY-CAG-CIV-4560 |  | Execute Yard 4 Gate GP-H09-03 box | 3d | 2025-11-19 A | 2025-11-21 A | PSUAY-CAG-CIV-4550 | 100% |  |  |  |  |  |  | PROFIS [4831.08 h] | PSUAY-CAG-CIV-4560 | ALFANDEGAMENTO | CONSAG | YARD 4 GATE | CNT |  |
| PSUAY-CAG-CIV-4490 |  | Execute Yard 4 Gate GP-L08-01 box | 3d | 2025-11-24 A | 2026-01-28 | PSUAY-CAG-CIV-4480 SS, PSUAY-CAG-CIV-4480 FF | 84% | 3d | 2025-12-01 | 2025-12-03 | 77d |  |  | PROFIS [4847.95 h] | PSUAY-CAG-CIV-4490 | ALFANDEGAMENTO | CONSAG | YARD 4 GATE | CNT |  |
| PSUAY-CAG-CIV-4580 |  | Execute Yard 4 Gate GP-K09-04 box | 2d | 2025-11-24 A | 2025-11-29 A | PSUAY-CAG-CIV-4570 | 100% |  | 2025-12-03 | 2025-12-04 |  |  |  | PROFIS [2182.12 h] | PSUAY-CAG-CIV-4580 | ALFANDEGAMENTO | CONSAG | YARD 4 GATE | CNT |  |
| PSUAY-CAG-CIV-4590 |  | Execute Yard 4 Gate GP-L09-01 box | 4d | 2025-11-24 A | 2026-01-29 | PSUAY-CAG-CIV-4500 SS | 84% | 4d | 2025-12-01 | 2025-12-04 | 52d | 1d |  | PROFIS [7034.68 h] | PSUAY-CAG-CIV-4590 | ALFANDEGAMENTO | CONSAG | YARD 4 GATE | CNT |  |
| PSUAY-CAG-CIV-4470 |  | Execute Yard 4 Gate GP-L07-01 box | 2d | 2025-12-01 A | 2025-12-09 A | PSUAY-CAG-CIV-4160 SS | 100% |  | 2025-12-01 | 2025-12-02 |  |  |  | PROFIS [3355.27 h] | PSUAY-CAG-CIV-4470 | ALFANDEGAMENTO | CONSAG | YARD 4 GATE | CNT |  |
| PSUAY-CAG-CIV-4480 |  | Execute Yard 4 Gate GP-L07-02 box | 2d | 2025-12-01 A | 2026-01-27 | PSUAY-CAG-CIV-4470 SS | 84% | 2d | 2025-12-01 | 2025-12-02 | 45d | 0d |  | PROFIS [3712.49 h] | PSUAY-CAG-CIV-4480 | ALFANDEGAMENTO | CONSAG | YARD 4 GATE | CNT |  |
| PSUAY-CAG-CIV-4500 |  | Execute Yard 4 Gate GP-L08-02 box | 4d | 2025-12-01 A | 2026-01-29 | PSUAY-CAG-CIV-4480 SS | 84% | 4d | 2025-12-01 | 2025-12-04 | 45d | 0d |  | PROFIS [6500.75 h] | PSUAY-CAG-CIV-4500 | ALFANDEGAMENTO | CONSAG | YARD 4 GATE | CNT |  |
| PSUAY-CAG-CIV-4540 |  | Execute Yard 4 Gate GP-J09-02 box | 2d | 2025-12-08 A | 2026-01-27 | PSUAY-CAG-CIV-4480 SS | 84% | 2d | 2025-12-08 | 2025-12-09 | 78d | 0d |  | PROFIS [3506.39 h] | PSUAY-CAG-CIV-4540 | ALFANDEGAMENTO | CONSAG | YARD 4 GATE | CNT |  |
| PSUAY-CAG-CIV-4600 |  | Run the cover of the Yard 4 Gate DC boxes. | 5d | 2026-02-02 | 2026-02-06 | PSUAY-CAG-CIV-4590, PSUAY-CAG-INF-5000, PSUAY-CAG-CIV-4320 |  |  |  |  | 51d | 34d |  | PROFIS [8132.32 h] | PSUAY-CAG-CIV-4600 | ALFANDEGAMENTO | CONSAG | YARD 4 GATE | CNT |  |
|  | 6 | **INFRASTRUCTURE** |  | 2025-11-10 | 2026-01-23 |  |  |  |  |  |  |  |  |  |  |  |  |  |  |  |
|  | 1 | **INFRA FW - FIREWATER** |  | 2025-11-10 | 2026-01-23 |  |  |  |  |  |  |  |  |  |  |  |  |  |  |  |
| PSUAY-CAG-INF-4470 |  | Install FW (fire) infrastructure from box FW-K07-01 to Yard 4 Gate HTB BOX | 9.76d | 2025-11-10 A | 2025-11-14 A | PSUAY-CAG-CIV-4180 SS | 100% |  |  |  |  |  | PSUAY - CIVIL - 2T - HE SAB | PROFIS [9638.67 h] | PSUAY-CAG-INF-4610 | ALFANDEGAMENTO | CONSAG | YARD 4 GATE | CNT |  |
| PSUAY-CAG-INF-4490 |  | Install FW (fire) infrastructure from box FW-K07-01 to HYDRANT (HM-J06-02) of Yard 4 Gate | 4d | 2025-11-10 A | 2025-11-13 A | PSUAY-CAG-INF-4480 | 100% |  |  |  |  |  |  | PROFIS [7656.89 h] | PSUAY-CAG-INF-4630 | ALFANDEGAMENTO | CONSAG | YARD 4 GATE | CNT |  |
| PSUAY-CAG-INF-4500 |  | Install FW (fire) infrastructure from box FW-L07-01 to FW-L07-02 of Yard 4 Gate | 5d | 2025-11-14 A | 2025-11-20 A | PSUAY-CAG-INF-4490 | 100% |  |  |  |  |  |  | PROFIS [9008.1 h] | PSUAY-CAG-INF-4640 | ALFANDEGAMENTO | CONSAG | YARD 4 GATE | CNT |  |
| PSUAY-CAG-INF-4480 |  | Perform FW (fire) infrastructure from box FW-K07-01 to FW-L07-01 of Yard 4 Gate | 3d | 2025-11-17 A | 2025-11-19 A | PSUAY-CAG-INF-4470 | 100% |  |  |  |  |  |  | PROFIS [5404.86 h] | PSUAY-CAG-INF-4620 | ALFANDEGAMENTO | CONSAG | YARD 4 GATE | CNT |  |
| PSUAY-CAG-INF-4530 |  | Install FW (fire) infrastructure from box FW-L07-03 to FW-L08-01 of Yard 4 Gate | 4d | 2025-12-15 A | 2025-12-19 A | PSUAY-CAG-INF-4520 | 100% |  | 2025-12-31 | 2026-01-07 |  |  |  | PROFIS [6035.43 h] | PSUAY-CAG-INF-4670 | ALFANDEGAMENTO | CONSAG | YARD 4 GATE | CNT |  |
| PSUAY-CAG-INF-4550 |  | Install FW (fire) infrastructure from box FW-L08-01 to hydrant SS1 of Yard 4 Gate | 5d | 2025-12-15 A | 2025-12-19 A | PSUAY-CAG-INF-4540 | 100% |  | 2026-01-12 | 2026-01-16 |  |  |  | PROFIS [8107.29 h] | PSUAY-CAG-INF-4690 | ALFANDEGAMENTO | CONSAG | YARD 4 GATE | CNT |  |
| PSUAY-CAG-INF-4560 |  | Perform fire protection (FW) infrastructure sheathing for Yard 4 - Gate | 5d | 2025-12-15 A | 2026-01-23 A | PSUAY-CAG-INF-4550 | 100% |  | 2026-01-19 | 2026-01-23 |  |  |  | PROFIS [13209.2 h] | PSUAY-CAG-INF-4700 | ALFANDEGAMENTO | CONSAG | YARD 4 GATE | CNT |  |
| PSUAY-CAG-INF-4510 |  | Install FW (fire) infrastructure from box FW-L07-01 to FW-L07-03 of Yard 4 Gate | 4d | 2025-12-17 A | 2025-12-19 A | PSUAY-CAG-INF-4500 | 100% |  | 2025-12-18 | 2025-12-23 |  |  |  | PROFIS [6305.67 h] | PSUAY-CAG-INF-4650 | ALFANDEGAMENTO | CONSAG | YARD 4 GATE | CNT |  |
| PSUAY-CAG-INF-4520 |  | Perform FW (fire) infrastructure from box FW-L07-03 to FW-L06-01 of Yard 4 Gate | 3d | 2025-12-17 A | 2025-12-19 A | PSUAY-CAG-INF-4510 | 100% |  | 2025-12-24 | 2025-12-30 |  |  |  | PROFIS [4504.05 h] | PSUAY-CAG-INF-4660 | ALFANDEGAMENTO | CONSAG | YARD 4 GATE | CNT |  |
| PSUAY-CAG-INF-4540 |  | Install FW (fire) infrastructure from box FW-L08-01 to Yard 4 Gate HTB BOX | 2d | 2026-01-08 A | 2026-01-09 A | PSUAY-CAG-INF-4530 | 100% |  |  |  |  |  |  | PROFIS [2252.03 h] | PSUAY-CAG-INF-4680 | ALFANDEGAMENTO | CONSAG | YARD 4 GATE | CNT |  |

Notes:
- PSUAY-CAG-CIV-4310: Translate: Executar caixa DC-N09-01 do Yard 4 Gate
- PSUAY-CAG-CIV-4320: Translate: Executar tampa das caixas DC do Yard 4 Gate
- PSUAY-CAG-CIV-4530: Translate: Executar caixa GP-K09-01 do Yard 4 Gate
- PSUAY-CAG-CIV-4570: Translate: Executar caixa GP-H10-01 do Yard 4 Gate
- PSUAY-CAG-CIV-4510: Translate: Executar caixa GP-L08-03 do Yard 4 Gate
- PSUAY-CAG-CIV-4550: Translate: Executar caixa GP-H09-02 do Yard 4 Gate
- PSUAY-CAG-CIV-4520: Translate: Executar caixa GP-K09-03 do Yard 4 Gate
- PSUAY-CAG-CIV-4560: Translate: Executar caixa GP-H09-03 do Yard 4 Gate
- PSUAY-CAG-CIV-4490: Translate: Executar caixa GP-L08-01 do Yard 4 Gate
- PSUAY-CAG-CIV-4580: Translate: Executar caixa GP-K09-04 do Yard 4 Gate
- PSUAY-CAG-CIV-4590: Translate: Executar caixa GP-L09-01 do Yard 4 Gate
- PSUAY-CAG-CIV-4470: Translate: Executar caixa GP-L07-01 do Yard 4 Gate
- PSUAY-CAG-CIV-4480: Translate: Executar caixa GP-L07-02 do Yard 4 Gate
- PSUAY-CAG-CIV-4500: Translate: Executar caixa GP-L08-02 do Yard 4 Gate
- PSUAY-CAG-CIV-4540: Translate: Executar caixa GP-J09-02 do Yard 4 Gate
- PSUAY-CAG-CIV-4600: Translate: Executar tampa das caixas DC do Yard 4 Gate
- PSUAY-CAG-INF-4470: Translate: Executar infra FW (incêndio) da caixa FW-K07-01 para CAIXA HTB do Yard 4 Gate
- PSUAY-CAG-INF-4490: Translate: Executar infra FW (incêndio) da caixa FW-K07-01 para HIDRANTE (HM-J06-02) do Yard 4 Gate
- PSUAY-CAG-INF-4500: Translate: Executar infra FW (incêndio) da caixa FW-L07-01 para FW-L07-02 do Yard 4 Gate
- PSUAY-CAG-INF-4480: Translate: Executar infra FW (incêndio) da caixa FW-K07-01 para FW-L07-01 do Yard 4 Gate
- PSUAY-CAG-INF-4530: Translate: Executar infra FW (incêndio) da caixa FW-L07-03 para FW-L08-01 do Yard 4 Gate
- PSUAY-CAG-INF-4550: Translate: Executar infra FW (incêndio) da caixa FW-L08-01 para HIDRANTE SS1 do Yard 4 Gate
- PSUAY-CAG-INF-4560: Translate: Executar encamisamento da infra FW (incêndio) do Yard 4 - Gate
- PSUAY-CAG-INF-4510: Translate: Executar infra FW (incêndio) da caixa FW-L07-01 para FW-L07-03 do Yard 4 Gate
- PSUAY-CAG-INF-4520: Translate: Executar infra FW (incêndio) da caixa FW-L07-03 para FW-L06-01 do Yard 4 Gate
- PSUAY-CAG-INF-4540: Translate: Executar infra FW (incêndio) da caixa FW-L08-01 para CAIXA HTB do Yard 4 Gate

| ID | WBS | Activity | Duration | Start | Finish | Predecessors | Complete | Planned start | Planned finish | Calendar | Resources | ACTIVITY ID COD. | FASES DE ENTREGA | RESPONSÁVEL | ÁREAS | PHASES - YARD |
| --- | --- | --- | --- | --- | --- | --- | --- | --- | --- | --- | --- | --- | --- | --- | --- | --- |
|  | 2 | **INFRA LV - LOW VOLTAGE** |  | 2025-11-10 | 2025-12-19 |  |  |  |  |  |  |  |  |  |  |  |
| PSUAY-CAG-INF-4590 |  | Execute infra LV from box LV-K06-01 to HM-K06-01 from Yard 4 - Gate | 1d | 2025-11-10 A | 2025-11-10 A | PSUAY-CAG-INF-4580 | 100% |  |  |  | PROFIS [450.41 h]; INFRA-STRUCTURE ELECTRICAL [5 m] | PSUAY-CAG-INF-4730 | ALFANDEGAMENTO | CONSAG | YARD 4 GATE | CNT |
| PSUAY-CAG-INF-4600 |  | Execute infra LV from box LV-J06-03 to LMT BATTERY from Yard 4 - Gate | 1d | 2025-11-11 A | 2025-11-11 A | PSUAY-CAG-INF-4590 | 100% |  |  |  | PROFIS [1261.13 h]; INFRA-STRUCTURE ELECTRICAL [14 m] | PSUAY-CAG-INF-4740 | ALFANDEGAMENTO | CONSAG | YARD 4 GATE | CNT |
| PSUAY-CAG-INF-4750 |  | Execute infra LV from box LV-L06-01 to LMT BATTERY from Yard 4 - Gate | 1d | 2025-11-12 A | 2025-11-12 A | PSUAY-CAG-INF-4600 | 100% |  |  |  | PROFIS [1080.97 h]; INFRA-STRUCTURE ELECTRICAL [12 m] | PSUAY-CAG-INF-4750 | ALFANDEGAMENTO | CONSAG | YARD 4 GATE | CNT |
| PSUAY-CAG-INF-4620 |  | Execute infra LV from box LV-L08-02 to CT-L08-01 from Yard 4 - Gate | 1d | 2025-11-13 A | 2025-11-13 A | PSUAY-CAG-INF-4750 | 100% |  |  |  | PROFIS [4774.3 h]; INFRA-STRUCTURE ELECTRICAL [53 m] | PSUAY-CAG-INF-4760 | ALFANDEGAMENTO | CONSAG | YARD 4 GATE | CNT |
| PSUAY-CAG-INF-4630 |  | Execute infra LV from box LV-L09-03 to POP UP PANELS of Yard 4 - Gate | 1d | 2025-11-14 A | 2025-11-14 A | PSUAY-CAG-INF-4620 | 100% |  |  |  | PROFIS [5404.86 h]; INFRA-STRUCTURE ELECTRICAL [60 m] | PSUAY-CAG-INF-4770 | ALFANDEGAMENTO | CONSAG | YARD 4 GATE | CNT |
| PSUAY-CAG-INF-4640 |  | Execute infra LV from box LV-K09-03 to LMT BATTERY from Yard 4 - Gate | 1d | 2025-11-17 A | 2025-11-17 A | PSUAY-CAG-INF-4630 | 100% |  |  |  | PROFIS [2161.94 h]; INFRA-STRUCTURE ELECTRICAL [24 m] | PSUAY-CAG-INF-4780 | ALFANDEGAMENTO | CONSAG | YARD 4 GATE | CNT |
| PSUAY-CAG-INF-4650 |  | Execute infra LV from box LV-K09-03 to Yard 4 - Gate SCALES | 1d | 2025-11-18 A | 2025-11-18 A | PSUAY-CAG-INF-4640 | 100% |  |  |  | PROFIS [3062.76 h]; INFRA-STRUCTURE ELECTRICAL [34 m] | PSUAY-CAG-INF-4790 | ALFANDEGAMENTO | CONSAG | YARD 4 GATE | CNT |
| PSUAY-CAG-INF-4660 |  | Execute infra LV from box LV-K09-02 to LMT BATTERY from Yard 4 - Gate | 1d | 2025-11-19 A | 2025-11-19 A | PSUAY-CAG-INF-4650 | 100% |  |  |  | PROFIS [2702.43 h]; INFRA-STRUCTURE ELECTRICAL [30 m] | PSUAY-CAG-INF-4800 | ALFANDEGAMENTO | CONSAG | YARD 4 GATE | CNT |
| PSUAY-CAG-INF-4570 |  | Execute infra LV from box LV-J07-01 to LV-J06-03 of Yard 4 - Gate | 1.95d | 2025-11-19 A | 2025-11-20 A | PSUAY-CAG-CIV-4280 | 100% |  |  | PSUAY - CIVIL - 2T - HE SAB | PROFIS [2161.94 h]; INFRA-STRUCTURE ELECTRICAL [24 m] | PSUAY-CAG-INF-4710 | ALFANDEGAMENTO | CONSAG | YARD 4 GATE | CNT |
| PSUAY-CAG-INF-4810 |  | Execute LV infrastructure from box LV-K09-02 to the Yard 4 - Gate Access Gate. | 1d | 2025-11-20 A | 2025-11-20 A | PSUAY-CAG-INF-4660 | 100% |  |  |  | PROFIS [1080.97 h]; INFRA-STRUCTURE ELECTRICAL [12 m] | PSUAY-CAG-INF-4810 | ALFANDEGAMENTO | CONSAG | YARD 4 GATE | CNT |
| PSUAY-CAG-INF-4580 |  | Execute infra LV from box LV-K06-01 to LV-J06-03 of Yard 4 - Gate | 1d | 2025-11-21 A | 2025-11-21 A | PSUAY-CAG-INF-4570 | 100% |  |  |  | PROFIS [4143.73 h]; INFRA-STRUCTURE ELECTRICAL [46 m] | PSUAY-CAG-INF-4720 | ALFANDEGAMENTO | CONSAG | YARD 4 GATE | CNT |
| PSUAY-CAG-INF-4680 |  | Execute infra LV from box LV-J09-03 for Yard 4 - Gate SCALES | 1d | 2025-11-21 A | 2025-11-21 A | PSUAY-CAG-INF-4810 | 100% |  |  |  | PROFIS [3242.92 h]; INFRA-STRUCTURE ELECTRICAL [36 m] | PSUAY-CAG-INF-4820 | ALFANDEGAMENTO | CONSAG | YARD 4 GATE | CNT |
| PSUAY-CAG-INF-4710 |  | Execute infra LV from the POP UP PANELS box to CT-L09-03 of Yard 4 - Gate | 1d | 2025-12-01 A | 2025-12-06 A | PSUAY-CAG-INF-4700 | 100% | 2025-12-08 | 2025-12-08 |  | PROFIS [3423.08 h]; INFRA-STRUCTURE ELECTRICAL [38 m] | PSUAY-CAG-INF-4850 | ALFANDEGAMENTO | CONSAG | YARD 4 GATE | CNT |
| PSUAY-CAG-INF-4720 |  | Execute infra LV from the POP UP PANELS box to CT-L09-01 of Yard 4 - Gate | 1d | 2025-12-01 A | 2025-12-06 A | PSUAY-CAG-INF-4710 | 100% | 2025-12-09 | 2025-12-09 |  | PROFIS [4053.65 h]; INFRA-STRUCTURE ELECTRICAL [45 m] | PSUAY-CAG-INF-4860 | ALFANDEGAMENTO | CONSAG | YARD 4 GATE | CNT |
| PSUAY-CAG-INF-4870 |  | Execute infra LV from box HV-K09-01 to LMT BATTERY from Yard 4 - Gate | 1d | 2025-12-01 A | 2025-12-06 A | PSUAY-CAG-INF-4720 | 100% | 2025-12-10 | 2025-12-10 |  | PROFIS [1981.78 h]; INFRA-STRUCTURE ELECTRICAL [22 m] | PSUAY-CAG-INF-4870 | ALFANDEGAMENTO | CONSAG | YARD 4 GATE | CNT |
| PSUAY-CAG-INF-4880 |  | Perform LV (low voltage) infrastructure sheathing for Yard 4 - Gate | 5d | 2025-12-01 A | 2025-12-06 A | PSUAY-CAG-INF-4870 | 100% | 2025-12-11 | 2025-12-17 |  | PROFIS [10765.3 h]; INFRA-STRUCTURE ELECTRICAL [533 m] | PSUAY-CAG-INF-4880 | ALFANDEGAMENTO | CONSAG | YARD 4 GATE | CNT |
| PSUAY-CAG-INF-4690 |  | Execute infra LV from box HM-K06-01 to CT-K06-01 from Yard 4 - Gate | 1d | 2025-12-04 A | 2025-12-13 A | PSUAY-CAG-INF-4680 | 100% | 2025-12-04 | 2025-12-04 |  | PROFIS [3333 h]; INFRA-STRUCTURE ELECTRICAL [37 m] | PSUAY-CAG-INF-4830 | ALFANDEGAMENTO | CONSAG | YARD 4 GATE | CNT |
| PSUAY-CAG-INF-4700 |  | Execute infra LV from box HM-K06-01 to CT-K06-02 of Yard 4 - Gate | 1d | 2025-12-05 A | 2025-12-19 A | PSUAY-CAG-INF-4690 | 100% | 2025-12-05 | 2025-12-05 |  | PROFIS [3693.32 h]; INFRA-STRUCTURE ELECTRICAL [41 m] | PSUAY-CAG-INF-4840 | ALFANDEGAMENTO | CONSAG | YARD 4 GATE | CNT |
|  | 9 | **INFRA SW - STORMWATER** |  | 2025-11-10 | 2025-11-21 |  |  |  |  |  |  |  |  |  |  |  |
| PSUAY-CAG-INF-4910 |  | Execute infrastructure SW from box SW-J07-01 to SW-L07-01 of Yard 4 - Gate | 5d | 2025-11-10 A | 2025-11-14 A | PSUAY-CAG-INF-4760 | 100% |  |  |  | PROFIS [9368.43 h] | PSUAY-CAG-INF-4910 | ALFANDEGAMENTO | CONSAG | YARD 4 GATE | CNT |
| PSUAY-CAG-INF-4940 |  | Perform infrastructure SW encasement for Yard 4 - Gate | 5d | 2025-11-10 A | 2025-11-14 A | PSUAY-CAG-INF-4930 | 100% | 2025-12-04 | 2025-12-10 |  | PROFIS [5756.3 h] | PSUAY-CAG-INF-4940 | ALFANDEGAMENTO | CONSAG | YARD 4 GATE | CNT |
| PSUAY-CAG-INF-4890 |  | Execute the SW infrastructure from the SW-J07-01 box to the LMT BATTERY of Yard 4 - Gate | 7.8d | 2025-11-11 A | 2025-11-17 A | PSUAY-CAG-CIV-4200 | 100% |  |  | PSUAY - CIVIL - 2T - HE SAB | PROFIS [6575.92 h] | PSUAY-CAG-INF-4890 | ALFANDEGAMENTO | CONSAG | YARD 4 GATE | CNT |
| PSUAY-CAG-INF-4760 |  | Execute the SW infrastructure from the SW-J07-01 box to SS2 of Yard 4 - Gate | 1d | 2025-11-17 A | 2025-11-17 A | PSUAY-CAG-INF-4890 | 100% |  |  |  | PROFIS [1351.22 h] | PSUAY-CAG-INF-4900 | ALFANDEGAMENTO | CONSAG | YARD 4 GATE | CNT |
| PSUAY-CAG-INF-4920 |  | Execute infrastructure SW from box SW-L07-01 to GP-L07-01 of Yard 4 - Gate | 2d | 2025-11-17 A | 2025-11-18 A | PSUAY-CAG-INF-4910 | 100% |  |  |  | PROFIS [2972.67 h] | PSUAY-CAG-INF-4920 | ALFANDEGAMENTO | CONSAG | YARD 4 GATE | CNT |
| PSUAY-CAG-INF-4930 |  | Execute infrastructure SW from box SW-L09-02 to SW-M09-01 of Yard 4 - Gate | 3d | 2025-11-19 A | 2025-11-21 A | PSUAY-CAG-INF-4920 | 100% |  |  |  | PROFIS [5404.86 h] | PSUAY-CAG-INF-4930 | ALFANDEGAMENTO | CONSAG | YARD 4 GATE | CNT |

Notes:
- PSUAY-CAG-INF-4590: Translate: Executar infra LV da caixa LV-K06-01 para HM-K06-01 do Yard 4 - Gate
- PSUAY-CAG-INF-4600: Translate: Executar infra LV da caixa LV-J06-03 para LMT BATERIA do Yard 4 - Gate
- PSUAY-CAG-INF-4750: Translate: Executar infra LV da caixa LV-L06-01 para LMT BATERIA do Yard 4 - Gate
- PSUAY-CAG-INF-4620: Translate: Executar infra LV da caixa LV-L08-02 para CT-L08-01 do Yard 4 - Gate
- PSUAY-CAG-INF-4630: Translate: Executar infra LV da caixa LV-L09-03 para POP UP PAINEIS do Yard 4 - Gate
- PSUAY-CAG-INF-4640: Translate: Executar infra LV da caixa LV-K09-03 para LMT BATERIA do Yard 4 - Gate
- PSUAY-CAG-INF-4650: Translate: Executar infra LV da caixa LV-K09-03 para BALANÇAS do Yard 4 - Gate
- PSUAY-CAG-INF-4660: Translate: Executar infra LV da caixa LV-K09-02 para LMT BATERIA do Yard 4 - Gate
- PSUAY-CAG-INF-4570: Translate: Executar infra LV da caixa LV-J07-01 para LV-J06-03 do Yard 4 - Gate
- PSUAY-CAG-INF-4810: Translate: Executar infra LV da caixa LV-K09-02 para ACCESS PORTARIA do Yard 4 - Gate
- PSUAY-CAG-INF-4580: Translate: Executar infra LV da caixa LV-K06-01 para LV-J06-03 do Yard 4 - Gate
- PSUAY-CAG-INF-4680: Translate: Executar infra LV da caixa LV-J09-03 para BALANÇAS do Yard 4 - Gate
- PSUAY-CAG-INF-4710: Translate: Executar infra LV da caixaPOP UP PAINEIS para CT-L09-03 do Yard 4 - Gate
- PSUAY-CAG-INF-4720: Translate: Executar infra LV da caixaPOP UP PAINEIS para CT-L09-01 do Yard 4 - Gate
- PSUAY-CAG-INF-4870: Translate: Executar infra LV da caixa HV-K09-01 para LMT BATERIA do Yard 4 - Gate
- PSUAY-CAG-INF-4880: Translate: Executar encamisamento da infra LV (baixa tensão) do Yard 4 - Gate
- PSUAY-CAG-INF-4690: Translate: Executar infra LV da caixa HM-K06-01 para CT-K06-01 do Yard 4 - Gate
- PSUAY-CAG-INF-4700: Translate: Executar infra LV da caixa HM-K06-01 para CT-K06-02 do Yard 4 - Gate
- PSUAY-CAG-INF-4910: Translate: Executar infra SW da caixa SW-J07-01 para SW-L07-01 do Yard 4 - Gate
- PSUAY-CAG-INF-4940: Translate: Executar encamisamento da infra SW do Yard 4 - Gate
- PSUAY-CAG-INF-4890: Translate: Executar infra SW da caixa SW-J07-01 para LMT BATERIA do Yard 4 - Gate
- PSUAY-CAG-INF-4760: Translate: Executar infra SW da caixa SW-J07-01 para SS2 do Yard 4 - Gate
- PSUAY-CAG-INF-4920: Translate: Executar infra SW da caixa SW-L07-01 para GP-L07-01 do Yard 4 - Gate
- PSUAY-CAG-INF-4930: Translate: Executar infra SW da caixa SW-L09-02 para SW-M09-01 do Yard 4 - Gate

| ID | WBS | Activity | Duration | Start | Finish | Predecessors | Complete | Remaining | Planned start | Planned finish | Total float | Free float | Calendar | Resources | ACTIVITY ID COD. | FASES DE ENTREGA | RESPONSÁVEL | ÁREAS | PHASES - YARD |
| --- | --- | --- | --- | --- | --- | --- | --- | --- | --- | --- | --- | --- | --- | --- | --- | --- | --- | --- | --- |
|  | 4 | **INFRA-DC - DRAINAGE CONTROL** |  | 2025-11-20 | 2025-11-25 |  |  |  |  |  |  |  |  |  |  |  |  |  |  |
| PSUAY-CAG-INF-4950 |  | Run the DC infrastructure from box DC-N09-01 to SW-M09-01 of Yard 4 - Gate | 5.85d | 2025-11-20 A | 2025-11-25 A | PSUAY-CAG-CIV-4310 | 100% |  | 2025-12-11 | 2025-12-16 |  |  | PSUAY - CIVIL - 2T - HE SAB | PROFIS [4864.38 h] | PSUAY-CAG-INF-4950 | ALFANDEGAMENTO | CONSAG | YARD 4 GATE | CNT |
|  | 3 | **INFRA GP - SURFACE DRAINAGE** |  | 2025-11-12 | 2025-11-25 |  |  |  |  |  |  |  |  |  |  |  |  |  |  |
| PSUAY-CAG-INF-4960 |  | Execute GP infrastructure from box GP-L07-01 to GP-L07-02 of Yard 4 - Gate | 2d | 2025-11-12 A | 2025-11-13 A | PSUAY-CAG-CIV-4530 | 100% |  |  |  |  |  |  | PROFIS [2252.03 h]; SURFACE DRAIN [25 m] | PSUAY-CAG-INF-4960 | ALFANDEGAMENTO | CONSAG | YARD 4 GATE | CNT |
| PSUAY-CAG-INF-4970 |  | Execute GP infrastructure from box GP-L07-02 to GP-L08-01 of Yard 4 - Gate | 2d | 2025-11-14 A | 2025-11-17 A | PSUAY-CAG-INF-4960 | 100% |  |  |  |  |  |  | PROFIS [2432.19 h]; SURFACE DRAIN [27 m] | PSUAY-CAG-INF-4970 | ALFANDEGAMENTO | CONSAG | YARD 4 GATE | CNT |
| PSUAY-CAG-INF-4980 |  | Execute GP infrastructure from box GP-L08-01 to GP-L08-02 of Yard 4 - Gate | 1d | 2025-11-18 A | 2025-11-18 A | PSUAY-CAG-INF-4970 | 100% |  |  |  |  |  |  | PROFIS [1351.22 h]; SURFACE DRAIN [15 m] | PSUAY-CAG-INF-4980 | ALFANDEGAMENTO | CONSAG | YARD 4 GATE | CNT |
| PSUAY-CAG-INF-4990 |  | Execute GP infrastructure from box GP-L08-02 to GP-L08-03 of Yard 4 - Gate | 2d | 2025-11-19 A | 2025-11-20 A | PSUAY-CAG-INF-4980 | 100% |  |  |  |  |  |  | PROFIS [2252.03 h]; SURFACE DRAIN [25 m] | PSUAY-CAG-INF-4990 | ALFANDEGAMENTO | CONSAG | YARD 4 GATE | CNT |
| PSUAY-CAG-INF-5000 |  | Execute GP infrastructure from box GP-L08-02 to GP-L09-01 of Yard 4 - Gate | 3d | 2025-11-20 A | 2025-11-25 A | PSUAY-CAG-INF-4990 | 100% |  | 2025-12-05 | 2025-12-09 |  |  |  | PROFIS [5585.02 h]; SURFACE DRAIN [62 m] | PSUAY-CAG-INF-5000 | ALFANDEGAMENTO | CONSAG | YARD 4 GATE | CNT |
|  | 2 | **STRUCTURE** |  | 2025-12-15 | 2026-02-23 |  |  |  |  |  |  |  |  |  |  |  |  |  |  |
|  | 1 | **DRAINAGE CHANNELS** |  | 2026-01-05 | 2026-02-05 |  |  |  |  |  |  |  |  |  |  |  |  |  |  |
|  | 1 | **BOX DRAIN** |  | 2026-01-05 | 2026-02-05 |  |  |  |  |  |  |  |  |  |  |  |  |  |  |
| PSUAY-CAG-CIV-4870 |  | Install Box Drain type conduit for Yard 4 - Gate | 5d | 2026-01-05 A | 2026-02-05 | PSUAY-CAG-INF-5000 FS+1d | 20% | 5d | 2026-01-14 | 2026-01-20 | 47d | 11d |  | PROFIS [4019.49 h]; SURFACE DRAIN [107.09 m] | PSUAY-CAG-CIV-5010 | ALFANDEGAMENTO | CONSAG | YARD 4 GATE | CNT |
|  | 3 | **GUARDHOUSE** |  | 2026-01-26 | 2026-02-23 |  |  |  |  |  |  |  |  |  |  |  |  |  |  |
|  | 1 | **FOUNDATION** |  | 2026-01-26 | 2026-01-26 |  |  |  |  |  |  |  |  |  |  |  |  |  |  |
| PSUAY-CAG-CIV-4880 |  | Execute civil base for the Yard 4 - Gate guardhouse foundation. | 1d | 2026-01-26 | 2026-01-26 | PSUAY-MIL-GER-1230, PSUAY-MIL-ENG-4230 |  |  |  |  | 35d | 0d |  | PROFIS [673.65 h]; SURFACE DRAIN [1 m] | PSUAY-CAG-CIV-5020 | ALFANDEGAMENTO | CONSAG | YARD 4 GATE | CNT |
|  | 4 | **MASONRY** |  | 2026-01-27 | 2026-02-05 |  |  |  |  |  |  |  |  |  |  |  |  |  |  |
| PSUAY-CAG-ARQ-5030 |  | Execute masonry work for the Yard 4 - Gate guardhouse. | 8d | 2026-01-27 | 2026-02-05 | PSUAY-CAG-CIV-4880 |  |  |  |  | 35d | 0d |  | PROFIS [49526.3 h] | PSUAY-CAG-ARQ-5030 | ALFANDEGAMENTO | CONSAG | YARD 4 GATE | CNT |
|  | 3 | **ELECTRICAL INFRASTRUCTURE** |  | 2026-02-06 | 2026-02-12 |  |  |  |  |  |  |  |  |  |  |  |  |  |  |
| PSUAY-LZE-INF-5040 |  | Install electrical infrastructure for the Yard 4 - Gate guardhouse. | 5d | 2026-02-06 | 2026-02-12 | PSUAY-CAG-ARQ-5030 |  |  |  |  | 35d | 0d |  | PROFIS [9908.91 h] | PSUAY-LZE-INF-5040 | ALFANDEGAMENTO | CONSAG | YARD 4 GATE | CNT |
|  | 2 | **ELECTRICAL (LUZVILLE)** |  | 2026-02-13 | 2026-02-23 |  |  |  |  |  |  |  |  |  |  |  |  |  |  |
| PSUAY-LZE-ELE-5050 |  | Perform low-voltage cable installation from the Y4 Gate guardhouse. | 3d | 2026-02-13 | 2026-02-17 | PSUAY-LZE-INF-5040, PSUAY-MIL-GER-1210 |  |  |  |  | 35d | 0d | PSUAY - ELETROMEC - 1T - SEM HE | PROFIS [4639.17 h]; CABLE LOW VOLTAGE [1236 m] | PSUAY-LZE-ELE-5050 | ALFANDEGAMENTO | LUZVILLE | YARD 4 GATE | CNT |
| PSUAY-LZE-ELE-5060 |  | Perform preparation and termination of BT cables for the Y4 Gate guardhouse. | 2d | 2026-02-18 | 2026-02-19 | PSUAY-LZE-ELE-5050 |  |  |  |  | 40d | 0d | PSUAY - ELETROMEC - 1T - SEM HE | PROFIS [3963.57 h] | PSUAY-LZE-ELE-5060 | ALFANDEGAMENTO | LUZVILLE | YARD 4 GATE | CNT |
| PSUAY-LZE-ELE-5070 |  | Perform testing and connection of BT cables at the Y4 Gate guardhouse. | 2d | 2026-02-20 | 2026-02-23 | PSUAY-LZE-ELE-5060 |  |  |  |  | 40d | 23d | PSUAY - ELETROMEC - 1T - SEM HE | PROFIS [3963.57 h] | PSUAY-LZE-ELE-5070 | ALFANDEGAMENTO | LUZVILLE | YARD 4 GATE | CNT |
|  | 2 | **GATES** |  | 2026-01-05 | 2026-02-04 |  |  |  |  |  |  |  |  |  |  |  |  |  |  |
|  | 1 | **FOUNDATION** |  | 2026-01-05 | 2026-02-04 |  |  |  |  |  |  |  |  |  |  |  |  |  |  |
| PSUAY-CAG-CIV-5080 |  | Execute foundation for Yard 4 gate. | 7d | 2026-01-05 A | 2026-02-04 | PSUAY-CAG-CIV-4880, PSUAY-MIL-GER-1230, PSUAY-MIL-ENG-4230 | 80% | 7d | 2026-01-19 | 2026-01-27 | 41d | 0d |  | PROFIS [12010.8 h] | PSUAY-CAG-CIV-5080 | ALFANDEGAMENTO | CONSAG | YARD 4 GATE | CNT |

Notes:
- PSUAY-CAG-INF-4950: Translate: Executar infra DC da caixa DC-N09-01 para SW-M09-01 do Yard 4 - Gate
- PSUAY-CAG-INF-4960: Translate: Executar infra GP da caixa GP-L07-01 para GP-L07-02 do Yard 4 - Gate
- PSUAY-CAG-INF-4970: Translate: Executar infra GP da caixa GP-L07-02 para GP-L08-01 do Yard 4 - Gate
- PSUAY-CAG-INF-4980: Translate: Executar infra GP da caixa GP-L08-01 para GP-L08-02 do Yard 4 - Gate
- PSUAY-CAG-INF-4990: Translate: Executar infra GP da caixa GP-L08-02 para GP-L08-03 do Yard 4 - Gate
- PSUAY-CAG-INF-5000: Translate: Executar infra GP da caixa GP-L08-02 para GP-L09-01 do Yard 4 - Gate
- PSUAY-CAG-CIV-4870: Translate: Executar canaleta do tipo Box Drain do Yard 4 - Gate
- PSUAY-CAG-CIV-4880: Translate: Executar base civil da fundação da guarita do Yard 4 - Gate
- PSUAY-CAG-ARQ-5030: Translate: Executar alvenaria da guarita do Yard 4 - Gate
- PSUAY-LZE-INF-5040: Translate: Executar infra elétrica da guarita do Yard 4 - Gate
- PSUAY-LZE-ELE-5050: Translate: Executar lançamento de cabos BT da guarita do Y4 Gate
- PSUAY-LZE-ELE-5060: Translate: Executar preparação e terminação de cabos BT da guarita do Y4 Gate
- PSUAY-LZE-ELE-5070: Translate: Executar ensaio e conexão de cabos BT da guarita do Y4 Gate
- PSUAY-CAG-CIV-5080: Translate: Executar fundação da cancela do Yard 4 - Gate

| ID | WBS | Activity | Duration | Start | Finish | Predecessors | Complete | Remaining | Planned start | Planned finish | Total float | Free float | Calendar | Resources | ACTIVITY ID COD. | FASES DE ENTREGA | RESPONSÁVEL | ÁREAS | PHASES - YARD |
| --- | --- | --- | --- | --- | --- | --- | --- | --- | --- | --- | --- | --- | --- | --- | --- | --- | --- | --- | --- |
|  | 4 | **PANELS** |  | 2026-02-05 | 2026-02-11 |  |  |  |  |  |  |  |  |  |  |  |  |  |  |
|  | 1 | **FOUNDATION** |  | 2026-02-05 | 2026-02-11 |  |  |  |  |  |  |  |  |  |  |  |  |  |  |
| PSUAY-CAG-CIV-5090 |  | Execute foundation work for Yard 4 - Gate panels. | 5d | 2026-02-05 | 2026-02-11 | PSUAY-CAG-CIV-5080, PSUAY-MIL-GER-1230, PSUAY-MIL-ENG-4230 |  |  |  |  | 41d | 5d |  | PROFIS [8407.56 h] | PSUAY-CAG-CIV-5090 | ALFANDEGAMENTO | CONSAG | YARD 4 GATE | CNT |
|  | 5 | **WEIGHBRIDGE** |  | 2025-12-15 | 2026-02-18 |  |  |  |  |  |  |  |  |  |  |  |  |  |  |
|  | 1 | **FOUNDATION INPUT WEIGHBRIDGE** |  | 2025-12-15 | 2026-02-06 |  |  |  |  |  |  |  |  |  |  |  |  |  |  |
| PSUAY-CAG-CIV-5100 |  | Execute foundation for Yard 4 scale - Steel gate | 17d | 2025-12-15 A | 2026-01-21 A | PSUAY-MIL-GER-1230, PSUAY-MIL-ENG-4230 SS | 100% |  | 2025-12-31 | 2026-01-26 |  |  |  | PROFIS [814237 h] | PSUAY-CAG-CIV-5100 | ALFANDEGAMENTO | CONSAG | YARD 4 GATE | CNT |
| PSUAY-CAG-CIV-5110 |  | Execute foundation for Yard 4 - Gate formwork | 3d | 2025-12-22 A | 2026-02-02 | PSUAY-CAG-CIV-5100 FS+5d | 90% | 3d | 2026-02-03 | 2026-02-05 | 48d | 0d |  | PROFIS [56951 h] | PSUAY-CAG-CIV-5110 | ALFANDEGAMENTO | CONSAG | YARD 4 GATE | CNT |
| PSUAY-CAG-CIV-5120 |  | Construct concrete foundation for Yard 4 - Gate | 4d | 2026-01-05 A | 2026-02-06 | PSUAY-CAG-CIV-5110 | 83% | 4d | 2026-02-06 | 2026-02-11 | 48d | 5d |  | PROFIS [7698.24 h] | PSUAY-CAG-CIV-5120 | ALFANDEGAMENTO | CONSAG | YARD 4 GATE | CNT |
|  | 6 | **FOUNDATION OUTPUT WEIGHBRIDGE** |  | 2025-12-22 | 2026-02-17 |  |  |  |  |  |  |  |  |  |  |  |  |  |  |
| PSUAY-CAG-CIV-5130 |  | Execute foundation for Yard 4 scale - Steel gate | 10d | 2025-12-22 A | 2026-02-11 | PSUAY-CAG-CIV-5100 FS+5d, PSUAY-MIL-GER-1230, PSUAY-MIL-ENG-4230 | 15% | 10d | 2026-02-03 | 2026-02-16 | 36d | 0d |  | PROFIS [373057 h] | PSUAY-CAG-CIV-5130 | ALFANDEGAMENTO | CONSAG | YARD 4 GATE | CNT |
| PSUAY-CAG-CIV-5140 |  | Execute foundation for Yard 4 - Gate formwork | 2d | 2026-01-05 A | 2026-02-13 | PSUAY-CAG-CIV-5130 | 10% | 2d | 2026-02-17 | 2026-02-18 | 43d | 0d |  | PROFIS [29013.3 h] | PSUAY-CAG-CIV-5140 | ALFANDEGAMENTO | CONSAG | YARD 4 GATE | CNT |
| PSUAY-CAG-CIV-5150 |  | Construct concrete foundation for Yard 4 - Gate | 2d | 2026-01-07 A | 2026-02-17 | PSUAY-CAG-CIV-5140, PSUAY-CAG-CIV-5120 | 5% | 2d | 2026-02-19 | 2026-02-20 | 43d | 0d |  | PROFIS [3527.08 h] | PSUAY-CAG-CIV-5150 | ALFANDEGAMENTO | CONSAG | YARD 4 GATE | CNT |
|  | 2 | **SPECIAL HEIGHBRIDGE FOUNDATION** |  | 2026-02-12 | 2026-02-18 |  |  |  |  |  |  |  |  |  |  |  |  |  |  |
| PSUAY-CAG-CIV-5160 |  | Execute foundation for Yard 4 scale - Steel gate | 3d | 2026-02-12 | 2026-02-16 | PSUAY-CAG-CIV-5130, PSUAY-MIL-GER-1230, PSUAY-MIL-ENG-4230 |  |  |  |  | 36d | 0d |  | PROFIS [116023 h] | PSUAY-CAG-CIV-5160 | ALFANDEGAMENTO | CONSAG | YARD 4 GATE | CNT |
| PSUAY-CAG-CIV-5170 |  | Execute foundation for Yard 4 - Gate formwork | 1d | 2026-02-17 | 2026-02-17 | PSUAY-CAG-CIV-5160 |  |  |  |  | 43d | 0d |  | PROFIS [12442 h] | PSUAY-CAG-CIV-5170 | ALFANDEGAMENTO | CONSAG | YARD 4 GATE | CNT |
| PSUAY-CAG-CIV-5180 |  | Construct concrete foundation for Yard 4 - Gate | 1d | 2026-02-18 | 2026-02-18 | PSUAY-CAG-CIV-5170, PSUAY-CAG-CIV-5150 |  |  |  |  | 43d | 26d |  | PROFIS [1096.94 h] | PSUAY-CAG-CIV-5180 | ALFANDEGAMENTO | CONSAG | YARD 4 GATE | CNT |
|  | 4 | **GATE CANOPY** |  | 2025-12-15 | 2026-03-26 |  |  |  |  |  |  |  |  |  |  |  |  |  |  |
|  | 1 | **CIVIL BASE** |  | 2026-01-16 | 2026-02-04 |  |  |  |  |  |  |  |  |  |  |  |  |  |  |
| PSUAY-CAG-CIV-5190 |  | Execute civil foundation for the Yard 4 gatehouse. | 8d | 2026-01-16 A | 2026-02-04 | PSUAY-CAG-CIV-5100 SS, PSUAY-MIL-GER-1230, PSUAY-MIL-ENG-4230 | 80% | 8d | 2026-01-16 | 2026-01-27 | 41d | 5d |  | PROFIS [14413 h] | PSUAY-CAG-CIV-5190 | ALFANDEGAMENTO | CONSAG | YARD 4 GATE | CNT |
|  | 2 | **METAL STRUCTURE** |  | 2025-12-15 | 2026-03-26 |  |  |  |  |  |  |  |  |  |  |  |  |  |  |
| PSUAY-BRF-EST-5200 |  | Fabrication and Recieve gate canopy steel structure | 35d | 2025-12-15 A | 2026-02-26 | PSUAY-MIL-GER-1450 | 50% | 24d | 2025-12-15 | 2026-02-05 | 17d | 0d |  | PROFIS | PSUAY-BRF-EST-5200 | MILESTONES | BRAFER | YARD 4 GATE | CNT |
| PSUAY-BRF-EST-5210 |  | Execute steel structure for gate canopy in Yard 4 gatehouse roof. | 20d | 2026-02-27 | 2026-03-26 | PSUAY-CAG-CIV-5190 SS+4d, PSUAY-BRF-EST-5200, PSUAY-MIL-GER-4070 |  |  |  |  | 17d | 0d | PSUAY - ELETROMEC - 1T - SEM HE | PROFIS [1032946 h]; PSUAY-STE-STRUC [91.73 T] | PSUAY-BRF-EST-5210 | ALFANDEGAMENTO | BRAFER | YARD 4 GATE | CNT |
|  | 3 | **ELECTRICAL (LUZVILLE)** |  | 2026-02-18 | 2026-03-02 |  |  |  |  |  |  |  |  |  |  |  |  |  |  |
|  | 1 | **POTABLE WATER PUMP HOUSE** |  | 2026-02-18 | 2026-02-25 |  |  |  |  |  |  |  |  |  |  |  |  |  |  |
| PSUAY-LZE-ELE-5080 |  | Perform BT cable laying from the Y4 Gate potable water pump house. | 4d | 2026-02-18 | 2026-02-23 | PSUAY-LZE-ELE-5050 |  |  |  |  | 38d | 0d | PSUAY - ELETROMEC - 1T - SEM HE | PROFIS [4278.85 h]; CABLE LOW VOLTAGE [1140 m] | PSUAY-LZE-ELE-5220 | ALFANDEGAMENTO | LUZVILLE | YARD 4 GATE | CNT |
| PSUAY-LZE-ELE-5090 |  | Perform preparation and termination of LV cables for the Y4 Gate potable water pump house. | 2d | 2026-02-24 | 2026-02-25 | PSUAY-LZE-ELE-5080 |  |  |  |  | 38d | 0d | PSUAY - ELETROMEC - 1T - SEM HE | PROFIS [3963.57 h] | PSUAY-LZE-ELE-5230 | ALFANDEGAMENTO | LUZVILLE | YARD 4 GATE | CNT |
| PSUAY-LZE-ELE-5100 |  | Perform testing and connection of LV cables from the Y4 Gate potable water pump house. | 2d | 2026-02-24 | 2026-02-25 | PSUAY-LZE-ELE-5090 FF |  |  |  |  | 38d | 21d | PSUAY - ELETROMEC - 1T - SEM HE | PROFIS [3963.57 h] | PSUAY-LZE-ELE-5240 | ALFANDEGAMENTO | LUZVILLE | YARD 4 GATE | CNT |

Notes:
- PSUAY-CAG-CIV-5090: Translate: Executar fundação dos paineis do Yard 4 - Gate
- PSUAY-CAG-CIV-5100: Planners Notes: BL 1 = 100% da armação / BL 2 = 100% da armação / BL 3 = 100% / da armação / Total = 100% executado / BL 1 = 95% da forma / BL 2 = 95% da forma / BL / 3 = 80% da forma / Total = 90% / executado / BL 1 = 95% da forma / BL 2 = 95% da forma / BL / 3 = 60% da forma / Total = / 83,33% executado / Translate: Executar fundação da balança do Yard 4 - Gate aço
- PSUAY-CAG-CIV-5110: Planners Notes: BL 1 = 100% da armação / BL 2 = 100% da armação / BL 3 = 100% / da armação / Total = 100% executado / BL 1 = 95% da forma / BL 2 = 95% da forma / BL / 3 = 80% da forma / Total = 90% / executado / BL 1 = 95% da forma / BL 2 = 95% da forma / BL / 3 = 60% da forma / Total = / 83,33% executado / Translate: Executar fundação da balança do Yard 4 - Gate forma
- PSUAY-CAG-CIV-5120: Planners Notes: BL 1 = 100% da armação / BL 2 = 100% da armação / BL 3 = 100% / da armação / Total = 100% executado / BL 1 = 95% da forma / BL 2 = 95% da forma / BL / 3 = 80% da forma / Total = 90% / executado / BL 1 = 95% da forma / BL 2 = 95% da forma / BL / 3 = 60% da forma / Total = / 83,33% executado / Translate: Executar fundação da balança do Yard 4 - Gate concreto
- PSUAY-CAG-CIV-5130: Translate: Executar fundação da balança do Yard 4 - Gate aço
- PSUAY-CAG-CIV-5140: Translate: Executar fundação da balança do Yard 4 - Gate forma
- PSUAY-CAG-CIV-5150: Translate: Executar fundação da balança do Yard 4 - Gate concreto
- PSUAY-CAG-CIV-5160: Translate: Executar fundação da balança do Yard 4 - Gate aço
- PSUAY-CAG-CIV-5170: Translate: Executar fundação da balança do Yard 4 - Gate forma
- PSUAY-CAG-CIV-5180: Translate: Executar fundação da balança do Yard 4 - Gate concreto
- PSUAY-CAG-CIV-5190: Translate: Executar base civil da cobertura da portaria do Yard 4 - Gate
- PSUAY-BRF-EST-5200: Translate: Fabricação e entrega da estrutura de aço da cobertura da Portaria
- PSUAY-BRF-EST-5210: Translate: Executar estrutura metálica da cobertura da portaria do Yard 4 - Gate
- PSUAY-LZE-ELE-5080: Translate: Executar lançamento de cabos BT da casa de bombas água potável do Y4 Gate
- PSUAY-LZE-ELE-5090: Translate: Executar preparação e terminação de cabos BT da casa de bombas água potável do Y4 Gate
- PSUAY-LZE-ELE-5100: Translate: Executar ensaio e conexão de cabos BT da casa de bombas água potável do Y4 Gate

| ID | WBS | Activity | Duration | Start | Finish | Predecessors | Complete | Remaining | Planned start | Planned finish | Total float | Free float | Calendar | Resources | ACTIVITY ID COD. | FASES DE ENTREGA | RESPONSÁVEL | ÁREAS | PHASES - YARD |
| --- | --- | --- | --- | --- | --- | --- | --- | --- | --- | --- | --- | --- | --- | --- | --- | --- | --- | --- | --- |
|  | 2 | **WASTEWATER TREATMENT PLANT** |  | 2026-02-18 | 2026-03-02 |  |  |  |  |  |  |  |  |  |  |  |  |  |  |
| PSUAY-LZE-ELE-5110 |  | Perform BT cable installation from the Y4 Gate wastewater treatment plant. | 6d | 2026-02-18 | 2026-02-25 | PSUAY-LZE-ELE-5050 |  |  |  |  | 35d | 0d | PSUAY - ELETROMEC - 1T - SEM HE | PROFIS [13174.4 h]; CABLE LOW VOLTAGE [3510 m] | PSUAY-LZE-ELE-5250 | ALFANDEGAMENTO | LUZVILLE | YARD 4 GATE | CNT |
| PSUAY-LZE-ELE-5120 |  | Perform preparation and termination of LV cables for the Y4 Gate wastewater treatment plant. | 3d | 2026-02-26 | 2026-03-02 | PSUAY-LZE-ELE-5110 |  |  |  |  | 35d | 0d | PSUAY - ELETROMEC - 1T - SEM HE | PROFIS [5945.35 h] | PSUAY-LZE-ELE-5260 | ALFANDEGAMENTO | LUZVILLE | YARD 4 GATE | CNT |
| PSUAY-LZE-ELE-5130 |  | Perform testing and connection of LV cables at the Y4 Gate wastewater treatment plant. | 3d | 2026-02-26 | 2026-03-02 | PSUAY-LZE-ELE-5120 FF |  |  |  |  | 35d | 18d | PSUAY - ELETROMEC - 1T - SEM HE | PROFIS [5945.35 h] | PSUAY-LZE-ELE-5270 | ALFANDEGAMENTO | LUZVILLE | YARD 4 GATE | CNT |
|  | 7 | **SS2** |  | 2025-11-18 | 2026-02-20 |  |  |  |  |  |  |  |  |  |  |  |  |  |  |
|  | 1 | **SS2 - SUBSTATION** |  | 2025-11-18 | 2026-02-20 |  |  |  |  |  |  |  |  |  |  |  |  |  |  |
|  | 3 | **SS1 X SS2 CABLE LAUNCH** |  | 2025-11-18 | 2026-01-24 |  |  |  |  |  |  |  |  |  |  |  |  |  |  |
|  | 2 | **HIGH VOLTAGE CABLES** |  | 2025-11-18 | 2025-12-01 |  |  |  |  |  |  |  |  |  |  |  |  |  |  |
| PSUAY-LZE-ELE-5170 |  | Perform cable laying MT SS1 x SS2 | 4d | 2025-11-18 A | 2025-12-01 A | PSUAY-MIL-GER-1250 | 100% |  | 2025-11-18 | 2025-11-21 |  |  | PSUAY - ELETROMEC - 1T - SEM HE | PROFIS [311.91 h]; MATERIAL - CABO HV [831 m] | PSUAY-LZE-ELE-5280 | ALFANDEGAMENTO | LUZVILLE | SS2 | CNT |
| PSUAY-LZE-ELE-5180 |  | Perform preparation and cable termination of MT SS1 x SS2. | 2d | 2025-12-01 A | 2025-12-01 A | PSUAY-LZE-ELE-5170 FS+8d | 100% |  | 2025-12-24 | 2025-12-29 |  |  | PSUAY - ELETROMEC - 1T - SEM HE | PROFIS [198.18 h] | PSUAY-LZE-ELE-5290 | ALFANDEGAMENTO | LUZVILLE | SS2 | CNT |
|  | 1 | **GROUNDING** |  | 2025-11-18 | 2026-01-24 |  |  |  |  |  |  |  |  |  |  |  |  |  |  |
| PSUAY-LZE-ELE-5190 |  | Perform cable and grounding rod installation SS2 | 3d | 2025-11-18 A | 2026-01-24 A | PSUAY-LZE-ELE-5170 | 100% |  | 2025-11-18 | 2025-11-20 |  |  | PSUAY - ELETROMEC - 1T - SEM HE | PROFIS [297.27 h] | PSUAY-LZE-ELE-5300 | ALFANDEGAMENTO | LUZVILLE | SS2 | CNT |
|  | 4 | **SS2 - SUBSTATION BUILDING - 13.8KV** |  | 2025-11-25 | 2026-02-20 |  |  |  |  |  |  |  |  |  |  |  |  |  |  |
|  | 1 | **EQUIPMENT** |  | 2025-12-29 | 2026-01-27 |  |  |  |  |  |  |  |  |  |  |  |  |  |  |
|  | 2 | **RTU SS2 (SCADA)** |  | 2025-12-29 | 2026-01-27 |  |  |  |  |  |  |  |  |  |  |  |  |  |  |
| PSUAY-LZE-ELE-5200 |  | Perform positioning of the RTU SCADA panel in SS2 | 2d | 2025-12-29 A | 2026-01-03 A | PSUAY-MIL-GER-1450 FS+60d | 100% |  | 2026-01-08 | 2026-01-09 |  |  | PSUAY - ELETROMEC - 1T - SEM HE | PROFIS [198.18 h] | PSUAY-LZE-ELE-5310 | ALFANDEGAMENTO | LUZVILLE | SS2 | CNT |
| PSUAY-LZE-ELE-5210 |  | Perform power cable installation from the RTU SCADA panel to SS2. | 1d | 2026-01-26 | 2026-01-26 | PSUAY-LZE-ELE-5200 |  |  |  |  | 58d | 0d | PSUAY - ELETROMEC - 1T - SEM HE | PROFIS [99.09 h] | PSUAY-LZE-ELE-5320 | ALFANDEGAMENTO | LUZVILLE | SS2 | CNT |
| PSUAY-LZE-ELE-5220 |  | Perform preparation, testing, and connection of cables for the RTU SCADA panel in SS2. | 1d | 2026-01-27 | 2026-01-27 | PSUAY-LZE-ELE-5210 |  |  |  |  | 58d | 11d | PSUAY - ELETROMEC - 1T - SEM HE | PROFIS [99.09 h] | PSUAY-LZE-ELE-5330 | ALFANDEGAMENTO | LUZVILLE | SS2 | CNT |
|  | 3 | **CABLE LAUNCH** |  | 2025-11-25 | 2026-02-20 |  |  |  |  |  |  |  |  |  |  |  |  |  |  |
|  | 4 | **HV CABLES** |  | 2025-11-27 | 2025-11-29 |  |  |  |  |  |  |  |  |  |  |  |  |  |  |
| PSUAY-LZE-ELE-5230 |  | Perform HV cable laying on SS2 | 6d | 2025-11-27 A | 2025-11-29 A | PSUAY-LZE-ELE-5170 | 100% |  | 2025-11-27 | 2025-12-04 |  |  | PSUAY - ELETROMEC - 1T - SEM HE | PROFIS [23900.6 h]; MATERIAL - CABO HV [315 m] | PSUAY-LZE-ELE-5340 | ALFANDEGAMENTO | LUZVILLE | SS2 | CNT |
| PSUAY-LZE-ELE-5240 |  | Perform preparation and termination of SS2 HV cables. | 6d | 2025-11-28 A | 2025-11-29 A | PSUAY-LZE-ELE-5230 | 100% |  | 2025-12-01 | 2025-12-08 |  |  | PSUAY - ELETROMEC - 1T - SEM HE | PROFIS [594.53 h] | PSUAY-LZE-ELE-5350 | ALFANDEGAMENTO | LUZVILLE | SS2 | CNT |
|  | 3 | **LV CABLES** |  | 2025-11-25 | 2026-02-03 |  |  |  |  |  |  |  |  |  |  |  |  |  |  |
| PSUAY-LZE-ELE-5250 |  | Perform LV cable laying on SS2 | 12d | 2025-11-25 A | 2026-02-03 | PSUAY-LZE-GER-5150 | 70% | 7d | 2025-11-25 | 2025-12-10 | 23d | 0d | PSUAY - ELETROMEC - 1T - SEM HE | PROFIS [1126.01 h]; CABLE LOW VOLTAGE [1500 m] | PSUAY-LZE-ELE-5360 | ALFANDEGAMENTO | LUZVILLE | SS2 | CNT |
| PSUAY-LZE-ELE-5260 |  | Perform preparation and termination of SS2 LV cables. | 20d | 2025-12-03 A | 2026-01-30 | PSUAY-LZE-ELE-5250 SS+10d | 40% | 5d | 2025-12-09 | 2026-01-09 | 37.44d | 14.88d | PSUAY - ELETROMEC - 1T - SEM HE | PROFIS [1981.78 h] | PSUAY-LZE-ELE-5370 | ALFANDEGAMENTO | LUZVILLE | SS2 | CNT |

Notes:
- PSUAY-LZE-ELE-5110: Translate: Executar lançamento de cabos BT da estação de tratamento de esgoto do Y4 Gate
- PSUAY-LZE-ELE-5120: Translate: Executar preparação e terminação de cabos BT da estação de tratamento de esgoto do Y4 Gate
- PSUAY-LZE-ELE-5130: Translate: Executar ensaio e conexão de cabos BT da estação de tratamento de esgoto do Y4 Gate
- PSUAY-LZE-ELE-5170: Planners Notes: Total = 831 m / Executado = 741 m / Avanço = 89% / Translate: Executar lançamento de cabos MT SS1 x SS2
- PSUAY-LZE-ELE-5180: Translate: Executar preparação e mufla dos cabos MT SS1 x SS2
- PSUAY-LZE-ELE-5190: Translate: Executar lançamento de cabos e hastes de aterramento SS2
- PSUAY-LZE-ELE-5200: Translate: Executar posicionamento do painel RTU SCADA na SS2
- PSUAY-LZE-ELE-5210: Translate: Executar lançamento de cabo de alimentação do painel RTU SCADA na SS2
- PSUAY-LZE-ELE-5220: Translate: Executar preparação, ensaio e conectorização de cabos do painel RTU SCADA na SS2
- PSUAY-LZE-ELE-5230: Translate: Executar lançamento de cabos HV na SS2
- PSUAY-LZE-ELE-5240: Translate: Executar preparação e mufla dos cabos HV da SS2
- PSUAY-LZE-ELE-5250: Translate: Executar lançamento de cabos LV na SS2
- PSUAY-LZE-ELE-5260: Translate: Executar preparação e terminação dos cabos LV da SS2

| ID | WBS | Activity | Duration | Start | Finish | Predecessors | Complete | Remaining | Planned start | Planned finish | Total float | Free float | Calendar | Resources | ACTIVITY ID COD. | FASES DE ENTREGA | RESPONSÁVEL | ÁREAS | PHASES - YARD | Atualização |
| --- | --- | --- | --- | --- | --- | --- | --- | --- | --- | --- | --- | --- | --- | --- | --- | --- | --- | --- | --- | --- |
|  | 5 | **CONTROL CABLES** |  | 2026-02-10 | 2026-02-20 |  |  |  |  |  |  |  |  |  |  |  |  |  |  |  |
| PSUAY-LZE-ELE-5270 |  | Perform cable deployment on SS2 | 8d | 2026-02-10 | 2026-02-19 | PSUAY-LZE-ELE-5250 FS+4d |  |  |  |  | 41d | 0d | PSUAY - ELETROMEC - 1T - SEM HE | PROFIS [750.68 h]; MATERIAL - CABO COMANDO [1000 m] | PSUAY-LZE-ELE-5380 | ALFANDEGAMENTO | LUZVILLE | SS2 | CNT |  |
| PSUAY-LZE-ELE-5280 |  | Execute preparation and termination of SS2 Commands. | 5d | 2026-02-16 | 2026-02-20 | PSUAY-LZE-ELE-5270 FF+1d |  |  |  |  | 41d | 24d | PSUAY - ELETROMEC - 1T - SEM HE | PROFIS [495.45 h] | PSUAY-LZE-ELE-5390 | ALFANDEGAMENTO | LUZVILLE | SS2 | CNT |  |
|  | 2 | **GROUNDING** |  | 2025-12-17 | 2026-02-11 |  |  |  |  |  |  |  |  |  |  |  |  |  |  |  |
| PSUAY-LZE-ELE-5400 |  | Perform grounding of SS2 equipment. | 6d | 2025-12-17 A | 2026-02-11 | PSUAY-LZE-GER-5150, PSUAY-LZE-ELE-5250 | 40% | 6d | 2025-12-24 | 2026-01-06 | 48d | 31d | PSUAY - ELETROMEC - 1T - SEM HE | PROFIS [594.53 h] | PSUAY-LZE-ELE-5400 | ALFANDEGAMENTO | LUZVILLE | SS2 | CNT | OK |
|  | 4 | **COMMISSIONING AND STARTUP** |  | 2025-12-08 | 2026-02-11 |  |  |  |  |  |  |  |  |  |  |  |  |  |  |  |
|  | 1 | **EQUIPMENT** |  | 2025-12-08 | 2026-02-11 |  |  |  |  |  |  |  |  |  |  |  |  |  |  |  |
|  | 1 | **ELECTRICAL ROOM** |  | 2026-01-26 | 2026-02-11 |  |  |  |  |  |  |  |  |  |  |  |  |  |  |  |
| PSUAY-LZE-ELE-5410 |  | Perform tests and commissioning of the SS2 P2.1 panel. | 4d | 2026-01-26 | 2026-01-29 | PSUAY-MIL-GER-1260 |  |  |  |  | 47d | 0d | PSUAY - ELETROMEC - 1T - SEM HE | PROFIS [396.36 h] | PSUAY-LZE-ELE-5410 | ALFANDEGAMENTO | LUZVILLE | SS2 | CNT |  |
| PSUAY-LZE-ELE-5420 |  | Perform tests and commissioning of the SS2 P2.2 panel. | 3d | 2026-01-26 | 2026-01-28 | PSUAY-LZE-ELE-5410 SS |  |  |  |  | 47d | 0d | PSUAY - ELETROMEC - 1T - SEM HE | PROFIS [297.27 h] | PSUAY-LZE-ELE-5420 | ALFANDEGAMENTO | LUZVILLE | SS2 | CNT |  |
| PSUAY-LZE-ELE-5430 |  | Perform tests and commissioning of the auxiliary panels (P2.3, P2.4, P2.6, P2.7, P2.8, P2.9) of SS2 | 6d | 2026-01-29 | 2026-02-05 | PSUAY-LZE-ELE-5420 |  |  |  |  | 47d | 0d | PSUAY - ELETROMEC - 1T - SEM HE | PROFIS [594.53 h] | PSUAY-LZE-ELE-5430 | ALFANDEGAMENTO | LUZVILLE | SS2 | CNT |  |
| PSUAY-LZE-ELE-5440 |  | Perform testing and commissioning of the SS2 auxiliary panels (UPS). | 2d | 2026-02-06 | 2026-02-09 | PSUAY-LZE-ELE-5430 |  |  |  |  | 47d | 0d | PSUAY - ELETROMEC - 1T - SEM HE | PROFIS [198.18 h] | PSUAY-LZE-ELE-5440 | ALFANDEGAMENTO | LUZVILLE | SS2 | CNT |  |
| PSUAY-LZE-ELE-5450 |  | Perform testing and commissioning of Transformer 01 2000KVA of SS2 | 2d | 2026-02-06 | 2026-02-09 | PSUAY-LZE-ELE-5440 SS |  |  |  |  | 47d | 0d | PSUAY - ELETROMEC - 1T - SEM HE | PROFIS [198.18 h] | PSUAY-LZE-ELE-5450 | ALFANDEGAMENTO | LUZVILLE | SS2 | CNT |  |
| PSUAY-LZE-ELE-5350 |  | Perform testing and commissioning of Transformer 02 2000KVA of SS2 | 2d | 2026-02-10 | 2026-02-11 | PSUAY-LZE-ELE-5450 |  |  |  |  | 47d | 0d | PSUAY - ELETROMEC - 1T - SEM HE | PROFIS [198.18 h] | PSUAY-LZE-ELE-5460 | ALFANDEGAMENTO | LUZVILLE | SS2 | CNT |  |
| PSUAY-LZE-ELE-5360 |  | Perform testing and commissioning of Transformer 03 2000KVA of SS2 | 2d | 2026-02-10 | 2026-02-11 | PSUAY-LZE-ELE-5350 SS |  |  |  |  | 48d | 31d | PSUAY - ELETROMEC - 1T - SEM HE | PROFIS [198.18 h] | PSUAY-LZE-ELE-5470 | ALFANDEGAMENTO | LUZVILLE | SS2 | CNT |  |
|  | 2 | **CABLES** |  | 2025-12-08 | 2026-01-10 |  |  |  |  |  |  |  |  |  |  |  |  |  |  |  |
|  | 1 | **HV CABLES** |  | 2025-12-08 | 2026-01-10 |  |  |  |  |  |  |  |  |  |  |  |  |  |  |  |
| PSUAY-LZE-ELE-5480 |  | Perform testing and commissioning of SS2 medium voltage (VLF) cables. | 5d | 2025-12-08 A | 2025-12-13 A | PSUAY-LZE-ELE-5180, PSUAY-LZE-ELE-5240, PSUAY-LZE-ELE-5410 | 100% |  | 2026-01-09 | 2026-01-15 |  |  | PSUAY - ELETROMEC - 1T - SEM HE | PROFIS [1288.17 h] | PSUAY-LZE-ELE-5480 | ALFANDEGAMENTO | LUZVILLE | SS2 | CNT |  |
| PSUAY-LZE-ELE-5490 |  | Perform testing and commissioning of the SS2 medium voltage (VLF) cable connections. | 5d | 2026-01-09 A | 2026-01-10 A | PSUAY-LZE-ELE-5480 SS+3d | 100% |  | 2026-01-09 | 2026-01-15 |  |  | PSUAY - ELETROMEC - 1T - SEM HE | PROFIS [495.45 h] | PSUAY-LZE-ELE-5490 | ALFANDEGAMENTO | LUZVILLE | SS2 | CNT |  |
|  | 2 | **TECHNICAL VISIT** |  | 2025-12-08 | 2025-12-13 |  |  |  |  |  |  |  |  |  |  |  |  |  |  |  |
| PSUAY-LZE-ELE-5500 |  | Perform WEG SS2 rectifier maintenance. | 4d | 2025-12-08 A | 2025-12-13 A | PSUAY-LZE-ELE-5440 SS | 100% |  | 2026-01-16 | 2026-01-21 |  |  | PSUAY - ELETROMEC - 1T - SEM HE | PROFIS [396.36 h] | PSUAY-LZE-ELE-5500 | ALFANDEGAMENTO | LUZVILLE | SS2 | CNT |  |
|  | 5 | **ENERGIZATION** |  | 2026-02-12 | 2026-02-12 |  |  |  |  |  |  |  |  |  |  |  |  |  |  |  |
| PSUAY-LZE-GER-5510 |  | Release for SS2 energization. | 1d | 2026-02-12 | 2026-02-12 | PSUAY-LZE-ELE-5410, PSUAY-LZE-ELE-5420, PSUAY-LZE-ELE-5430, PSUAY-LZE-ELE-5440, PSUAY-LZE-ELE-5450, PSUAY-LZE-ELE-5350, PSUAY-LZE-ELE-5490, PSUAY-LZE-ELE-5500, PSUAY-LZE-ELE-5220 |  |  |  |  | 47d | 30d | PSUAY - ELETROMEC - 1T - SEM HE | PROFIS [99.09 h] | PSUAY-LZE-GER-5510 | ALFANDEGAMENTO | LUZVILLE | SS2 | ENG |  |
|  | 2 | **AREA PANELS** |  | 2026-01-26 | 2026-01-30 |  |  |  |  |  |  |  |  |  |  |  |  |  |  |  |
|  | 1 | **MILESTONES INPUT - OUTPUT** |  | 2026-01-30 | 2026-01-30 |  |  |  |  |  |  |  |  |  |  |  |  |  |  |  |
| PSUAY-LZE-GER-5540 |  | Perform energization of the MFO Building (DC1) - HTB | 0d | 2026-01-30 | 2026-01-30 | PSUAY-LZE-ELE-5560 |  |  |  |  | 57d | 40d | PSUAY - ELETROMEC - 1T - SEM HE | PROFIS | PSUAY-LZE-GER-5540 | MILESTONES | HTB | SS2 | ENG |  |
| PSUAY-LZE-GER-5550 |  | Perform energizing the Workshop (DC2) - HTB | 0d | 2026-01-30 | 2026-01-30 | PSUAY-LZE-GER-5590 |  |  |  |  | 57d | 40d | PSUAY - ELETROMEC - 1T - SEM HE | PROFIS | PSUAY-LZE-GER-5550 | MILESTONES | HTB | SS2 | ENG |  |

Notes:
- PSUAY-LZE-ELE-5270: Translate: Executar lançamento de cabos Comando na SS2
- PSUAY-LZE-ELE-5280: Translate: Executar preparação e terminação dos Comando da SS2
- PSUAY-LZE-ELE-5400: Translate: Executar aterramento dos equipamentos da SS2
- PSUAY-LZE-ELE-5410: Translate: Executar testes e comissionamento do painel P2.1 do SS2
- PSUAY-LZE-ELE-5420: Translate: Executar testes e comissionamento do painel P2.2 do SS2
- PSUAY-LZE-ELE-5430: Translate: Executar testes e comissionamento do paineis auxiliáres (P2.3, P2.4, P2.6, P2.7, P2.8, P2.9) do SS2
- PSUAY-LZE-ELE-5440: Translate: Executar testes e comissionamento do paineis auxiliáres (UPS) do SS2
- PSUAY-LZE-ELE-5450: Translate: Executar testes e comissionamento do Transformador 01 2000KVA do SS2
- PSUAY-LZE-ELE-5350: Translate: Executar testes e comissionamento do Transformador 02 2000KVA do SS2
- PSUAY-LZE-ELE-5360: Translate: Executar testes e comissionamento do Transformador 03 2000KVA do SS2
- PSUAY-LZE-ELE-5480: Translate: Executar testes e comissionamento dos cabos média tensão (VLF) do SS2
- PSUAY-LZE-ELE-5490: Translate: Executar testes e comissionamento das conexões dos cabos média tensão (VLF) do SS2
- PSUAY-LZE-ELE-5500: Translate: Executar retificadores WEG da SS2
- PSUAY-LZE-GER-5510: Translate: Liberar para energização da SS2
- PSUAY-LZE-GER-5540: Translate: Realizar energização do MFO Building (DC1) - HTB
- PSUAY-LZE-GER-5550: Translate: Realizar energização do Workshop (DC2) - HTB

| ID | WBS | Activity | Duration | Start | Finish | Predecessors | Complete | Remaining | Planned start | Planned finish | Total float | Free float | Calendar | Resources | Translate | ACTIVITY ID COD. | FASES DE ENTREGA | RESPONSÁVEL | ÁREAS | PHASES - YARD |
| --- | --- | --- | --- | --- | --- | --- | --- | --- | --- | --- | --- | --- | --- | --- | --- | --- | --- | --- | --- | --- |
|  | 2 | **MFO BUILDING COMMUNICATION RACK (DC1)** |  | 2026-01-26 | 2026-01-30 |  |  |  |  |  |  |  |  |  |  |  |  |  |  |  |
| PSUAY-LZE-GER-5570 |  | Perform panel placement in MFO Building (DC1) | 4d | 2026-01-26 | 2026-01-29 | PSUAY-LZE-GER-5520 |  |  |  |  | 47d | 0d | PSUAY - ELETROMEC - 1T - SEM HE | PROFIS [396.36 h] | Executar posicionamento do painel no MFO Building (DC1) | PSUAY-LZE-GER-5570 | MILESTONES | LUZVILLE | SS2 | CNT |
| PSUAY-LZE-ELE-5560 |  | Release for panel energization (DC1) - HTB | 0d | 2026-01-30 | 2026-01-30 | PSUAY-LZE-GER-5570 |  |  |  |  | 57d | 0d | PSUAY - ELETROMEC - 1T - SEM HE | PROFIS | Liberar para energização do painel (DC1) - HTB | PSUAY-LZE-ELE-5560 | MILESTONES | HTB | SS2 | ENG |
|  | 3 | **COMMUNICATION RACK WORKSHOP (DC2)** |  | 2026-01-26 | 2026-01-30 |  |  |  |  |  |  |  |  |  |  |  |  |  |  |  |
| PSUAY-LZE-ELE-5580 |  | Perform panel placement in the Workshop (DC2) | 4d | 2026-01-26 | 2026-01-29 | PSUAY-LZE-GER-5530 |  |  |  |  | 47d | 0d | PSUAY - ELETROMEC - 1T - SEM HE | PROFIS [396.36 h] | Executar posicionamento do painel no Workshop (DC2) | PSUAY-LZE-ELE-5580 | MILESTONES | LUZVILLE | SS2 | CNT |
| PSUAY-LZE-GER-5590 |  | Release for panel energization (DC2) - HTB | 0d | 2026-01-30 | 2026-01-30 | PSUAY-LZE-ELE-5580 |  |  |  |  | 57d | 0d | PSUAY - ELETROMEC - 1T - SEM HE | PROFIS | Liberar para energização do painel (DC2) - HTB | PSUAY-LZE-GER-5590 | MILESTONES | HTB | SS2 | ENG |
|  | 3 | **YARD 7 LINE** |  | 2025-11-17 | 2026-02-25 |  |  |  |  |  |  |  |  |  |  |  |  |  |  |  |
|  | 1 | **FENCING** |  | 2025-12-03 | 2026-02-25 |  |  |  |  |  |  |  |  |  |  |  |  |  |  |  |
|  | 3 | **CIVIL (FOUNDATION BEAM)** |  | 2025-12-03 | 2026-01-28 |  |  |  |  |  |  |  |  |  |  |  |  |  |  |  |
| PSUAY-CAG-CIV-5600 |  | Construct foundation beam for fence installation in Yard 7' | 13d | 2025-12-03 A | 2026-01-28 | PSUAY-CAG-CIV-5730 SS+2d | 77% | 3d | 2025-12-03 | 2025-12-19 | 11d | 0d |  | PROFIS [25424.5 h] | Executar viga baldrame para instalação das cercas no Yard 7' | PSUAY-CAG-CIV-5600 | ALFANDEGAMENTO | CONSAG | YARD 7 LINE | CNT |
|  | 1 | **FENCE** |  | 2026-01-05 | 2026-02-24 |  |  |  |  |  |  |  |  |  |  |  |  |  |  |  |
| PSUAY-LGT-INF-5610 |  | Execute Yard 7' fences | 19d | 2026-01-05 A | 2026-02-24 | PSUAY-CAG-CIV-5600 | 10% | 19d | 2026-01-15 | 2026-02-10 | 38d | 0d |  | PROFIS [100483 h]; MATERIAL - CERCA [1176 m] | Executar cercas do Yard 7' | PSUAY-LGT-INF-5610 | ALFANDEGAMENTO | LAGOTELA | YARD 7 LINE | CNT |
|  | 2 | **GATE** |  | 2026-02-25 | 2026-02-25 |  |  |  |  |  |  |  |  |  |  |  |  |  |  |  |
| PSUAY-LGT-INF-5620 |  | Execute gate of Yard 7' | 1d | 2026-02-25 | 2026-02-25 | PSUAY-LGT-INF-5610 |  |  |  |  | 38d | 21d |  | PROFIS [540.49 h] | Executar portão do Yard 7' | PSUAY-LGT-INF-5620 | ALFANDEGAMENTO | LAGOTELA | YARD 7 LINE | CNT |
|  | 3 | **CONCRETE WALL** |  | 2025-12-08 | 2026-02-24 |  |  |  |  |  |  |  |  |  |  |  |  |  |  |  |
|  | 2 | **WALL - SECTION 01** |  | 2025-12-08 | 2026-01-30 |  |  |  |  |  |  |  |  |  |  |  |  |  |  |  |
|  | 1 | **EXCAVATION/CRADLE** |  | 2025-12-08 | 2025-12-10 |  |  |  |  |  |  |  |  |  |  |  |  |  |  |  |
| PSUAY-CAG-INF-5630 |  | Perform excavation and bed construction for Yard 7' walls - Section 01 | 1d | 2025-12-08 A | 2025-12-10 A | PSUAY-CAG-CIV-5600 SS+5d | 100% |  | 2025-12-10 | 2025-12-10 |  |  |  | PROFIS [1410.67 h] | Executar escavação e berços dos muros do Yard 7' - Trecho 01 | PSUAY-CAG-INF-5630 | ALFANDEGAMENTO | CONSAG | YARD 7 LINE | CNT |
|  | 10 | **STRUCTURE (PRENORTE)** |  | 2025-12-15 | 2026-01-30 |  |  |  |  |  |  |  |  |  |  |  |  |  |  |  |
| PSUAY-PNT-CIV-5640 |  | Construct the wall structure for Yard 7' - Section 01 | 5d | 2025-12-15 A | 2026-01-30 | PSUAY-CAG-INF-5630, PSUAY-CAG-INF-5600 SS | 80% | 2d | 2025-12-19 | 2025-12-29 | 11d | 0d |  | PROFIS [8707.83 h] | Executar estrutura dos muros do Yard 7' - Trecho 01 | PSUAY-PNT-CIV-5640 | ALFANDEGAMENTO | PRÉ-NORTE | YARD 7 LINE | CNT |
|  | 5 | **WALL - SECTION 02** |  | 2025-12-08 | 2026-02-06 |  |  |  |  |  |  |  |  |  |  |  |  |  |  |  |
|  | 1 | **EXCAVATION/CRADLE** |  | 2025-12-08 | 2026-01-26 |  |  |  |  |  |  |  |  |  |  |  |  |  |  |  |
| PSUAY-CAG-INF-5650 |  | Perform excavation and foundation work for the Yard 7 walls - Section 02 | 1d | 2025-12-08 A | 2026-01-26 | PSUAY-CAG-INF-5630 | 35% | 1d | 2025-12-11 | 2025-12-11 | 11d | 0d |  | PROFIS [1410.67 h] | Executar escavação e berços dos muros do Yard 7' - Trecho 02 | PSUAY-CAG-INF-5650 | ALFANDEGAMENTO | CONSAG | YARD 7 LINE | CNT |
|  | 10 | **STRUCTURE (PRENORTE)** |  | 2026-02-02 | 2026-02-06 |  |  |  |  |  |  |  |  |  |  |  |  |  |  |  |
| PSUAY-PNT-CIV-5660 |  | Construct the wall structure for Yard 7' - Section 02 | 5d | 2026-02-02 | 2026-02-06 | PSUAY-PNT-CIV-5640 |  |  |  |  | 11d | 0d |  | PROFIS [8707.83 h] | Executar estrutura dos muros do Yard 7' - Trecho 02 | PSUAY-PNT-CIV-5660 | ALFANDEGAMENTO | PRÉ-NORTE | YARD 7 LINE | CNT |

| ID | WBS | Activity | Duration | Start | Finish | Predecessors | Complete | Remaining | Planned start | Planned finish | Total float | Free float | Calendar | Resources | Translate | ACTIVITY ID COD. | FASES DE ENTREGA | RESPONSÁVEL | ÁREAS | PHASES - YARD | Atualização |
| --- | --- | --- | --- | --- | --- | --- | --- | --- | --- | --- | --- | --- | --- | --- | --- | --- | --- | --- | --- | --- | --- |
|  | 6 | **WALL - SECTION 03** |  | 2026-01-26 | 2026-02-12 |  |  |  |  |  |  |  |  |  |  |  |  |  |  |  |  |
|  | 1 | **EXCAVATION/CRADLE** |  | 2026-01-27 | 2026-01-27 |  |  |  |  |  |  |  |  |  |  |  |  |  |  |  |  |
| PSUAY-CAG-INF-5560 |  | Perform excavation and foundation work for the Yard 7 walls - Section 03 | 1d | 2026-01-27 | 2026-01-27 | PSUAY-CAG-INF-5650 |  |  |  |  | 11d | 0d |  | PROFIS [1410.67 h] | Executar escavação e berços dos muros do Yard 7' - Trecho 03 | PSUAY-CAG-INF-5670 | ALFANDEGAMENTO | CONSAG | YARD 7 LINE | CNT |  |
|  | 10 | **STRUCTURE (PRENORTE)** |  | 2026-01-26 | 2026-02-12 |  |  |  |  |  |  |  |  |  |  |  |  |  |  |  |  |
| PSUAY-PNT-CIV-5680 |  | Construct the wall structure for Yard 7' - Section 03 | 4d | 2026-01-26 A | 2026-02-12 | PSUAY-PNT-CIV-5660 | 30% | 4d | 2026-01-26 | 2026-01-29 | 11d | 0d |  | PROFIS [8707.83 h] | Executar estrutura dos muros do Yard 7' - Trecho 03 | PSUAY-PNT-CIV-5680 | ALFANDEGAMENTO | PRÉ-NORTE | YARD 7 LINE | CNT |  |
|  | 7 | **WALL - SECTION 04** |  | 2026-01-05 | 2026-02-18 |  |  |  |  |  |  |  |  |  |  |  |  |  |  |  |  |
|  | 1 | **EXCAVATION/CRADLE** |  | 2026-01-05 | 2026-01-28 |  |  |  |  |  |  |  |  |  |  |  |  |  |  |  |  |
| PSUAY-CAG-INF-5580 |  | Perform excavation and foundation work for the Yard 7 walls - Section 04 | 1d | 2026-01-05 A | 2026-01-28 | PSUAY-CAG-INF-5560 | 30% | 1d | 2026-01-14 | 2026-01-14 | 11d | 0d |  | PROFIS [1410.67 h] | Executar escavação e berços dos muros do Yard 7' - Trecho 04 | PSUAY-CAG-INF-5690 | ALFANDEGAMENTO | CONSAG | YARD 7 LINE | CNT |  |
|  | 10 | **STRUCTURE (PRENORTE)** |  | 2026-01-05 | 2026-02-18 |  |  |  |  |  |  |  |  |  |  |  |  |  |  |  |  |
| PSUAY-PNT-CIV-5700 |  | Construct the wall structure for Yard 7' - Section 04 | 4d | 2026-01-05 A | 2026-02-18 | PSUAY-PNT-CIV-5680 | 30% | 4d | 2026-01-30 | 2026-02-04 | 11d | 0d |  | PROFIS [8707.83 h] | Executar estrutura dos muros do Yard 7' - Trecho 04 | PSUAY-PNT-CIV-5700 | ALFANDEGAMENTO | PRÉ-NORTE | YARD 7 LINE | CNT |  |
|  | 8 | **WALL - SECTION 05** |  | 2026-01-29 | 2026-02-24 |  |  |  |  |  |  |  |  |  |  |  |  |  |  |  |  |
|  | 1 | **EXCAVATION/CRADLE** |  | 2026-01-29 | 2026-01-29 |  |  |  |  |  |  |  |  |  |  |  |  |  |  |  |  |
| PSUAY-CAG-INF-5600 |  | Perform excavation and foundation work for the Yard 7 walls - Section 05 | 1d | 2026-01-29 | 2026-01-29 | PSUAY-CAG-INF-5580 |  |  |  |  | 11d | 0d |  | PROFIS [1410.67 h] | Executar escavação e berços dos muros do Yard 7' - Trecho 05 | PSUAY-CAG-INF-5710 | ALFANDEGAMENTO | CONSAG | YARD 7 LINE | CNT |  |
|  | 10 | **STRUCTURE (PRENORTE)** |  | 2026-02-19 | 2026-02-24 |  |  |  |  |  |  |  |  |  |  |  |  |  |  |  |  |
| PSUAY-PNT-CIV-5720 |  | Construct the wall structure for Yard 7' - Section 05 | 4d | 2026-02-19 | 2026-02-24 | PSUAY-PNT-CIV-5700 |  |  |  |  | 11d | 0d |  | PROFIS [8707.83 h] | Executar estrutura dos muros do Yard 7' - Trecho 05 | PSUAY-PNT-CIV-5720 | ALFANDEGAMENTO | PRÉ-NORTE | YARD 7 LINE | CNT |  |
|  | 4 | **CT POSTS** |  | 2025-11-17 | 2026-02-16 |  |  |  |  |  |  |  |  |  |  |  |  |  |  |  |  |
|  | 2 | **CIVIL** |  | 2025-11-17 | 2026-02-02 |  |  |  |  |  |  |  |  |  |  |  |  |  |  |  |  |
| PSUAY-CAG-CIV-5730 |  | Construct civil foundations for the CT poles of Yard 7' | 27d | 2025-11-17 A | 2026-02-02 | PSUAY-MIL-GER-1450 FS+12d | 78% | 6d | 2025-12-01 | 2026-01-12 | 11d | 0d |  | PROFIS [219573 h] | Executar bases civis dos postes CT do Yard 7' | PSUAY-CAG-CIV-5730 | ALFANDEGAMENTO | CONSAG | YARD 7 LINE | CNT |  |
|  | 3 | **ELECTRICAL (LUZVILLE)** |  | 2025-11-24 | 2026-02-13 |  |  |  |  |  |  |  |  |  |  |  |  |  |  |  |  |
| PSUAY-LZE-ELE-5740 |  | CT-J01-02 | 1d | 2025-11-24 A | 2025-11-24 A | PSUAY-CAG-CIV-5730 SS+14d | 100% |  | 2025-12-22 | 2025-12-22 |  |  | PSUAY - ELETROMEC - 1T - SEM HE | PROFIS [1798 h]; POST CCTV [38 un] | Executar montagem dos postes CT do Yard 7' | PSUAY-LZE-ELE-5740 | ALFANDEGAMENTO | LUZVILLE | YARD 7 LINE | CNT |  |
| PSUAY-LZE-ELE-7010 |  | CT-J02-01 | 1d | 2025-11-25 A | 2025-11-25 A | PSUAY-LZE-ELE-5740 | 100% |  | 2025-12-08 | 2025-12-08 |  |  |  |  |  |  | ALFANDEGAMENTO | LUZVILLE |  | CNT |  |
| PSUAY-LZE-ELE-7020 |  | CT-J02-02 | 1d | 2025-12-01 A | 2025-12-02 A | PSUAY-LZE-ELE-7010 | 100% |  | 2025-12-08 | 2025-12-08 |  |  |  |  |  |  | ALFANDEGAMENTO | LUZVILLE |  | CNT |  |
| PSUAY-LZE-ELE-7030 |  | CT-J03-01 | 1d | 2025-12-02 A | 2025-12-03 A | PSUAY-LZE-ELE-7020 | 100% |  | 2025-12-08 | 2025-12-08 |  |  |  |  |  |  | ALFANDEGAMENTO | LUZVILLE |  | CNT |  |
| PSUAY-LZE-ELE-7040 |  | CT-J03-02 | 1d | 2025-12-03 A | 2025-12-04 A | PSUAY-LZE-ELE-7030 | 100% |  | 2025-12-08 | 2025-12-08 |  |  |  |  |  |  | ALFANDEGAMENTO | LUZVILLE |  | CNT |  |
| PSUAY-LZE-ELE-7050 |  | CT-J04-01 | 1d | 2025-12-04 A | 2025-12-05 A | PSUAY-LZE-ELE-7040 | 100% |  | 2025-12-08 | 2025-12-08 |  |  |  |  |  |  | ALFANDEGAMENTO | LUZVILLE |  | CNT |  |
| PSUAY-LZE-ELE-7060 |  | CT-J04-02 | 1d | 2025-12-05 A | 2025-12-06 A | PSUAY-LZE-ELE-7050 | 100% |  | 2025-12-08 | 2025-12-08 |  |  |  |  |  |  | ALFANDEGAMENTO | LUZVILLE |  | CNT |  |
| PSUAY-LZE-ELE-7110 |  | CT-E01-01 | 1d | 2025-12-15 A | 2025-12-15 A | PSUAY-LZE-ELE-7060 FS+5d | 100% |  |  |  |  |  |  |  |  |  | ALFANDEGAMENTO | LUZVILLE |  | CNT |  |
| PSUAY-LZE-ELE-7120 |  | CT-E02-01 | 1d | 2025-12-16 A | 2025-12-16 A | PSUAY-LZE-ELE-7110 | 100% |  |  |  |  |  |  |  |  |  | ALFANDEGAMENTO | LUZVILLE |  | CNT |  |
| PSUAY-LZE-ELE-7130 |  | CT-E03-01 | 1d | 2025-12-17 A | 2025-12-17 A | PSUAY-LZE-ELE-7120 | 100% |  |  |  |  |  |  |  |  |  | ALFANDEGAMENTO | LUZVILLE |  | CNT |  |
| PSUAY-LZE-ELE-7140 |  | CT-E04-01 | 1d | 2025-12-18 A | 2025-12-18 A | PSUAY-LZE-ELE-7130 | 100% |  |  |  |  |  |  |  |  |  | ALFANDEGAMENTO | LUZVILLE |  | CNT |  |
| PSUAY-LZE-ELE-7150 |  | CT-F04-01 | 1d | 2025-12-19 A | 2025-12-19 A | PSUAY-LZE-ELE-7140 | 100% |  |  |  |  |  |  |  |  |  | ALFANDEGAMENTO | LUZVILLE |  | CNT |  |
| PSUAY-LZE-ELE-7100 |  | CT-D01-02 | 1d | 2026-01-05 A | 2026-01-05 A | PSUAY-LZE-ELE-7140 | 100% |  |  |  |  |  |  |  |  |  | ALFANDEGAMENTO | LUZVILLE |  | CNT |  |
| PSUAY-LZE-ELE-7300 |  | CT-M07-01 | 1d | 2026-01-05 A | 2026-01-06 A | PSUAY-LZE-ELE-7330 | 100% |  | 2026-01-30 | 2026-01-30 |  |  |  |  |  |  | ALFANDEGAMENTO | LUZVILLE |  | CNT |  |
| PSUAY-LZE-ELE-7170 |  | CT-J05-01 | 1d | 2026-01-19 A | 2026-01-24 A | PSUAY-LZE-ELE-7210 | 100% |  | 2026-02-09 | 2026-02-09 |  |  |  |  |  |  | ALFANDEGAMENTO | LUZVILLE |  | CNT | OK |
| PSUAY-LZE-ELE-7240 |  | CT-L06-01 | 1d | 2026-01-19 A | 2026-01-24 A | PSUAY-LZE-ELE-7250 | 100% |  | 2026-02-04 | 2026-02-04 |  |  |  |  |  |  | ALFANDEGAMENTO | LUZVILLE |  | CNT | OK |
| PSUAY-LZE-ELE-7250 |  | CT-L07-01 | 1d | 2026-01-19 A | 2026-01-24 A | PSUAY-LZE-ELE-7260 | 100% |  | 2026-02-03 | 2026-02-03 |  |  |  |  |  |  | ALFANDEGAMENTO | LUZVILLE |  | CNT | OK |
| PSUAY-LZE-ELE-7260 |  | CT-L08-01 | 1d | 2026-01-19 A | 2026-01-24 A | PSUAY-LZE-ELE-7290 | 100% |  | 2026-02-02 | 2026-02-02 |  |  |  |  |  |  | ALFANDEGAMENTO | LUZVILLE |  | CNT | OK |
| PSUAY-LZE-ELE-7290 |  | CT-L09-03 | 1d | 2026-01-19 A | 2026-01-24 A | PSUAY-LZE-ELE-7280 | 100% |  | 2026-01-30 | 2026-01-30 |  |  |  |  |  |  | ALFANDEGAMENTO | LUZVILLE |  | CNT | OK |
| PSUAY-LZE-ELE-7160 |  | CT-F06-01 | 1d | 2026-01-26 | 2026-01-26 | PSUAY-LZE-ELE-7150 |  |  |  |  | 14d | 0d |  |  |  |  | ALFANDEGAMENTO | LUZVILLE |  | CNT |  |
| PSUAY-LZE-ELE-7070 |  | CT-H09-02 | 1d | 2026-01-27 | 2026-01-27 | PSUAY-LZE-ELE-7160 |  |  |  |  | 14d | 0d |  |  |  |  | ALFANDEGAMENTO | LUZVILLE |  | CNT |  |
| PSUAY-LZE-ELE-7080 |  | CT-H10-01 | 1d | 2026-01-28 | 2026-01-28 | PSUAY-LZE-ELE-7070 |  |  |  |  | 14d | 0d |  |  |  |  | ALFANDEGAMENTO | LUZVILLE |  | CNT |  |
| PSUAY-LZE-ELE-7200 |  | CT-J10-01 | 1d | 2026-01-29 | 2026-01-29 | PSUAY-LZE-ELE-7080 |  |  |  |  | 14d | 0d |  |  |  |  | ALFANDEGAMENTO | LUZVILLE |  | CNT |  |
| PSUAY-LZE-ELE-7190 |  | CT-J09-01 | 1d | 2026-01-30 | 2026-01-30 | PSUAY-LZE-ELE-7200 |  |  |  |  | 14d | 0d |  |  |  |  | ALFANDEGAMENTO | LUZVILLE |  | CNT |  |
| PSUAY-LZE-ELE-7230 |  | CT-K09-01 | 1d | 2026-02-02 | 2026-02-02 | PSUAY-LZE-ELE-7190 |  |  |  |  | 14d | 0d |  |  |  |  | ALFANDEGAMENTO | LUZVILLE |  | CNT |  |
| PSUAY-LZE-ELE-7320 |  | CT-K09-02 | 1d | 2026-02-03 | 2026-02-03 | PSUAY-LZE-ELE-7230 |  |  |  |  | 14d | 0d |  |  |  |  | ALFANDEGAMENTO | LUZVILLE |  | CNT |  |
| PSUAY-LZE-ELE-7270 |  | CT-L09-01 | 1d | 2026-02-04 | 2026-02-04 | PSUAY-LZE-ELE-7320 |  |  |  |  | 14d | 0d |  |  |  |  | ALFANDEGAMENTO | LUZVILLE |  | CNT |  |
| PSUAY-LZE-ELE-7280 |  | CT-L09-02 | 1d | 2026-02-05 | 2026-02-05 | PSUAY-LZE-ELE-7270 |  |  |  |  | 14d | 0d |  |  |  |  | ALFANDEGAMENTO | LUZVILLE |  | CNT |  |
| PSUAY-LZE-ELE-7220 |  | CT-K06-02 | 1d | 2026-02-06 | 2026-02-06 | PSUAY-LZE-ELE-7240 |  |  |  |  | 14d | 0d |  |  |  |  | ALFANDEGAMENTO | LUZVILLE |  | CNT |  |
| PSUAY-LZE-ELE-7210 |  | CT-K06-01 | 1d | 2026-02-09 | 2026-02-09 | PSUAY-LZE-ELE-7220 |  |  |  |  | 14d | 0d |  |  |  |  | ALFANDEGAMENTO | LUZVILLE |  | CNT |  |
| PSUAY-LZE-ELE-7180 |  | CT-J06-01 | 1d | 2026-02-10 | 2026-02-10 | PSUAY-LZE-ELE-7170 |  |  |  |  | 14d | 0d |  |  |  |  | ALFANDEGAMENTO | LUZVILLE |  | CNT |  |
| PSUAY-LZE-ELE-7090 |  | CT-J01-01 | 1d | 2026-02-11 | 2026-02-11 | PSUAY-LZE-ELE-7180 |  |  |  |  | 14d | 0d |  |  |  |  | ALFANDEGAMENTO | LUZVILLE |  | CNT |  |
| PSUAY-LZE-ELE-7330 |  | CT-J10-01 | 1d | 2026-02-12 | 2026-02-12 | PSUAY-LZE-ELE-7090 |  |  |  |  | 46d | 0d |  |  |  |  | ALFANDEGAMENTO | LUZVILLE |  | CNT |  |
| PSUAY-LZE-ELE-7310 |  | CT-M08-01 | 1d | 2026-02-13 | 2026-02-13 | PSUAY-LZE-ELE-7300 |  |  |  |  | 46d | 0d |  |  |  |  | ALFANDEGAMENTO | LUZVILLE |  | CNT |  |

Notes:
- PSUAY-LZE-ELE-5740: Planners Notes: Total = 39 unidades / Realizado = 6 unidades / Avanço = 15%

| ID | WBS | Activity | Duration | Start | Finish | Predecessors | Complete | Planned start | Planned finish | Total float | Free float | Calendar | Resources | ACTIVITY ID COD. | FASES DE ENTREGA | RESPONSÁVEL | ÁREAS | PHASES - YARD | SERVIÇOS |
| --- | --- | --- | --- | --- | --- | --- | --- | --- | --- | --- | --- | --- | --- | --- | --- | --- | --- | --- | --- |
|  | 1 | **CAMERAS (G4S)** |  | 2026-02-16 | 2026-02-16 |  |  |  |  |  |  |  |  |  |  |  |  |  |  |
| PSUAY-G4S-GER-5750 |  | Release for installation of the Yard 7 CCTV system cameras. | 0d | 2026-02-16 | 2026-02-16 | PSUAY-LZE-ELE-5740, PSUAY-LZE-ELE-7310 |  |  |  | 46d | 29d | PSUAY - ELETROMEC - 1T - SEM HE | PROFIS | PSUAY-G4S-GER-5750 | ALFANDEGAMENTO | G4S | YARD 7 LINE | CNT |  |
|  | 2 | **PACKAGE - CONCLUSION** |  | 2025-11-10 | 2026-04-20 |  |  |  |  |  |  |  |  |  |  |  |  |  |  |
|  | 1 | **FW1** |  | 2025-12-08 | 2026-03-09 |  |  |  |  |  |  |  |  |  |  |  |  |  |  |
|  | 7 | **PAVEMENT** |  | 2026-02-16 | 2026-02-20 |  |  |  |  |  |  |  |  |  |  |  |  |  |  |
|  | 1 | **PAVEMENT - TYPE 08 (LANDSCAPING)** |  | 2026-02-16 | 2026-02-20 |  |  |  |  |  |  |  |  |  |  |  |  |  |  |
|  | 2 | **TOPSOIL** |  | 2026-02-16 | 2026-02-17 |  |  |  |  |  |  |  |  |  |  |  |  |  |  |
| PSUAY-CAG-INF-5660 |  | Execute topsoil layer of type 08 pavement in FW1 | 2d | 2026-02-16 | 2026-02-17 | PSUAY-CAG-INF-5870 |  |  |  | 40d | 0d |  | PROFIS [2026.82 h] | PSUAY-CAG-INF-5760 | CONCLUSÃO | CONSAG | FW1 | CNT |  |
|  | 3 | **GRASS/VEGETATION** |  | 2026-02-18 | 2026-02-20 |  |  |  |  |  |  |  |  |  |  |  |  |  |  |
| PSUAY-CAG-INF-5670 |  | Execute grass/vegetation of type 08 pavement in FW1 | 3d | 2026-02-18 | 2026-02-20 | PSUAY-CAG-INF-5660 |  |  |  | 40d | 0d |  | PROFIS [27024.3 h] | PSUAY-CAG-INF-5770 | CONCLUSÃO | CONSAG | FW1 | CNT |  |
|  | 3 | **TOWERS** |  | 2025-12-08 | 2026-03-09 |  |  |  |  |  |  |  |  |  |  |  |  |  |  |
|  | 1 | **HIGH MAST HM-D01-01** |  | 2025-12-08 | 2026-03-09 |  |  |  |  |  |  |  |  |  |  |  |  |  |  |
|  | 1 | **CIVIL** |  | 2025-12-08 | 2026-01-03 |  |  |  |  |  |  |  |  |  |  |  |  |  |  |
| PSUAY-CAG-CIV-5780 |  | Execute steel for the civil base of the HM-D01-01 in FW1 | 4d | 2025-12-08 A | 2025-12-10 A | PSUAY-CAG-CIV-6220 | 100% | 2025-12-22 | 2025-12-29 |  |  |  | PROFIS [62948.5 h] | PSUAY-CAG-CIV-5780 | CONCLUSÃO | CONSAG | FW1 | CNT | HM-CIV |
| PSUAY-CAG-CIV-5790 |  | Execute the formwork for the civil base of the HM-D01-01 in FW1. | 1d | 2025-12-10 A | 2026-01-03 A | PSUAY-CAG-CIV-5780 | 100% | 2025-12-30 | 2025-12-30 |  |  |  | PROFIS [9777.4 h] | PSUAY-CAG-CIV-5790 | CONCLUSÃO | CONSAG | FW1 | CNT | HM-CIV |
| PSUAY-CAG-CIV-5800 |  | Execute concrete for the civil foundations of the HM-D01-01 of FW1. | 1d | 2025-12-19 A | 2026-01-03 A | PSUAY-CAG-CIV-5790 | 100% | 2026-01-05 | 2026-01-05 |  |  |  | PROFIS [595.15 h] | PSUAY-CAG-CIV-5800 | CONCLUSÃO | CONSAG | FW1 | CNT | HM-CIV |
| PSUAY-CAG-CIV-5810 |  | Execute HM-D01-01 panels foundation in FW1 | 2d | 2026-01-01 A | 2026-01-03 A | PSUAY-CAG-CIV-5800 | 100% | 2026-01-05 | 2026-01-06 |  |  |  | PROFIS [2420.93 h] | PSUAY-CAG-CIV-5810 | CONCLUSÃO | CONSAG | FW1 | CNT |  |
|  | 3 | **ASSEMBLY (LUZVILLE)** |  | 2026-02-26 | 2026-03-05 |  |  |  |  |  |  |  |  |  |  |  |  |  |  |
| PSUAY-LZE-ELE-5820 |  | Perform the assembly of the HM-D01-01 in FW1. | 6d | 2026-02-26 | 2026-03-05 | PSUAY-LZE-ELE-6250, PSUAY-CAG-CIV-5810 |  |  |  | 34.81d | 0d | PSUAY - ELETROMEC - 1T - HE SAB | PROFIS [70263.2 h]; POST HIGH MAST [1 un] | PSUAY-LZE-ELE-5820 | CONCLUSÃO | LUZVILLE | FW1 | CNT | HM-ASSEM |
|  | 2 | **ENERGIZATION (LUZVILLE)** |  | 2026-02-25 | 2026-03-09 |  |  |  |  |  |  |  |  |  |  |  |  |  |  |
| PSUAY-G4S-ELE-5830 |  | Execute cable pulling and energization of the HM type poles of FW1 | 8d | 2026-02-25 | 2026-03-09 | PSUAY-LZE-ELE-5820 FF+2d |  |  |  | 31d |  |  | PROFIS [4849.36 h]; CABLE LOW VOLTAGE [1292 m] | PSUAY-G4S-ELE-5830 | CONCLUSÃO | LUZVILLE | FW1 | CNT | HM-ENERG |
|  | 9 | **SIGNS** |  | 2026-02-23 | 2026-02-23 |  |  |  |  |  |  |  |  |  |  |  |  |  |  |
|  | 1 | **INSTALLATION TRAFFIC SIGNS** |  | 2026-02-23 | 2026-02-23 |  |  |  |  |  |  |  |  |  |  |  |  |  |  |
| PSUAY-CAG-INF-5840 |  | Execute traffic signs in FW1 | 1d | 2026-02-23 | 2026-02-23 | PSUAY-CAG-INF-5670 |  |  |  | 40d |  |  | PROFIS [400.86 h] | PSUAY-CAG-INF-5840 | CONCLUSÃO | CONSAG | FW1 | CNT |  |

Notes:
- PSUAY-G4S-GER-5750: Translate: Liberar para instalação das cameras do sistema de CFTV do Yard 7'
- PSUAY-CAG-INF-5660: Translate: Executar camada superficial de solo do pavimento do tipo 08 em FW1
- PSUAY-CAG-INF-5670: Translate: Executar grama/vegetação do tipo 08 no FW1
- PSUAY-CAG-CIV-5780: Translate: Executar aço da base civil dos postes tipo HM do FW1
- PSUAY-CAG-CIV-5790: Translate: Executar forma da base civil dos postes tipo HM do FW1
- PSUAY-CAG-CIV-5800: Translate: Executar concreto da bases civis dos postes tipo HM do FW1
- PSUAY-CAG-CIV-5810: Translate: Executar painéis da fundação do Poste de mastro alto - HM-D01-01 no FW1
- PSUAY-LZE-ELE-5820: Translate: Executar a montagem dos postes tipo HM do FW1
- PSUAY-G4S-ELE-5830: Translate: Executar a energização dos postes tipo HM do FW1
- PSUAY-CAG-INF-5840: Translate: Executar placas de trânsito no FW1

| ID | WBS | Activity | Duration | Start | Finish | Predecessors | Complete | Remaining | Planned start | Planned finish | Total float | Free float | Resources | Translate | Check Pred | ACTIVITY ID COD. | FASES DE ENTREGA | RESPONSÁVEL | ÁREAS | PHASES - YARD | Atualização | SERVIÇOS |
| --- | --- | --- | --- | --- | --- | --- | --- | --- | --- | --- | --- | --- | --- | --- | --- | --- | --- | --- | --- | --- | --- | --- |
|  | 2 | **YARD 3** |  | 2025-11-17 | 2026-03-27 |  |  |  |  |  |  |  |  |  |  |  |  |  |  |  |  |  |
|  | 1 | **PAVEMENT** |  | 2025-12-01 | 2026-03-11 |  |  |  |  |  |  |  |  |  |  |  |  |  |  |  |  |  |
|  | 1 | **PAVEMENT TYPE 10** |  | 2025-12-01 | 2026-03-11 |  |  |  |  |  |  |  |  |  |  |  |  |  |  |  |  |  |
|  | 1 | **SUBGRADE** |  | 2025-12-01 | 2026-01-24 |  |  |  |  |  |  |  |  |  |  |  |  |  |  |  |  |  |
| PSUAY-CAG-INF-5850 |  | Execute subgrade of pavement type 10 in Yard 3 | 11d | 2025-12-01 A | 2026-01-24 A | PSUAY-CAG-INF-4060 SS | 100% |  | 2026-01-09 | 2026-01-23 |  |  | PROFIS [107949 h] | Executar o subnível do tipo 10 do pavimento no pátio 3 | UDF_G1 | PSUAY-CAG-INF-5850 | CONCLUSÃO | CONSAG | YARD 3 | CNT |  |  |
|  | 2 | **BGTC** |  | 2025-12-08 | 2026-02-04 |  |  |  |  |  |  |  |  |  |  |  |  |  |  |  |  |  |
| PSUAY-CAG-INF-5860 |  | Execute BGTC of pavement type 10 in Yard 3 | 4d | 2025-12-08 A | 2026-02-04 | PSUAY-CAG-INF-5850 | 90% | 4d | 2026-01-26 | 2026-01-29 | 32d | 2d | PROFIS [13161.2 h]; CEMENT SOIL (BGTC) [2396.7 m³] | Executar o BGTC do tipo de pavimento 10 no pátio 3 |  | PSUAY-CAG-INF-5860 | CONCLUSÃO | CONSAG | YARD 3 | CNT | OK |  |
|  | 3 | **CONCRETE** |  | 2026-01-05 | 2026-02-13 |  |  |  |  |  |  |  |  |  |  |  |  |  |  |  |  |  |
| PSUAY-CAG-INF-5870 |  | Execute concrete of pavement type 10 in Yard 3 | 5d | 2026-01-05 A | 2026-02-13 | PSUAY-CAG-INF-5860, PSUAY-CAG-INF-6810 | 60% | 5d | 2026-02-09 | 2026-02-13 | 30d | 0d | PROFIS [9440.93 h]; CONCRETE-PAVEMENT [1438.02 m³] | Executar concreto de pavimento tipo 10 no Pátio 3 |  | PSUAY-CAG-INF-5870 | CONCLUSÃO | CONSAG | YARD 3 | CNT | OK | PAV-CONC |
|  | 4 | **SAND BEDDING (PREMACIL)** |  | 2026-02-18 | 2026-03-10 |  |  |  |  |  |  |  |  |  |  |  |  |  |  |  |  |  |
| PSUAY-PMC-INF-5880 |  | Execute sand bedding of pavement type 10 in Yard 3 | 15d | 2026-02-18 | 2026-03-10 | PSUAY-CAG-INF-5870, PSUAY-PMC-INF-6830 |  |  |  |  | 28d | 0d | PROFIS [8635.89 h] | Executar a camada de areia do tipo 10 no Pátio 3 |  | PSUAY-PMC-INF-5880 | CONCLUSÃO | PREMACIL | YARD 3 | CNT |  | PAV-SAND |
|  | 5 | **PAVER (PREMACIL)** |  | 2026-02-19 | 2026-03-11 |  |  |  |  |  |  |  |  |  |  |  |  |  |  |  |  |  |
| PSUAY-PMC-INF-5890 |  | Execute paver of pavement type 10 in Yard 3 | 15d | 2026-02-19 | 2026-03-11 | PSUAY-PMC-INF-5880 FF+1d, PSUAY-CAG-INF-6850 |  |  |  |  | 28d | 0d | PSUAY - PAVIMENTO (BLOCK PAVER - M2) [4793.4 m²]; PROFIS [23748.7 h] | Executar pavimentação do tipo 10 no Pátio 3 |  | PSUAY-PMC-INF-5890 | CONCLUSÃO | PREMACIL | YARD 3 | CNT |  | PAV-PAVER |
|  | 2 | **STRUCTURE** |  | 2025-12-01 | 2026-03-02 |  |  |  |  |  |  |  |  |  |  |  |  |  |  |  |  |  |
|  | 1 | **DRAINS** |  | 2025-12-01 | 2026-02-06 |  |  |  |  |  |  |  |  |  |  |  |  |  |  |  |  |  |
|  | 1 | **BOX DRAINS** |  | 2025-12-01 | 2026-02-06 |  |  |  |  |  |  |  |  |  |  |  |  |  |  |  |  |  |
| PSUAY-CAG-CIV-5750 |  | Execute Box Drain in Yard 3 | 5d | 2025-12-01 A | 2026-02-06 |  | 90% | 10d | 2026-01-09 | 2026-01-16 | 51d | 0d | PROFIS [8306.6 h]; SURFACE DRAIN [221.31 m] | Execute drenagem de caixa no quintal 3 | UDF_G1 | PSUAY-CAG-CIV-5900 | CONCLUSÃO | CONSAG | YARD 3 | CNT |  |  |
|  | 2 | **SLOT DRAIN** |  | 2025-12-01 | 2025-12-06 |  |  |  |  |  |  |  |  |  |  |  |  |  |  |  |  |  |
| PSUAY-CAG-CIV-5910 |  | Execute Slot Drain in Yard 3 | 2d | 2025-12-01 A | 2025-12-06 A | PSUAY-CAG-CIV-5750 | 100% |  | 2026-01-16 | 2026-01-20 |  |  | PROFIS [3535.68 h]; SURFACE DRAIN [94.2 m] | Execute drenagem de slot no pátio 3 | UDF_G1 | PSUAY-CAG-CIV-5910 | CONCLUSÃO | CONSAG | YARD 3 | CNT |  |  |
|  | 2 | **BUSBAR - A** |  | 2026-02-16 | 2026-03-02 |  |  |  |  |  |  |  |  |  |  |  |  |  |  |  |  |  |
|  | 4 | **BUSBAR - A - 2ND PHASE** |  | 2026-02-16 | 2026-02-26 |  |  |  |  |  |  |  |  |  |  |  |  |  |  |  |  |  |
| PSUAY-CAG-CIV-5920 |  | Execute Busbar A form from Yard 3 (2nd stage) | 5d | 2026-02-16 | 2026-02-20 | PSUAY-CAG-INF-5870 |  |  |  |  | 36d | 0d | PROFIS [9944.95 h] | Executar a Barra Coletora Formulário A do Pátio 3 (2ª etapa) | UDF_G1 | PSUAY-CAG-CIV-5920 | CONCLUSÃO | CONSAG | YARD 3 | CNT |  |  |
| PSUAY-CAG-CIV-5930 |  | Execute concrete of Busbar A in Yard 3 (2nd stage) | 4d | 2026-02-23 | 2026-02-26 | PSUAY-CAG-CIV-5920 |  |  |  |  | 36d | 0d | PROFIS [23386.2 h]; CONCRETE-STRUCTURE [19.32 m³] | Executar concreto da Barra Coletora A no Pátio 3 (2ª etapa) |  | PSUAY-CAG-CIV-5930 | CONCLUSÃO | CONSAG | YARD 3 | CNT |  |  |
|  | 5 | **BASE (PANEL FOUNDATION)** |  | 2026-02-27 | 2026-02-27 |  |  |  |  |  |  |  |  |  |  |  |  |  |  |  |  |  |
| PSUAY-CAG-CIV-5940 |  | Execute base foundation of Busbar A panels in Yard 3 | 1d | 2026-02-27 | 2026-02-27 | PSUAY-CAG-CIV-5930 |  |  |  |  | 36d | 0d | PROFIS [1210.46 h] | Executar a fundação base dos painéis Busbar A no pátio 3 |  | PSUAY-CAG-CIV-5940 | CONCLUSÃO | CONSAG | YARD 3 | CNT |  |  |

| ID | WBS | Activity | Duration | Start | Finish | Predecessors | Complete | Remaining | Planned start | Planned finish | Total float | Free float | Calendar | Resources | ACTIVITY ID COD. | FASES DE ENTREGA | RESPONSÁVEL | ÁREAS | PHASES - YARD | Atualização | Check Pred | SERVIÇOS |
| --- | --- | --- | --- | --- | --- | --- | --- | --- | --- | --- | --- | --- | --- | --- | --- | --- | --- | --- | --- | --- | --- | --- |
|  | 2 | **ASSEMBLY (CONDUCTIX)** |  | 2026-03-02 | 2026-03-02 |  |  |  |  |  |  |  |  |  |  |  |  |  |  |  |  |  |
| PSUAY-CDX-GER-5950 |  | Handover for assembly of Busbar A in Yard 3 | 0d | 2026-03-02 | 2026-03-02 | PSUAY-CAG-CIV-5940 |  |  |  |  | 36d |  |  | PROFIS | PSUAY-CDX-GER-5950 | CONCLUSÃO | CONDUCTIX | YARD 3 | ENG |  |  |  |
|  | 3 | **TOILET BLOCK** |  | 2026-01-05 | 2026-02-05 |  |  |  |  |  |  |  |  |  |  |  |  |  |  |  |  |  |
|  | 6 | **BASE (FOUNDATION)** |  | 2026-01-05 | 2026-01-22 |  |  |  |  |  |  |  |  |  |  |  |  |  |  |  |  |  |
| PSUAY-CAG-CIV-5960 |  | Execute steel base foundation of Toilet Block in Yard 3 | 5d | 2026-01-05 A | 2026-01-22 A | PSUAY-CAG-INF-5850 | 100% |  | 2026-01-28 | 2026-02-03 |  |  |  | PROFIS [34572.9 h] | PSUAY-CAG-CIV-5960 | CONCLUSÃO | CONSAG | YARD 3 | CNT | OK | UDF_G1 |  |
| PSUAY-CAG-CIV-5970 |  | Execute the formwork for the civil foundation of Toilet Block in Yard 3 | 3d | 2026-01-05 A | 2026-01-22 A | PSUAY-CAG-CIV-5960 | 100% |  | 2026-02-04 | 2026-02-06 |  |  |  | PROFIS [5626.46 h] | PSUAY-CAG-CIV-5970 | CONCLUSÃO | CONSAG | YARD 3 | CNT | OK |  |  |
| PSUAY-CAG-CIV-5980 |  | Execute concrete foundation of Toilet Block in Yard 3 | 1d | 2026-01-05 A | 2026-01-22 A | PSUAY-CAG-CIV-5970 | 100% |  | 2026-02-09 | 2026-02-09 |  |  |  | PROFIS [326.87 h]; CONCRETE-STRUCTURE [15.97 m³] | PSUAY-CAG-CIV-5980 | CONCLUSÃO | CONSAG | YARD 3 | CNT | OK |  |  |
|  | 1 | **ASSEMBLY (METALBOX)** |  | 2026-02-06 | 2026-02-05 |  |  |  |  |  |  |  |  |  |  |  |  |  |  |  |  |  |
| PSUAY-MTB-GER-5990 |  | Execute toilet box assembly in Yard 3 | 5d | 2026-02-06 A | 2026-02-05 | PSUAY-CAG-CIV-5980 | 50% | 5d | 2026-02-06 | 2026-02-12 | 52d |  |  | PROFIS [9008.1 h] | PSUAY-MTB-GER-5990 | CONCLUSÃO | METALBOX | YARD 3 | CNT |  |  |  |
|  | 5 | **FENCING** |  | 2026-01-14 | 2026-03-11 |  |  |  |  |  |  |  |  |  |  |  |  |  |  |  |  |  |
|  | 2 | **HANDRAIL** |  | 2026-01-14 | 2026-03-11 |  |  |  |  |  |  |  |  |  |  |  |  |  |  |  |  |  |
| PSUAY-CAG-CIV-6000 |  | Execute handrail in Yard 3 | 4d | 2026-01-14 A | 2026-03-11 | PSUAY-PMC-INF-5890 FF | 40% | 4d | 2026-03-06 | 2026-03-11 | 28d | 0d |  | PROFIS [10134.1 h] | PSUAY-CAG-CIV-6000 | CONCLUSÃO | CONSAG | YARD 3 | CNT | OK | UDF_G1 |  |
|  | 3 | **CONCRETE BARRIER** |  | 2026-02-26 | 2026-03-11 |  |  |  |  |  |  |  |  |  |  |  |  |  |  |  |  |  |
| PSUAY-CAG-CIV-6010 |  | Execute concrete barrier in Yard 3 | 10d | 2026-02-26 | 2026-03-11 | PSUAY-CAG-CIV-6000 FF |  |  |  |  | 28d |  |  | PROFIS [7461.55 h] | PSUAY-CAG-CIV-6010 | CONCLUSÃO | CONSAG | YARD 3 | CNT |  | UDF_G1 |  |
|  | 3 | **TOWERS** |  | 2025-11-17 | 2026-03-05 |  |  |  |  |  |  |  |  |  |  |  |  |  |  |  |  |  |
|  | 8 | **HIGH MAST HM-H02-01** |  | 2025-11-17 | 2025-11-24 |  |  |  |  |  |  |  |  |  |  |  |  |  |  |  |  |  |
|  | 5 | **ENERGIZATION (LUZVILLE)** |  | 2025-11-17 | 2025-11-24 |  |  |  |  |  |  |  |  |  |  |  |  |  |  |  |  |  |
| PSUAY-LZE-GER-6020 |  | Execute HM-H02-01 BT cable pulling and energization in Yard 3 | 6d | 2025-11-17 A | 2025-11-24 A | PSUAY-MIL-GER-1450 FS+6d | 100% |  |  |  |  |  | PSUAY - ELETROMEC - 1T - SEM HE | PROFIS [11110 h]; CABLE LOW VOLTAGE [1480 m] | PSUAY-LZE-GER-6020 | CONCLUSÃO | LUZVILLE | YARD 3 | CNT |  |  | HM-ENERG |
|  | 4 | **HIGH MAST HM-G02-01** |  | 2025-11-17 | 2026-02-02 |  |  |  |  |  |  |  |  |  |  |  |  |  |  |  |  |  |
|  | 5 | **ENERGIZATION (LUZVILLE)** |  | 2025-11-17 | 2026-02-02 |  |  |  |  |  |  |  |  |  |  |  |  |  |  |  |  |  |
| PSUAY-LZE-ELE-6030 |  | Execute HM-G02-01 BT cable pulling and energization in Yard 3 | 6d | 2025-11-17 A | 2026-02-02 | PSUAY-LZE-MEC-3050, PSUAY-LZE-ELE-3000 | 90% | 6d | 2025-12-02 | 2025-12-09 | 49d | 0d | PSUAY - ELETROMEC - 1T - SEM HE | PROFIS [10591 h]; CABLE LOW VOLTAGE [1646 m] | PSUAY-LZE-ELE-6030 | CONCLUSÃO | LUZVILLE | YARD 3 | CNT |  | UDF_G1 | HM-ENERG |
|  | 3 | **HIGH MAST HM-F02-01** |  | 2025-11-25 | 2026-01-30 |  |  |  |  |  |  |  |  |  |  |  |  |  |  |  |  |  |
|  | 5 | **ENERGIZATION (LUZVILLE)** |  | 2025-11-25 | 2026-01-30 |  |  |  |  |  |  |  |  |  |  |  |  |  |  |  |  |  |
| PSUAY-LZE-ELE-6010 |  | Execute HM-F02-01 BT cable pulling and energization in Yard 3 | 5d | 2025-11-25 A | 2026-01-30 | PSUAY-LZE-GER-6020 | 90% | 5d | 2025-11-25 | 2025-12-01 | 50d | 17.88d | PSUAY - ELETROMEC - 1T - SEM HE | PROFIS [8969.5 h]; CABLE LOW VOLTAGE [1394 m] | PSUAY-LZE-ELE-6040 | CONCLUSÃO | LUZVILLE | YARD 3 | CNT |  | UDF_G1 | HM-ENERG |

Notes:
- PSUAY-CDX-GER-5950: Translate: Entrega para montagem da Barra Coletora A no pátio 3
- PSUAY-CAG-CIV-5960: Translate: Executar a fundação com base de aço do Bloco de Vasos Sanitários no Pátio 3
- PSUAY-CAG-CIV-5970: Translate: Executar forma para a fundação civil do Bloco de Banheiros no Pátio 3
- PSUAY-CAG-CIV-5980: Translate: Executar concreto do Bloco de Banheiro no Pátio 3
- PSUAY-MTB-GER-5990: Translate: Executar montagem da caixa de vaso sanitário no pátio 3
- PSUAY-CAG-CIV-6000: Translate: Execute corrimão no pátio 3
- PSUAY-CAG-CIV-6010: Translate: Executar barreira de concreto no Pátio 3
- PSUAY-LZE-GER-6020: Translate: Executar puxar cabos HM-H02-01 BT e energizar no pátio 3
- PSUAY-LZE-ELE-6030: Translate: Executar puxar e energizar cabos HM-G02-01 BT no pátio 3
- PSUAY-LZE-ELE-6010: Translate: Executar puxar cabos HM-F02-01 BT e energizar no pátio 3

| ID | WBS | Activity | Duration | Start | Finish | Predecessors | Complete | Remaining | Planned start | Planned finish | Total float | Free float | Calendar | Resources | Check Pred | ACTIVITY ID COD. | FASES DE ENTREGA | RESPONSÁVEL | ÁREAS | SERVIÇOS | PHASES - YARD |
| --- | --- | --- | --- | --- | --- | --- | --- | --- | --- | --- | --- | --- | --- | --- | --- | --- | --- | --- | --- | --- | --- |
|  | 1 | **HIGH MAST HM-E02-01** |  | 2025-11-24 | 2026-01-27 |  |  |  |  |  |  |  |  |  |  |  |  |  |  |  |  |
|  | 2 | **ASSEMBLY (LUZVILLE)** |  | 2025-12-19 | 2025-12-23 |  |  |  |  |  |  |  |  |  |  |  |  |  |  |  |  |
| PSUAY-LZE-ELE-5960 |  | Execute HM-E02-01 assembly in Yard 3 | 6d | 2025-12-19 A | 2025-12-23 A | PSUAY-LZE-MEC-3050, PSUAY-LZE-ELE-3000, PSUAY-LZE-ELE-7890 | 100% |  | 2026-01-22 | 2026-01-28 |  |  | PSUAY - ELETROMEC - 1T - HE SAB | PROFIS [70263.2 h]; POST HIGH MAST [1 un] | UDF_G1 | PSUAY-LZE-ELE-6050 | CONCLUSÃO | LUZVILLE | YARD 3 | HM-ASSEM | CNT |
|  | 5 | **ENERGIZATION (LUZVILLE)** |  | 2025-11-24 | 2026-01-27 |  |  |  |  |  |  |  |  |  |  |  |  |  |  |  |  |
| PSUAY-LZE-ELE-5970 |  | Execute HM-E02-01 BT cable pulling and energization in Yard 3 | 2d | 2025-11-24 A | 2026-01-27 | PSUAY-LZE-MEC-3050 FS+13d | 90% | 2d | 2026-01-07 | 2026-01-08 | 53d | 20.88d | PSUAY - ELETROMEC - 1T - SEM HE | PROFIS [2831.12 h]; CABLE LOW VOLTAGE [440 m] |  | PSUAY-LZE-ELE-6060 | CONCLUSÃO | LUZVILLE | YARD 3 | HM-ENERG | CNT |
|  | 2 | **HIGH MAST HM-E01-01** |  | 2025-11-24 | 2026-02-03 |  |  |  |  |  |  |  |  |  |  |  |  |  |  |  |  |
|  | 2 | **ASSEMBLY (LUZVILLE)** |  | 2025-12-08 | 2026-01-19 |  |  |  |  |  |  |  |  |  |  |  |  |  |  |  |  |
| PSUAY-LZE-ELE-5980 |  | Execute HM-E01-01 assembly in Yard 3 | 6d | 2025-12-08 A | 2026-01-19 A | PSUAY-LZE-ELE-8390 SS+1d | 100% |  | 2026-01-13 | 2026-01-19 |  |  | PSUAY - ELETROMEC - 1T - HE SAB | PROFIS [70263.2 h]; POST HIGH MAST [1 un] | UDF_G1 | PSUAY-LZE-ELE-6070 | CONCLUSÃO | LUZVILLE | YARD 3 | HM-ASSEM | CNT |
|  | 5 | **ENERGIZATION (LUZVILLE)** |  | 2025-11-24 | 2026-02-03 |  |  |  |  |  |  |  |  |  |  |  |  |  |  |  |  |
| PSUAY-LZE-ELE-5990 |  | Execute HM-E01-01 BT cable pulling and energization in Yard 3 | 2d | 2025-11-24 A | 2026-02-03 | PSUAY-LZE-ELE-5980 SS+7d, PSUAY-LZE-MEC-3050 | 90% | 2d | 2026-01-14 | 2026-01-15 | 43d | 10.88d | PSUAY - ELETROMEC - 1T - SEM HE | PROFIS [2046.13 h]; CABLE LOW VOLTAGE [318 m] |  | PSUAY-LZE-ELE-6080 | CONCLUSÃO | LUZVILLE | YARD 3 | HM-ENERG | CNT |
|  | 5 | **HIGH MAST HM-F01-01** |  | 2025-12-01 | 2026-02-20 |  |  |  |  |  |  |  |  |  |  |  |  |  |  |  |  |
|  | 1 | **BASE (FOUNDATION)** |  | 2025-12-01 | 2025-12-19 |  |  |  |  |  |  |  |  |  |  |  |  |  |  |  |  |
| PSUAY-CAG-CIV-6090 |  | Execute steel for the civil base of the HM-F01-01 in Yard 3 | 4d | 2025-12-01 A | 2025-12-06 A | PSUAY-CAG-CIV-3670, PSUAY-CAG-CIV-7950 | 100% |  | 2025-12-31 | 2026-01-07 |  |  |  | PROFIS [62948.5 h] | UDF_G1 | PSUAY-CAG-CIV-6090 | CONCLUSÃO | CONSAG | YARD 3 | HM-CIV | CNT |
| PSUAY-CAG-CIV-6100 |  | Execute the formwork for the civil base HM-F01-01 of the Yard 3 | 1d | 2025-12-02 A | 2025-12-19 A | PSUAY-CAG-CIV-6090 | 100% |  | 2026-01-08 | 2026-01-08 |  |  |  | PROFIS [9777.4 h] |  | PSUAY-CAG-CIV-6100 | CONCLUSÃO | CONSAG | YARD 3 | HM-CIV | CNT |
| PSUAY-CAG-CIV-6110 |  | Execute concrete for the civil foundations of the HM-F01-01 in Yard 3 | 1d | 2025-12-05 A | 2025-12-19 A | PSUAY-CAG-CIV-6100 | 100% |  | 2026-01-09 | 2026-01-09 |  |  |  | PROFIS [595.15 h]; CONCRETE-STRUCTURE [29.07 m³] |  | PSUAY-CAG-CIV-6110 | CONCLUSÃO | CONSAG | YARD 3 | HM-CIV | CNT |
| PSUAY-CAG-CIV-6120 |  | Execute HM-F01-01 panels foundation in Yard 3 | 1d | 2025-12-05 A | 2025-12-19 A | PSUAY-CAG-CIV-6110 | 100% |  | 2026-01-12 | 2026-01-12 |  |  |  | PROFIS [2420.93 h] |  | PSUAY-CAG-CIV-6120 | CONCLUSÃO | CONSAG | YARD 3 | HM-CIV | CNT |
|  | 2 | **ASSEMBLY (LUZVILLE)** |  | 2026-02-09 | 2026-02-16 |  |  |  |  |  |  |  |  |  |  |  |  |  |  |  |  |
| PSUAY-LZE-ELE-6130 |  | Execute HM-F01-01 assembly in Yard 3 | 6d | 2026-02-09 | 2026-02-16 | PSUAY-LZE-ELE-7980, PSUAY-CAG-CIV-6120 FS+1d |  |  |  |  | 30.25d | 0d | PSUAY - ELETROMEC - 1T - HE SAB | PROFIS [14052.6 h]; POST HIGH MAST [1 un] |  | PSUAY-LZE-ELE-6130 | CONCLUSÃO | LUZVILLE | YARD 3 | HM-ASSEM | CNT |
|  | 5 | **ENERGIZATION (LUZVILLE)** |  | 2026-01-05 | 2026-02-20 |  |  |  |  |  |  |  |  |  |  |  |  |  |  |  |  |
| PSUAY-LZE-ELE-6140 |  | Execute HM-F01-01 BT cable pulling and energization in Yard 3 | 4d | 2026-01-05 A | 2026-02-20 | PSUAY-LZE-ELE-6130, PSUAY-LZE-MEC-3050 | 80% | 4d | 2026-02-02 | 2026-02-05 | 35.25d | 2.12d | PSUAY - ELETROMEC - 1T - SEM HE | PROFIS [7335.17 h]; CABLE LOW VOLTAGE [1140 m] |  | PSUAY-LZE-ELE-6140 | CONCLUSÃO | LUZVILLE | YARD 3 | HM-ENERG | CNT |
|  | 6 | **HIGH MAST HM-G01-01** |  | 2025-12-01 | 2026-02-25 |  |  |  |  |  |  |  |  |  |  |  |  |  |  |  |  |
|  | 1 | **BASE (FOUNDATION)** |  | 2025-12-01 | 2025-12-19 |  |  |  |  |  |  |  |  |  |  |  |  |  |  |  |  |
| PSUAY-CAG-CIV-6150 |  | Execute steel for the civil base of the HM-G01-01 in Yard 3 | 4d | 2025-12-01 A | 2025-12-06 A | PSUAY-CAG-CIV-7950 | 100% |  | 2025-12-31 | 2026-01-07 |  |  |  | PROFIS [62948.5 h] | UDF_G1 | PSUAY-CAG-CIV-6150 | CONCLUSÃO | CONSAG | YARD 3 | HM-CIV | CNT |
| PSUAY-CAG-CIV-6160 |  | Execute the formwork for the civil base of HM-G01-01 in Yard 3 | 1d | 2025-12-15 A | 2025-12-19 A | PSUAY-CAG-CIV-6150 | 100% |  | 2025-12-29 | 2025-12-29 |  |  |  | PROFIS [9777.4 h] |  | PSUAY-CAG-CIV-6160 | CONCLUSÃO | CONSAG | YARD 3 | HM-CIV | CNT |
| PSUAY-CAG-CIV-6170 |  | Execute concrete for the civil foundations of the HM-G01-01 in Yard 3 | 1d | 2025-12-15 A | 2025-12-19 A | PSUAY-CAG-CIV-6160 | 100% |  | 2025-12-30 | 2025-12-30 |  |  |  | PROFIS [595.15 h]; CONCRETE-STRUCTURE [29.07 m³] |  | PSUAY-CAG-CIV-6170 | CONCLUSÃO | CONSAG | YARD 3 | HM-CIV | CNT |
| PSUAY-CAG-CIV-6180 |  | Execute HM-G01-01 panels foundation in Yard 3 | 1d | 2025-12-15 A | 2025-12-19 A | PSUAY-CAG-CIV-6170 | 100% |  | 2025-12-31 | 2025-12-31 |  |  |  | PROFIS [2420.93 h] |  | PSUAY-CAG-CIV-6180 | CONCLUSÃO | CONSAG | YARD 3 | HM-CIV | CNT |

Notes:
- PSUAY-LZE-ELE-5960: Translate: Executar a montagem HM-E02-01 no pátio 3
- PSUAY-LZE-ELE-5970: Translate: Executar puxar cabos HM-E02-01 BT e energizar no pátio 3
- PSUAY-LZE-ELE-5980: Translate: Executar a montagem HM-E01-01 no pátio 3
- PSUAY-LZE-ELE-5990: Translate: Lançar cabo e energizar HM-E01-01 BT no pátio 3
- PSUAY-CAG-CIV-6090: Translate: Executar aço para a base civil do HM-F01-01 no Pátio 3
- PSUAY-CAG-CIV-6100: Translate: Executar a formagem para a base civil HM-F01-01 do Pátio 3
- PSUAY-CAG-CIV-6110: Translate: Executar concreto para as fundações civis do HM-F01-01 no pátio 3
- PSUAY-CAG-CIV-6120: Translate: Executar fundação dos painéis HM-F01-01 no pátio 3
- PSUAY-LZE-ELE-6130: Translate: Executar a montagem HM-F01-01 no pátio 3
- PSUAY-LZE-ELE-6140: Translate: Executar puxar cabos HM-F01-01 BT e energizar no pátio 3
- PSUAY-CAG-CIV-6150: Translate: Executar aço para a base civil do HM-G01-01 no Pátio 3
- PSUAY-CAG-CIV-6160: Translate: Executar a cofragem para a base civil do HM-G01-01 no Pátio 3
- PSUAY-CAG-CIV-6170: Translate: Executar concreto para as fundações civis do HM-G01-01 no pátio 3
- PSUAY-CAG-CIV-6180: Translate: Executar fundação dos painéis HM-G01-01 no pátio 3

| ID | WBS | Activity | Duration | Start | Finish | Predecessors | Complete | Planned start | Planned finish | Total float | Free float | Calendar | Resources | ACTIVITY ID COD. | FASES DE ENTREGA | RESPONSÁVEL | ÁREAS | SERVIÇOS | PHASES - YARD | Check Pred |
| --- | --- | --- | --- | --- | --- | --- | --- | --- | --- | --- | --- | --- | --- | --- | --- | --- | --- | --- | --- | --- |
|  | 2 | **ASSEMBLY (LUZVILLE)** |  | 2026-02-11 | 2026-02-18 |  |  |  |  |  |  |  |  |  |  |  |  |  |  |  |
| PSUAY-LZE-ELE-6060 |  | Execute HM-G01-01 assembly in Yard 3 | 6d | 2026-02-11 | 2026-02-18 | PSUAY-LZE-ELE-5960, PSUAY-CAG-CIV-6180 |  |  |  | 34.81d | 0d | PSUAY - ELETROMEC - 1T - HE SAB | PROFIS [14052.6 h]; POST HIGH MAST [1 un] | PSUAY-LZE-ELE-6190 | CONCLUSÃO | LUZVILLE | YARD 3 | HM-ASSEM | CNT |  |
|  | 5 | **ENERGIZATION (LUZVILLE)** |  | 2026-02-18 | 2026-02-25 |  |  |  |  |  |  |  |  |  |  |  |  |  |  |  |
| PSUAY-LZE-ELE-6070 |  | Execute HM-G01-01 BT cable pulling and energization in Yard 3 | 5d | 2026-02-18 | 2026-02-25 | PSUAY-LZE-ELE-6060, PSUAY-LZE-ELE-5990 |  |  |  | 32.12d | 0d | PSUAY - ELETROMEC - 1T - SEM HE | PROFIS [9085.32 h]; CABLE LOW VOLTAGE [1412 m] | PSUAY-LZE-ELE-6200 | CONCLUSÃO | LUZVILLE | YARD 3 | HM-ENERG | CNT |  |
|  | 7 | **HIGH MAST HM-H01-01** |  | 2025-12-01 | 2026-02-26 |  |  |  |  |  |  |  |  |  |  |  |  |  |  |  |
|  | 1 | **BASE (FOUNDATION)** |  | 2025-12-01 | 2025-12-19 |  |  |  |  |  |  |  |  |  |  |  |  |  |  |  |
| PSUAY-CAG-CIV-6210 |  | Execute steel for the civil base of the HM-H01-01 in Yard 3 | 4d | 2025-12-01 A | 2025-12-06 A | PSUAY-CAG-CIV-6160 | 100% | 2026-01-09 | 2026-01-14 |  |  |  | PROFIS [62948.5 h] | PSUAY-CAG-CIV-6210 | CONCLUSÃO | CONSAG | YARD 3 | HM-CIV | CNT | UDF_G1 |
| PSUAY-CAG-CIV-6220 |  | Execute the formwork for the civil base of HM-H01-01 in Yard 3 | 1d | 2025-12-01 A | 2025-12-19 A | PSUAY-CAG-CIV-6210 | 100% | 2026-01-15 | 2026-01-15 |  |  |  | PROFIS [9777.4 h] | PSUAY-CAG-CIV-6220 | CONCLUSÃO | CONSAG | YARD 3 | HM-CIV | CNT |  |
| PSUAY-CAG-CIV-6230 |  | Execute concrete for the civil foundations of the of HM-H01-01 in Yard 3 | 1d | 2025-12-01 A | 2025-12-19 A | PSUAY-CAG-CIV-6220 | 100% | 2026-01-16 | 2026-01-16 |  |  |  | PROFIS [595.15 h]; CONCRETE-STRUCTURE [29.07 m³] | PSUAY-CAG-CIV-6230 | CONCLUSÃO | CONSAG | YARD 3 | HM-CIV | CNT |  |
| PSUAY-CAG-CIV-6240 |  | Execute HM-H01-01 panels foundation in Yard 3 | 2d | 2025-12-15 A | 2025-12-19 A | PSUAY-CAG-CIV-6230 | 100% | 2026-01-05 | 2026-01-06 |  |  |  | PROFIS [2420.93 h] | PSUAY-CAG-CIV-6240 | CONCLUSÃO | CONSAG | YARD 3 | HM-CIV | CNT |  |
|  | 2 | **ASSEMBLY (LUZVILLE)** |  | 2026-02-18 | 2026-02-26 |  |  |  |  |  |  |  |  |  |  |  |  |  |  |  |
| PSUAY-LZE-ELE-6250 |  | Execute HM-H01-01 assembly in Yard 3 | 6d | 2026-02-18 | 2026-02-26 | PSUAY-LZE-ELE-6060, PSUAY-CAG-CIV-6240 |  |  |  | 34.81d | 0d | PSUAY - ELETROMEC - 1T - HE SAB | PROFIS [14052.6 h]; POST HIGH MAST [1 un] | PSUAY-LZE-ELE-6250 | CONCLUSÃO | LUZVILLE | YARD 3 | HM-ASSEM | CNT |  |
|  | 5 | **ENERGIZATION (LUZVILLE)** |  | 2026-02-18 | 2026-02-25 |  |  |  |  |  |  |  |  |  |  |  |  |  |  |  |
| PSUAY-LZE-ELE-6260 |  | Execute HM-H01-01 BT cable pulling and energization in Yard 3 | 5d | 2026-02-18 | 2026-02-25 | PSUAY-LZE-ELE-6250 SS, PSUAY-LZE-ELE-6140 SS |  |  |  | 43.81d | 7.19d | PSUAY - ELETROMEC - 1T - HE SAB | PROFIS [9921.78 h]; CABLE LOW VOLTAGE [1542 m] | PSUAY-LZE-ELE-6260 | CONCLUSÃO | LUZVILLE | YARD 3 | HM-ENERG | CNT |  |
|  | 9 | **OPTIC FIBER** |  | 2026-02-25 | 2026-03-05 |  |  |  |  |  |  |  |  |  |  |  |  |  |  |  |
| PSUAY-LZE-ELE-6270 |  | Execute Fiber Optic cable pulling, fusion, and termination (LOOP 04) in Yard 3 | 6d | 2026-02-25 | 2026-03-05 | PSUAY-LZE-GER-6020, PSUAY-LZE-ELE-6030, PSUAY-LZE-ELE-6010, PSUAY-LZE-ELE-5970, PSUAY-LZE-ELE-5990, PSUAY-LZE-ELE-6140, PSUAY-LZE-ELE-6070, PSUAY-LZE-ELE-6260 FF |  |  |  | 32.12d |  |  | PROFIS [10150.2 h]; CABLE FIBER OPTICS [1893 m] | PSUAY-LZE-ELE-6270 | CONCLUSÃO | LUZVILLE | YARD 3 |  | CNT |  |
|  | 9 | **SIGNS** |  | 2026-03-06 | 2026-03-09 |  |  |  |  |  |  |  |  |  |  |  |  |  |  |  |
|  | 1 | **TRAFFIC SIGNS** |  | 2026-03-06 | 2026-03-09 |  |  |  |  |  |  |  |  |  |  |  |  |  |  |  |
| PSUAY-CAG-INF-6280 |  | Execute traffic signs in Yard 3 | 2d | 2026-03-06 | 2026-03-09 | PSUAY-CAG-CIV-6000 SS |  |  |  | 30d |  |  | PROFIS [3607.75 h] | PSUAY-CAG-INF-6280 | CONCLUSÃO | CONSAG | YARD 3 |  | CNT | UDF_G1 |
|  | 4 | **ELECTRICAL (LUZVILLE)** |  | 2025-12-29 | 2026-03-27 |  |  |  |  |  |  |  |  |  |  |  |  |  |  |  |
|  | 4 | **ELETROCENTER** |  | 2026-03-16 | 2026-03-27 |  |  |  |  |  |  |  |  |  |  |  |  |  |  |  |
|  | 1 | **SE-07 HV** |  | 2026-03-16 | 2026-03-19 |  |  |  |  |  |  |  |  |  |  |  |  |  |  |  |
|  | 1 | **SCADA PANEL** |  | 2026-03-16 | 2026-03-19 |  |  |  |  |  |  |  |  |  |  |  |  |  |  |  |
| PSUAY-LZE-ELE-6290 |  | Execute assembly of panel SCADA of SE-07 HV in Yard 3 | 2d | 2026-03-16 | 2026-03-17 | PSUAY-MIL-GER-1290, PSUAY-MIL-GER-1300 |  |  |  | 16d | 0d | PSUAY - ELETROMEC - 1T - SEM HE | PROFIS [3963.57 h] | PSUAY-LZE-ELE-6290 | CONCLUSÃO | LUZVILLE | YARD 3 |  | CNT |  |
| PSUAY-LZE-ELE-6300 |  | Execute cable pulling for SCADA panel of SE-07 HV in Yard 3 | 1d | 2026-03-18 | 2026-03-18 | PSUAY-LZE-ELE-6290 |  |  |  | 16d | 0d | PSUAY - ELETROMEC - 1T - SEM HE | PROFIS [257.37 h]; CABLE LOW VOLTAGE [40 m] | PSUAY-LZE-ELE-6300 | CONCLUSÃO | LUZVILLE | YARD 3 |  | CNT |  |
| PSUAY-LZE-ELE-6310 |  | Execute Preparation, Testing, and Connection of SCADA Panel Cables of SE-07 HV in Yard 3 | 1d | 2026-03-19 | 2026-03-19 | PSUAY-LZE-ELE-6300 |  |  |  | 16d | 0d | PSUAY - ELETROMEC - 1T - SEM HE | PROFIS [1981.78 h] | PSUAY-LZE-ELE-6310 | CONCLUSÃO | LUZVILLE | YARD 3 |  | CNT |  |

Notes:
- PSUAY-LZE-ELE-6060: Translate: Executar a montagem HM-G01-01 no Pátio 3
- PSUAY-LZE-ELE-6070: Translate: Execute puxar cabos HM-G01-01 BT e energizar no pátio 3
- PSUAY-CAG-CIV-6210: Translate: Executar aço para a base civil do HM-H01-01 no Pátio 3
- PSUAY-CAG-CIV-6220: Translate: Executar a forma formada para a base civil do HM-H01-01 no Pátio 3
- PSUAY-CAG-CIV-6230: Translate: Executar concreto para as fundações civis do HM-H01-01 no pátio 3
- PSUAY-CAG-CIV-6240: Translate: Executar fundação dos painéis HM-H01-01 no pátio 3
- PSUAY-LZE-ELE-6250: Translate: Executar a montagem HM-H01-01 no pátio 3
- PSUAY-LZE-ELE-6260: Translate: Executar puxar e energizar cabos HM-H01-01 BT no pátio 3
- PSUAY-LZE-ELE-6270: Translate: Execute puxação, fusão e terminação de cabos de fibra óptica (LOOP 04) no pátio 3
- PSUAY-CAG-INF-6280: Translate: Executar placas de trânsito no pátio 3
- PSUAY-LZE-ELE-6290: Translate: Executar montagem do painel SCADA do SE-07 HV no Pátio 3
- PSUAY-LZE-ELE-6300: Translate: Executar puxar cabos para o painel SCADA do SE-07 HV no pátio 3
- PSUAY-LZE-ELE-6310: Translate: Executar preparação, teste e conexão dos cabos do painel SCADA do SE-07 HV no pátio 3

| ID | WBS | Activity | Duration | Start | Finish | Predecessors | Complete | Remaining | Planned start | Planned finish | Total float | Free float | Calendar | Resources | ACTIVITY ID COD. | FASES DE ENTREGA | RESPONSÁVEL | ÁREAS | PHASES - YARD |
| --- | --- | --- | --- | --- | --- | --- | --- | --- | --- | --- | --- | --- | --- | --- | --- | --- | --- | --- | --- |
|  | 9 | **SE-06** |  | 2026-03-20 | 2026-03-24 |  |  |  |  |  |  |  |  |  |  |  |  |  |  |
|  | 1 | **SCADA PANEL** |  | 2026-03-20 | 2026-03-24 |  |  |  |  |  |  |  |  |  |  |  |  |  |  |
| PSUAY-LZE-ELE-6320 |  | Execute assembly of panel SCADA of SE-06 in Yard 3 | 1d | 2026-03-20 | 2026-03-20 | PSUAY-LZE-ELE-6310 |  |  |  |  | 16d | 0d | PSUAY - ELETROMEC - 1T - SEM HE | PROFIS [1981.78 h] | PSUAY-LZE-ELE-6320 | CONCLUSÃO | LUZVILLE | YARD 3 | CNT |
| PSUAY-LZE-ELE-6330 |  | Execute cable pulling for SCADA panel of SE-06 in Yard 3 | 1d | 2026-03-23 | 2026-03-23 | PSUAY-LZE-ELE-6320 |  |  |  |  | 16d | 0d | PSUAY - ELETROMEC - 1T - SEM HE | PROFIS [257.37 h]; CABLE LOW VOLTAGE [40 m] | PSUAY-LZE-ELE-6330 | CONCLUSÃO | LUZVILLE | YARD 3 | CNT |
| PSUAY-LZE-ELE-6340 |  | Execute Preparation, Testing, and Connection of SCADA Panel Cables of SE-06 in Yard 3 | 1d | 2026-03-24 | 2026-03-24 | PSUAY-LZE-ELE-6330 |  |  |  |  | 16d | 0d | PSUAY - ELETROMEC - 1T - SEM HE | PROFIS [1981.78 h] | PSUAY-LZE-ELE-6340 | CONCLUSÃO | LUZVILLE | YARD 3 | CNT |
|  | 8 | **SE-05** |  | 2026-03-25 | 2026-03-27 |  |  |  |  |  |  |  |  |  |  |  |  |  |  |
|  | 1 | **SCADA PANEL** |  | 2026-03-25 | 2026-03-27 |  |  |  |  |  |  |  |  |  |  |  |  |  |  |
| PSUAY-LZE-ELE-6350 |  | Execute assembly of panel SCADA of SE-05 in Yard 3 | 1d | 2026-03-25 | 2026-03-25 | PSUAY-LZE-ELE-6340 |  |  |  |  | 16d | 0d | PSUAY - ELETROMEC - 1T - SEM HE | PROFIS [1981.78 h] | PSUAY-LZE-ELE-6350 | CONCLUSÃO | LUZVILLE | YARD 3 | CNT |
| PSUAY-LZE-ELE-6360 |  | Execute cable pulling for SCADA panel of SE-05 in Yard 3 | 1d | 2026-03-26 | 2026-03-26 | PSUAY-LZE-ELE-6350 |  |  |  |  | 16d | 0d | PSUAY - ELETROMEC - 1T - SEM HE | PROFIS [257.37 h]; CABLE LOW VOLTAGE [40 m] | PSUAY-LZE-ELE-6360 | CONCLUSÃO | LUZVILLE | YARD 3 | CNT |
| PSUAY-LZE-ELE-6370 |  | Execute Preparation, Testing, and Connection of SCADA Panel Cables of SE-05 in Yard 3 | 1d | 2026-03-27 | 2026-03-27 | PSUAY-LZE-ELE-6360 |  |  |  |  | 16d |  | PSUAY - ELETROMEC - 1T - SEM HE | PROFIS [1981.78 h] | PSUAY-LZE-ELE-6370 | CONCLUSÃO | LUZVILLE | YARD 3 | CNT |
|  | 1 | **FIELD EQUIPMENTS** |  | 2025-12-29 | 2026-03-09 |  |  |  |  |  |  |  |  |  |  |  |  |  |  |
|  | 1 | **MATERIAL STORAGE - STORE-LV-PN-01-PR-01** |  | 2026-02-09 | 2026-02-17 |  |  |  |  |  |  |  |  |  |  |  |  |  |  |
| PSUAY-LZE-ELE-6380 |  | Execute BT cable pulling in material storage in Yard 3 | 3d | 2026-02-09 | 2026-02-11 | PSUAY-LZE-ELE-4180 |  |  |  |  | 31d | 0d | PSUAY - ELETROMEC - 1T - SEM HE | PROFIS [5479.93 h]; CABLE LOW VOLTAGE [1460 m] | PSUAY-LZE-ELE-6380 | CONCLUSÃO | LUZVILLE | YARD 3 | CNT |
| PSUAY-LZE-ELE-6390 |  | Execute cable preparation and termination in material storage in Yard 3 | 2d | 2026-02-12 | 2026-02-13 | PSUAY-LZE-ELE-6380 |  |  |  |  | 31d | 0d | PSUAY - ELETROMEC - 1T - SEM HE | PROFIS [3963.57 h] | PSUAY-LZE-ELE-6390 | CONCLUSÃO | LUZVILLE | YARD 3 | CNT |
| PSUAY-LZE-ELE-6400 |  | Execute cable testing and connection in material storage in Yard 3 | 2d | 2026-02-16 | 2026-02-17 | PSUAY-LZE-ELE-6390 |  |  |  |  | 44d |  | PSUAY - ELETROMEC - 1T - SEM HE | PROFIS [3963.57 h] | PSUAY-LZE-ELE-6400 | CONCLUSÃO | LUZVILLE | YARD 3 | CNT |
|  | 2 | **REST AREA - TOILET-02-LV-PN-01-PR-01** |  | 2026-02-16 | 2026-02-24 |  |  |  |  |  |  |  |  |  |  |  |  |  |  |
| PSUAY-LZE-ELE-6410 |  | Execute BT cable pulling in rest area in Yard 3 | 3d | 2026-02-16 | 2026-02-18 | PSUAY-LZE-ELE-6390, PSUAY-CAG-CIV-5960 |  |  |  |  | 31d | 0d | PSUAY - ELETROMEC - 1T - SEM HE | PROFIS [5442.4 h]; CABLE LOW VOLTAGE [1450 m] | PSUAY-LZE-ELE-6410 | CONCLUSÃO | LUZVILLE | YARD 3 | CNT |
| PSUAY-LZE-ELE-6420 |  | Execute cable preparation and termination in rest area in Yard 3 | 2d | 2026-02-19 | 2026-02-20 | PSUAY-LZE-ELE-6410 |  |  |  |  | 31d | 0d | PSUAY - ELETROMEC - 1T - SEM HE | PROFIS [3963.57 h] | PSUAY-LZE-ELE-6420 | CONCLUSÃO | LUZVILLE | YARD 3 | CNT |
| PSUAY-LZE-ELE-6430 |  | Execute cable testing and connection in rest area in Yard 3 | 2d | 2026-02-23 | 2026-02-24 | PSUAY-LZE-ELE-6420 |  |  |  |  | 39d |  | PSUAY - ELETROMEC - 1T - SEM HE | PROFIS [3963.57 h] | PSUAY-LZE-ELE-6430 | CONCLUSÃO | LUZVILLE | YARD 3 | CNT |
|  | 3 | **TOILET - TOILET-01-LV-PN-01-PR-01** |  | 2026-02-23 | 2026-02-27 |  |  |  |  |  |  |  |  |  |  |  |  |  |  |
| PSUAY-LZE-ELE-6440 |  | Execute BT cable pulling in toilet in Yard 3 | 3d | 2026-02-23 | 2026-02-25 | PSUAY-LZE-ELE-6420 |  |  |  |  | 31d | 0d | PSUAY - ELETROMEC - 1T - SEM HE | PROFIS [5311.03 h]; CABLE LOW VOLTAGE [1415 m] | PSUAY-LZE-ELE-6440 | CONCLUSÃO | LUZVILLE | YARD 3 | CNT |
| PSUAY-LZE-ELE-6450 |  | Execute cable preparation and termination in toilet in Yard 3 | 1d | 2026-02-26 | 2026-02-26 | PSUAY-LZE-ELE-6440 |  |  |  |  | 31d | 0d | PSUAY - ELETROMEC - 1T - SEM HE | PROFIS [1981.78 h] | PSUAY-LZE-ELE-6450 | CONCLUSÃO | LUZVILLE | YARD 3 | CNT |
| PSUAY-LZE-ELE-6460 |  | Execute cable testing and connection in toilet in Yard 3 | 1d | 2026-02-27 | 2026-02-27 | PSUAY-LZE-ELE-6450 |  |  |  |  | 31d | 0d | PSUAY - ELETROMEC - 1T - SEM HE | PROFIS [1981.78 h] | PSUAY-LZE-ELE-6460 | CONCLUSÃO | LUZVILLE | YARD 3 | CNT |
|  | 4 | **EV-CHARGER** |  | 2025-12-29 | 2026-03-03 |  |  |  |  |  |  |  |  |  |  |  |  |  |  |
|  | 1 | **EV-CHARGER 04** |  | 2026-01-05 | 2026-02-23 |  |  |  |  |  |  |  |  |  |  |  |  |  |  |
| PSUAY-LZE-ELE-6480 |  | Execute BT cable pulling in EV-04 in Yard 3 | 3d | 2026-01-05 A | 2026-01-17 A | PSUAY-LZE-ELE-6470 | 100% |  | 2026-02-18 | 2026-02-20 |  |  | PSUAY - ELETROMEC - 1T - SEM HE | PROFIS [5442.4 h]; CABLE LOW VOLTAGE [1450 m] | PSUAY-LZE-ELE-6480 | CONCLUSÃO | LUZVILLE | YARD 3 | CNT |
| PSUAY-LZE-ELE-6490 |  | Execute cable preparation and termination in EV-04 in Yard 3 | 2d | 2026-01-12 A | 2026-02-19 | PSUAY-LZE-ELE-6480 | 50% | 2d | 2026-02-23 | 2026-02-24 | 40d | 0d | PSUAY - ELETROMEC - 1T - SEM HE | PROFIS [3963.57 h] | PSUAY-LZE-ELE-6490 | CONCLUSÃO | LUZVILLE | YARD 3 | CNT |
| PSUAY-LZE-ELE-6470 |  | Execute assembly of EV-04 in Yard 3 | 2d | 2026-02-16 | 2026-02-17 | PSUAY-MIL-GER-1280 |  |  |  |  | 30d | 0d | PSUAY - ELETROMEC - 1T - SEM HE | PROFIS [3963.57 h] | PSUAY-LZE-ELE-6470 | CONCLUSÃO | LUZVILLE | YARD 3 | CNT |
| PSUAY-LZE-ELE-6500 |  | Execute cable testing and connection in EV-04 in Yard 3 | 2d | 2026-02-20 | 2026-02-23 | PSUAY-LZE-ELE-6490 |  |  |  |  | 40d |  | PSUAY - ELETROMEC - 1T - SEM HE | PROFIS [3963.57 h] | PSUAY-LZE-ELE-6500 | CONCLUSÃO | LUZVILLE | YARD 3 | CNT |

Notes:
- PSUAY-LZE-ELE-6320: Translate: Executar montagem do painel SCADA do SE-06 no pátio 3
- PSUAY-LZE-ELE-6330: Translate: Executar puxar cabos para o painel SCADA do SE-06 no pátio 3
- PSUAY-LZE-ELE-6340: Translate: Executar preparação, teste e conexão dos cabos do painel SCADA do SE-06 no pátio 3
- PSUAY-LZE-ELE-6350: Translate: Executar montagem do painel SCADA do SE-05 no pátio 3
- PSUAY-LZE-ELE-6360: Translate: Executar puxar cabos para o painel SCADA do SE-05 no Pátio 3
- PSUAY-LZE-ELE-6370: Translate: Executar preparação, teste e conexão dos cabos do painel SCADA do SE-05 no pátio 3
- PSUAY-LZE-ELE-6380: Translate: Executar puxar cabos BT no armazenamento de material no pátio 3
- PSUAY-LZE-ELE-6390: Translate: Executar preparação e terminação de cabos no armazenamento de materiais no Pátio 3
- PSUAY-LZE-ELE-6400: Translate: Execute testes de cabos e conexão no armazenamento de materiais no Pátio 3
- PSUAY-LZE-ELE-6410: Translate: Executar puxar cabo BT na área de descanso do Pátio 3
- PSUAY-LZE-ELE-6420: Translate: Execute a preparação e terminação dos cabos na área de descanso do Pátio 3
- PSUAY-LZE-ELE-6430: Translate: Execute testes de cabo e conexão na área de descanso do pátio 3
- PSUAY-LZE-ELE-6440: Translate: Executar cabo BT puxando o vaso sanitário no pátio 3
- PSUAY-LZE-ELE-6450: Translate: Execute a preparação e terminação dos cabos no vaso sanitário no pátio 3
- PSUAY-LZE-ELE-6460: Translate: Execute testes de cabo e conexão no vaso sanitário no pátio 3
- PSUAY-LZE-ELE-6480: Translate: Executar o cabo BT puxando EV-04 no pátio 3
- PSUAY-LZE-ELE-6490: Translate: Executar a preparação e terminação do cabo no EV-04 no pátio 3
- PSUAY-LZE-ELE-6470: Translate: Executar montagem do EV-04 no pátio 3
- PSUAY-LZE-ELE-6500: Translate: Execute testes de cabo e conexão no EV-04 no pátio 3

| ID | WBS | Activity | Duration | Start | Finish | Predecessors | Complete | Remaining | Planned start | Planned finish | Total float | Free float | Calendar | Resources | ACTIVITY ID COD. | FASES DE ENTREGA | RESPONSÁVEL | ÁREAS | PHASES - YARD |
| --- | --- | --- | --- | --- | --- | --- | --- | --- | --- | --- | --- | --- | --- | --- | --- | --- | --- | --- | --- |
|  | 2 | **EV-CHARGER 03** |  | 2025-12-29 | 2026-02-25 |  |  |  |  |  |  |  |  |  |  |  |  |  |  |
| PSUAY-LZE-ELE-6520 |  | Execute BT cable pulling in EV-03 in Yard 3 | 3d | 2025-12-29 A | 2026-01-07 A | PSUAY-LZE-ELE-6510, PSUAY-LZE-ELE-6480 | 100% |  | 2026-02-23 | 2026-02-25 |  |  | PSUAY - ELETROMEC - 1T - SEM HE | PROFIS [4691.72 h]; CABLE LOW VOLTAGE [1250 m] | PSUAY-LZE-ELE-6520 | CONCLUSÃO | LUZVILLE | YARD 3 | CNT |
| PSUAY-LZE-ELE-6530 |  | Execute cable preparation and termination in EV-03 in Yard 3 | 2d | 2026-01-12 A | 2026-02-23 | PSUAY-LZE-ELE-6520 | 50% | 2d | 2026-02-23 | 2026-02-24 | 38d | 0d | PSUAY - ELETROMEC - 1T - SEM HE | PROFIS [3963.57 h] | PSUAY-LZE-ELE-6530 | CONCLUSÃO | LUZVILLE | YARD 3 | CNT |
| PSUAY-LZE-ELE-6510 |  | Execute assembly of EV-03 in Yard 3 | 2d | 2026-02-18 | 2026-02-19 | PSUAY-LZE-ELE-6470 |  |  |  |  | 30d | 0d | PSUAY - ELETROMEC - 1T - SEM HE | PROFIS [3963.57 h] | PSUAY-LZE-ELE-6510 | CONCLUSÃO | LUZVILLE | YARD 3 | CNT |
| PSUAY-LZE-ELE-6540 |  | Execute cable testing and connection in EV-03 in Yard 3 | 2d | 2026-02-24 | 2026-02-25 | PSUAY-LZE-ELE-6530 |  |  |  |  | 38d |  | PSUAY - ELETROMEC - 1T - SEM HE | PROFIS [3963.57 h] | PSUAY-LZE-ELE-6540 | CONCLUSÃO | LUZVILLE | YARD 3 | CNT |
|  | 3 | **EV-CHARGER 02** |  | 2026-01-05 | 2026-02-27 |  |  |  |  |  |  |  |  |  |  |  |  |  |  |
| PSUAY-LZE-ELE-6560 |  | Execute BT cable pulling in EV-02 in Yard 3 | 2d | 2026-01-05 A | 2026-01-07 A | PSUAY-LZE-ELE-6550, PSUAY-LZE-ELE-6520 | 100% |  | 2026-02-26 | 2026-02-27 |  |  | PSUAY - ELETROMEC - 1T - SEM HE | PROFIS [3903.51 h]; CABLE LOW VOLTAGE [1040 m] | PSUAY-LZE-ELE-6560 | CONCLUSÃO | LUZVILLE | YARD 3 | CNT |
| PSUAY-LZE-ELE-6570 |  | Execute cable preparation and termination in EV-02 in Yard 3 | 2d | 2026-01-12 A | 2026-02-25 | PSUAY-LZE-ELE-6560 | 50% | 2d | 2026-02-24 | 2026-02-25 | 36d | 0d | PSUAY - ELETROMEC - 1T - SEM HE | PROFIS [3963.57 h] | PSUAY-LZE-ELE-6570 | CONCLUSÃO | LUZVILLE | YARD 3 | CNT |
| PSUAY-LZE-ELE-6550 |  | Execute assembly of EV-02 in Yard 3 | 2d | 2026-02-20 | 2026-02-23 | PSUAY-LZE-ELE-6510 |  |  |  |  | 30d | 0d | PSUAY - ELETROMEC - 1T - SEM HE | PROFIS [3963.57 h] | PSUAY-LZE-ELE-6550 | CONCLUSÃO | LUZVILLE | YARD 3 | CNT |
| PSUAY-LZE-ELE-6580 |  | Execute cable testing and connection in EV-02 in Yard 3 | 2d | 2026-02-26 | 2026-02-27 | PSUAY-LZE-ELE-6570 |  |  |  |  | 36d |  | PSUAY - ELETROMEC - 1T - SEM HE | PROFIS [3963.57 h] | PSUAY-LZE-ELE-6580 | CONCLUSÃO | LUZVILLE | YARD 3 | CNT |
|  | 4 | **EV-CHARGER 01** |  | 2026-01-05 | 2026-03-03 |  |  |  |  |  |  |  |  |  |  |  |  |  |  |
| PSUAY-LZE-ELE-6600 |  | Execute BT cable pulling in EV-01 in Yard 3 | 2d | 2026-01-05 A | 2026-01-06 A | PSUAY-LZE-ELE-6590, PSUAY-LZE-ELE-6560 | 100% |  | 2026-03-02 | 2026-03-03 |  |  | PSUAY - ELETROMEC - 1T - SEM HE | PROFIS [3152.84 h]; CABLE LOW VOLTAGE [840 m] | PSUAY-LZE-ELE-6600 | CONCLUSÃO | LUZVILLE | YARD 3 | CNT |
| PSUAY-LZE-ELE-6610 |  | Execute cable preparation and termination in EV-01 in Yard 3 | 2d | 2026-01-12 A | 2026-02-27 | PSUAY-LZE-ELE-6600 | 50% | 2d | 2026-02-26 | 2026-02-27 | 30d | 0d | PSUAY - ELETROMEC - 1T - SEM HE | PROFIS [3963.57 h] | PSUAY-LZE-ELE-6610 | CONCLUSÃO | LUZVILLE | YARD 3 | CNT |
| PSUAY-LZE-ELE-6590 |  | Execute assembly of EV-01 in Yard 3 | 2d | 2026-02-24 | 2026-02-25 | PSUAY-LZE-ELE-6550 |  |  |  |  | 30d | 0d | PSUAY - ELETROMEC - 1T - SEM HE | PROFIS [3963.57 h] | PSUAY-LZE-ELE-6590 | CONCLUSÃO | LUZVILLE | YARD 3 | CNT |
| PSUAY-LZE-ELE-6620 |  | Execute cable testing and connection in EV-01 in Yard 3 | 2d | 2026-03-02 | 2026-03-03 | PSUAY-LZE-ELE-6610 |  |  |  |  | 30d | 0d | PSUAY - ELETROMEC - 1T - SEM HE | PROFIS [3963.57 h] | PSUAY-LZE-ELE-6620 | CONCLUSÃO | LUZVILLE | YARD 3 | CNT |
|  | 5 | **OPTIC FIBER** |  | 2026-03-04 | 2026-03-09 |  |  |  |  |  |  |  |  |  |  |  |  |  |  |
| PSUAY-LZE-ELE-6630 |  | Execute Fiber Optic cable pulling, fusion, and termination (SE-05xEV-01) in Yard 3 | 1d | 2026-03-04 | 2026-03-04 | PSUAY-LZE-ELE-6620 |  |  |  |  | 30d | 0d | PSUAY - ELETROMEC - 1T - SEM HE | PROFIS [428.96 h]; CABLE FIBER OPTICS [80 m] | PSUAY-LZE-ELE-6630 | CONCLUSÃO | LUZVILLE | YARD 3 | CNT |
| PSUAY-LZE-ELE-6640 |  | Execute Fiber Optic cable pulling, fusion, and termination (SE-05xEV-02) in Yard 3 | 1d | 2026-03-05 | 2026-03-05 | PSUAY-LZE-ELE-6630 |  |  |  |  | 30d | 0d | PSUAY - ELETROMEC - 1T - SEM HE | PROFIS [541.56 h]; CABLE FIBER OPTICS [101 m] | PSUAY-LZE-ELE-6640 | CONCLUSÃO | LUZVILLE | YARD 3 | CNT |
| PSUAY-LZE-ELE-6650 |  | Execute Fiber Optic cable pulling, fusion, and termination (SE-05xEV-03) in Yard 3 | 1d | 2026-03-06 | 2026-03-06 | PSUAY-LZE-ELE-6640 |  |  |  |  | 30d | 0d | PSUAY - ELETROMEC - 1T - SEM HE | PROFIS [648.8 h]; CABLE FIBER OPTICS [121 m] | PSUAY-LZE-ELE-6650 | CONCLUSÃO | LUZVILLE | YARD 3 | CNT |
| PSUAY-LZE-ELE-6660 |  | Execute Fiber Optic cable pulling, fusion, and termination (SE-05xEV-04) in Yard 3 | 1d | 2026-03-09 | 2026-03-09 | PSUAY-LZE-ELE-6650 |  |  |  |  | 30d |  | PSUAY - ELETROMEC - 1T - SEM HE | PROFIS [756.04 h]; CABLE FIBER OPTICS [141 m] | PSUAY-LZE-ELE-6660 | CONCLUSÃO | LUZVILLE | YARD 3 | CNT |
|  | 7 | **DG-3** |  | 2026-01-05 | 2026-03-06 |  |  |  |  |  |  |  |  |  |  |  |  |  |  |
|  | 6 | **ELECTRICAL (LUZVILLE)** |  | 2026-01-05 | 2026-03-06 |  |  |  |  |  |  |  |  |  |  |  |  |  |  |
|  | 1 | **CABLE LAUNCH** |  | 2026-01-05 | 2026-03-06 |  |  |  |  |  |  |  |  |  |  |  |  |  |  |
|  | 2 | **SE-07-LV X SE-04-LV** |  | 2026-01-05 | 2026-03-04 |  |  |  |  |  |  |  |  |  |  |  |  |  |  |
| PSUAY-LZE-ELE-6670 |  | Perform cable BT laying for SE-07-LV x SE-04-LV from Yard 3 | 2d | 2026-01-05 A | 2026-01-08 A | PSUAY-LZE-ELE-6460 | 100% |  | 2026-02-20 | 2026-02-23 |  |  | PSUAY - ELETROMEC - 1T - SEM HE | PROFIS [5536.23 h]; CABLE LOW VOLTAGE [1475 m] | PSUAY-LZE-ELE-6670 | CONCLUSÃO | LUZVILLE | YARD 3 | CNT |
| PSUAY-LZE-ELE-6680 |  | Perform cable termination for SE-07-LV x SE-04-LV cables in Yard 3 | 2d | 2026-01-12 A | 2026-03-03 | PSUAY-LZE-ELE-6670 | 50% | 2d | 2026-02-24 | 2026-02-25 | 31d | 0d | PSUAY - ELETROMEC - 1T - SEM HE | PROFIS [3963.57 h] | PSUAY-LZE-ELE-6680 | CONCLUSÃO | LUZVILLE | YARD 3 | CNT |
| PSUAY-LZE-ELE-6690 |  | Perform testing and connection of cables SE-04-LV x SE-06-LV from Yard 3 | 1d | 2026-03-04 | 2026-03-04 | PSUAY-LZE-ELE-6680 |  |  |  |  | 33d |  | PSUAY - ELETROMEC - 1T - SEM HE | PROFIS [1981.78 h] | PSUAY-LZE-ELE-6690 | CONCLUSÃO | LUZVILLE | YARD 3 | CNT |

Notes:
- PSUAY-LZE-ELE-6520: Translate: Execute puxar o cabo BT para o EV-03 no pátio 3
- PSUAY-LZE-ELE-6530: Translate: Executar preparação e terminação do cabo em EV-03 no pátio 3
- PSUAY-LZE-ELE-6510: Translate: Executar montagem do EV-03 no pátio 3
- PSUAY-LZE-ELE-6540: Translate: Execute testes e conexão de cabos no EV-03 no pátio 3
- PSUAY-LZE-ELE-6560: Translate: Execute o cabo BT puxando EV-02 no pátio 3
- PSUAY-LZE-ELE-6570: Translate: Executar preparação e terminação do cabo no EV-02 no pátio 3
- PSUAY-LZE-ELE-6550: Translate: Executar montagem do EV-02 no pátio 3
- PSUAY-LZE-ELE-6580: Translate: Execute testes e conexão de cabos no EV-02 no pátio 3
- PSUAY-LZE-ELE-6600: Translate: Executar o cabo BT puxando EV-01 no pátio 3
- PSUAY-LZE-ELE-6610: Translate: Executar a preparação e terminação dos cabos no EV-01 no pátio 3
- PSUAY-LZE-ELE-6590: Translate: Executar a montagem do EV-01 no pátio 3
- PSUAY-LZE-ELE-6620: Translate: Execute testes de cabo e conexão no EV-01 no pátio 3
- PSUAY-LZE-ELE-6630: Translate: Executar puxação, fusão e terminação de cabos de fibra óptica (SE-05xEV-01) no pátio 3
- PSUAY-LZE-ELE-6640: Translate: Execute puxação, fusão e terminação de cabos de fibra óptica (SE-05xEV-02) no pátio 3
- PSUAY-LZE-ELE-6650: Translate: Executar puxação, fusão e terminação de cabos de fibra óptica (SE-05xEV-03) no pátio 3
- PSUAY-LZE-ELE-6660: Translate: Executar puxação, fusão e terminação de cabos de fibra óptica (SE-05xEV-04) no pátio 3
- PSUAY-LZE-ELE-6670: Translate: Executar lançamento dos cabos SE-07-LV x SE-06-LV do Yard 3'
- PSUAY-LZE-ELE-6680: Translate: Executar terminação dos cabos SE-07-LV x SE-06-LV do Yard 3'
- PSUAY-LZE-ELE-6690: Translate: Executar teste e conectorização dos cabos SE-07-LV x SE-06-LV do Yard 3'

| ID | WBS | Activity | Duration | Start | Finish | Predecessors | Complete | Remaining | Planned start | Planned finish | Total float | Free float | Calendar | Resources | ACTIVITY ID COD. | FASES DE ENTREGA | RESPONSÁVEL | ÁREAS | PHASES - YARD | Check Pred | SERVIÇOS |
| --- | --- | --- | --- | --- | --- | --- | --- | --- | --- | --- | --- | --- | --- | --- | --- | --- | --- | --- | --- | --- | --- |
|  | 3 | **SE-07-LV X SE-03-LV** |  | 2026-01-12 | 2026-03-06 |  |  |  |  |  |  |  |  |  |  |  |  |  |  |  |  |
| PSUAY-LZE-ELE-6700 |  | Perform cable BT laying for SE-07-LV x SE-03-LV from Yard 3' | 3d | 2026-01-12 A | 2026-01-17 A | PSUAY-LZE-ELE-6680 | 100% |  | 2026-02-26 | 2026-03-02 |  |  | PSUAY - ELETROMEC - 1T - SEM HE | PROFIS [12096.6 h]; CABLE LOW VOLTAGE [1880 m] | PSUAY-LZE-ELE-6700 | CONCLUSÃO | LUZVILLE | YARD 3 | CNT |  |  |
| PSUAY-LZE-ELE-6710 |  | Perform cable termination for cables SE-07-LV x SE-03-LV from Yard 3' | 2d | 2026-01-12 A | 2026-03-05 | PSUAY-LZE-ELE-6700 | 50% | 2d | 2026-03-03 | 2026-03-04 | 31d | 0d | PSUAY - ELETROMEC - 1T - SEM HE | PROFIS [3963.57 h] | PSUAY-LZE-ELE-6710 | CONCLUSÃO | LUZVILLE | YARD 3 | CNT |  |  |
| PSUAY-LZE-ELE-6720 |  | Perform testing and connection of cables SE-07-LV x SE-03-LV from Yard 3' | 1d | 2026-03-06 | 2026-03-06 | PSUAY-LZE-ELE-6710 |  |  |  |  | 31d |  | PSUAY - ELETROMEC - 1T - SEM HE | PROFIS [1981.78 h] | PSUAY-LZE-ELE-6720 | CONCLUSÃO | LUZVILLE | YARD 3 | CNT |  |  |
|  | 6 | **YARD 4** |  | 2025-11-10 | 2026-03-31 |  |  |  |  |  |  |  |  |  |  |  |  |  |  |  |  |
|  | 1 | **PAVEMENT** |  | 2025-11-10 | 2026-02-25 |  |  |  |  |  |  |  |  |  |  |  |  |  |  |  |  |
|  | 2 | **PAVEMENT TYPE 10** |  | 2025-11-10 | 2026-02-17 |  |  |  |  |  |  |  |  |  |  |  |  |  |  |  |  |
|  | 1 | **SUBGRADE** |  | 2025-11-10 | 2026-01-10 |  |  |  |  |  |  |  |  |  |  |  |  |  |  |  |  |
| PSUAY-CAG-INF-6730 |  | Execute subgrade | 12d | 2025-11-10 A | 2026-01-10 A | PSUAY-MIL-GER-1450 | 100% |  | 2025-12-08 | 2025-12-23 |  |  |  | PROFIS [887683 h] | PSUAY-CAG-INF-6730 | CONCLUSÃO | CONSAG | YARD 4 | CNT | UDF_G1 |  |
|  | 2 | **BGTC** |  | 2025-11-10 | 2026-01-10 |  |  |  |  |  |  |  |  |  |  |  |  |  |  |  |  |
| PSUAY-CAG-INF-6740 |  | Aplication BGTC | 39.02d | 2025-11-10 A | 2026-01-10 A | PSUAY-CAG-INF-6730 SS | 100% |  | 2025-12-08 | 2026-01-08 |  |  | PSUAY - CIVIL - 2T - HE SAB | PROFIS [108228 h]; CEMENT SOIL (BGTC) [19708.5 m³] | PSUAY-CAG-INF-6740 | CONCLUSÃO | CONSAG | YARD 4 | CNT | UDF_G1 | PAV-BGTC/BGS |
|  | 3 | **CONCRETE** |  | 2025-11-17 | 2026-02-06 |  |  |  |  |  |  |  |  |  |  |  |  |  |  |  |  |
| PSUAY-CAG-INF-6750 |  | Concrete - Area 01 - 3060 (D) | 9.76d | 2025-11-17 A | 2025-12-13 A | PSUAY-CAG-INF-6740 SS+10.73d | 100% |  | 2025-11-17 | 2025-11-22 |  |  | PSUAY - CIVIL - 2T - HE SAB | PROFIS [16865.9 h]; CONCRETE-PAVEMENT [2568.97 m³] | PSUAY-CAG-INF-6750 | CONCLUSÃO | CONSAG | YARD 4 | CNT | UDF_G1 | PAV-CONC |
| PSUAY-CAG-INF-6760 |  | Concrete - Area 02 - 3480 (E) | 11.71d | 2025-11-22 A | 2025-12-13 A | PSUAY-CAG-INF-6750 | 100% |  | 2025-12-08 | 2025-12-15 |  |  | PSUAY - CIVIL - 2T - HE SAB | PROFIS [22834.5 h]; CONCRETE-PAVEMENT [3478.1 m³] | PSUAY-CAG-INF-6760 | CONCLUSÃO | CONSAG | YARD 4 | CNT |  | PAV-CONC |
| PSUAY-CAG-INF-6770 |  | Concrete - Area 03 - 3040 (F) | 11.71d | 2025-12-13 A | 2025-12-19 A | PSUAY-CAG-INF-6760 SS | 100% |  | 2025-12-13 | 2025-12-22 |  |  | PSUAY - CIVIL - 2T - HE SAB | PROFIS [19980.2 h]; CONCRETE-PAVEMENT [3043.34 m³] | PSUAY-CAG-INF-6770 | CONCLUSÃO | CONSAG | YARD 4 | CNT |  | PAV-CONC |
| PSUAY-CAG-INF-6780 |  | Concrete - Area 04 - 3340 (G) | 11.71d | 2025-12-15 A | 2025-12-23 A | PSUAY-CAG-INF-6770 SS+1d | 100% |  |  |  |  |  | PSUAY - CIVIL - 2T - HE SAB | PROFIS [21921.1 h]; CONCRETE-PAVEMENT [3338.98 m³] | PSUAY-CAG-INF-6780 | CONCLUSÃO | CONSAG | YARD 4 | CNT |  | PAV-CONC |
| PSUAY-CAG-INF-6790 |  | Concrete - Area 05 - 3780 (H) | 9.76d | 2025-12-15 A | 2025-12-23 A | PSUAY-CAG-INF-2190 | 100% |  | 2026-01-09 | 2026-01-16 |  |  | PSUAY - CIVIL - 2T - HE SAB | PROFIS [18267.6 h]; CONCRETE-PAVEMENT [2782.48 m³] | PSUAY-CAG-INF-6790 | CONCLUSÃO | CONSAG | YARD 4 | CNT |  | PAV-CONC |
| PSUAY-CAG-INF-6800 |  | Concrete - Area 06 - 3130 (I) | 11.71d | 2025-12-16 A | 2026-01-30 | PSUAY-CAG-INF-6790 SS | 80% | 8d | 2026-01-16 | 2026-01-23 | 65.88d | 0d | PSUAY - CIVIL - 2T - HE SAB | PROFIS [20551.1 h]; CONCRETE-PAVEMENT [3130.29 m³] | PSUAY-CAG-INF-6800 | CONCLUSÃO | CONSAG | YARD 4 | CNT |  | PAV-CONC |
| PSUAY-CAG-INF-6810 |  | Concrete - Area 07 - 3410 (J) | 13.66d | 2025-12-22 A | 2026-02-06 | PSUAY-CAG-INF-6800 | 80% | 11d | 2026-01-22 | 2026-01-30 | 65.88d | 1.49d | PSUAY - CIVIL - 2T - HE SAB | PROFIS [22377.8 h]; CONCRETE-PAVEMENT [3408.54 m³] | PSUAY-CAG-INF-6810 | CONCLUSÃO | CONSAG | YARD 4 | CNT |  | PAV-CONC |
|  | 4 | **SAND BEDDING (PREMACIL)** |  | 2025-12-19 | 2026-02-17 |  |  |  |  |  |  |  |  |  |  |  |  |  |  |  |  |
| PSUAY-PMC-INF-6820 |  | Sand bedding - Area 01 | 18d | 2025-12-19 A | 2026-02-13 | PSUAY-CAG-INF-6750 SS, PSUAY-PMC-INF-2760 SS | 17% | 15d | 2026-01-06 | 2026-01-30 | 46d | 0d |  | PROFIS [66787.4 h] | PSUAY-PMC-INF-6820 | CONCLUSÃO | PREMACIL | YARD 4 | CNT | UDF_G1 | PAV-SAND |
| PSUAY-PMC-INF-6830 |  | Sand bedding - Area 02 | 18d | 2025-12-29 A | 2026-02-17 | PSUAY-PMC-INF-2210 | 17% | 15d | 2026-01-16 | 2026-02-10 | 28d | 0d |  | PROFIS [66787.4 h] | PSUAY-PMC-INF-6830 | CONCLUSÃO | PREMACIL | YARD 4 | CNT |  | PAV-SAND |
|  | 5 | **PAVER (PREMACIL)** |  | 2025-12-19 | 2026-02-17 |  |  |  |  |  |  |  |  |  |  |  |  |  |  |  |  |
| PSUAY-CAG-INF-6840 |  | Block Paver - Area 01 | 18d | 2025-12-19 A | 2026-02-13 | PSUAY-PMC-INF-6820 FF, PSUAY-PMC-INF-2780 | 28% | 13d | 2026-01-07 | 2026-02-02 | 46d | 0d |  | PSUAY - PAVIMENTO (BLOCK PAVER - M2) [37070.7 m²]; PROFIS [183665 h] | PSUAY-CAG-INF-6840 | CONCLUSÃO | PREMACIL | YARD 4 | CNT | UDF_G1 | PAV-PAVER |
| PSUAY-CAG-INF-6850 |  | Block Paver - Area 02 | 18d | 2025-12-29 A | 2026-02-17 | PSUAY-PMC-INF-2230 | 17% | 15d | 2026-01-16 | 2026-02-10 | 29d | 1d |  | PSUAY - PAVIMENTO (BLOCK PAVER - M2) [37070.7 m²]; PROFIS [183665 h] | PSUAY-CAG-INF-6850 | CONCLUSÃO | PREMACIL | YARD 4 | CNT |  | PAV-PAVER |

Notes:
- PSUAY-LZE-ELE-6700: Translate: Executar lançamento dos cabos SE-07-LV x SE-05-LV do Yard 3'
- PSUAY-LZE-ELE-6710: Translate: Executar terminação dos cabos cabos SE-07-LV x SE-05-LV do Yard 3'
- PSUAY-LZE-ELE-6720: Translate: Executar teste e conectorização dos cabos cabos SE-07-LV x SE-05-LV do Yard 3'
- PSUAY-CAG-INF-6730: Translate: Execução de sub-base
- PSUAY-CAG-INF-6740: Translate: Aplicação de BGTC
- PSUAY-CAG-INF-6750: Translate: Concreto - Área 01 - 3060m³ (D)
- PSUAY-CAG-INF-6760: Translate: Concreto - Área 02 - 3480m³ (E)
- PSUAY-CAG-INF-6770: Translate: Concreto - Área 03 - 3040m³ (F)
- PSUAY-CAG-INF-6780: Translate: Concreto - Área 04 - 3340m³ (G)
- PSUAY-CAG-INF-6790: Translate: Concreto - Área 05 - 3780m³
- PSUAY-CAG-INF-6800: Translate: Concreto - Área 06 - 3130m³
- PSUAY-CAG-INF-6810: Translate: Concreto - Área 07 - 3410m³
- PSUAY-PMC-INF-6820: Translate: Berço de areia - Área 01
- PSUAY-PMC-INF-6830: Translate: Berço de areia - Área 02
- PSUAY-CAG-INF-6840: Translate: Aplicação de bloco intertravado - Área 01
- PSUAY-CAG-INF-6850: Translate: Aplicação de bloco intertravado - Área 02

| ID | WBS | Activity | Duration | Start | Finish | Predecessors | Complete | Remaining | Planned start | Planned finish | Total float | Free float | Resources | Translate | Check Pred | ACTIVITY ID COD. | FASES DE ENTREGA | RESPONSÁVEL | ÁREAS | PHASES - YARD | SERVIÇOS |
| --- | --- | --- | --- | --- | --- | --- | --- | --- | --- | --- | --- | --- | --- | --- | --- | --- | --- | --- | --- | --- | --- |
|  | 3 | **PAVEMENT TYPE 05B** |  | 2025-12-08 | 2026-01-26 |  |  |  |  |  |  |  |  |  |  |  |  |  |  |  |  |
|  | 1 | **SUBGRADE** |  | 2025-12-08 | 2025-12-13 |  |  |  |  |  |  |  |  |  |  |  |  |  |  |  |  |
| PSUAY-CAG-INF-6860 |  | Execute subgrade | 4d | 2025-12-08 A | 2025-12-13 A | PSUAY-CAG-INF-6780 | 100% |  | 2025-12-16 | 2025-12-22 |  |  | PROFIS [17946.4 h] | Executar de sub-base | UDF_G1 | PSUAY-CAG-INF-6860 | CONCLUSÃO | CONSAG | YARD 4 | CNT |  |
|  | 2 | **BGTC/BGS** |  | 2025-12-08 | 2025-12-23 |  |  |  |  |  |  |  |  |  |  |  |  |  |  |  |  |
| PSUAY-CAG-INF-6870 |  | Aplication BGTC/BGS | 2d | 2025-12-08 A | 2025-12-23 A | PSUAY-CAG-INF-6860 FS+4d | 100% |  | 2025-12-31 | 2026-01-05 |  |  | PROFIS [2188.05 h]; CEMENT SOIL (BGTC) [398.45 m³] | Aplicação BGTC/BGS | UDF_G1 | PSUAY-CAG-INF-6870 | CONCLUSÃO | CONSAG | YARD 4 | CNT | PAV-BGTC/BGS |
|  | 3 | **CONCRETE** |  | 2025-12-08 | 2026-01-26 |  |  |  |  |  |  |  |  |  |  |  |  |  |  |  |  |
| PSUAY-CAG-INF-6880 |  | Execute concrete of pavement type 05 in Yard 4 | 1d | 2025-12-08 A | 2026-01-26 | PSUAY-CAG-INF-6870 | 36% | 1d | 2026-01-06 | 2026-01-06 | 38d | 0d | PROFIS [1831.14 h]; CONCRETE-PAVEMENT [278.92 m³] | Executar concreto do tipo 05 no pátio 4 | UDF_G1 | PSUAY-CAG-INF-6880 | CONCLUSÃO | CONSAG | YARD 4 | CNT | PAV-CONC |
|  | 4 | **PAVEMENT TYPE 07** |  | 2026-01-05 | 2026-02-19 |  |  |  |  |  |  |  |  |  |  |  |  |  |  |  |  |
|  | 3 | **SUBGRADE** |  | 2026-01-05 | 2026-01-10 |  |  |  |  |  |  |  |  |  |  |  |  |  |  |  |  |
| PSUAY-CAG-INF-6890 |  | Execute subgrade of pavement type 07 in Yard 4 | 9d | 2026-01-05 A | 2026-01-10 A | PSUAY-CAG-INF-6880 FS+5d | 100% |  | 2026-01-20 | 2026-01-30 |  |  | PROFIS [34386.6 h] | Executar o subnível do pavimento tipo 07 no pátio 4 | UDF_G1 | PSUAY-CAG-INF-6890 | CONCLUSÃO | CONSAG | YARD 4 | CNT |  |
|  | 1 | **BGTC/BGS** |  | 2026-02-03 | 2026-02-13 |  |  |  |  |  |  |  |  |  |  |  |  |  |  |  |  |
| PSUAY-CAG-INF-6900 |  | Execute sub-base of pavement type 07 in Yard 4 | 9d | 2026-02-03 | 2026-02-13 | PSUAY-CAG-INF-6890 |  |  |  |  | 38d | 0d | PROFIS [34386.6 h] | Execução da sub-base do tipo de pavimento 07 no pátio 4 | UDF_G1 | PSUAY-CAG-INF-6900 | CONCLUSÃO | CONSAG | YARD 4 | CNT | PAV-BGTC/BGS |
|  | 4 | **SAND BEDDING (PREMACIL)** |  | 2026-02-16 | 2026-02-19 |  |  |  |  |  |  |  |  |  |  |  |  |  |  |  |  |
| PSUAY-PMC-INF-6910 |  | Execute sand bedding of pavement type 07 in Yard 4 | 4d | 2026-02-16 | 2026-02-19 | PSUAY-CAG-INF-6900 |  |  |  |  | 38d | 0d | PROFIS [2750.93 h] | Executar o revestimento de areia do tipo 07 no pátio 4 | UDF_G1 | PSUAY-PMC-INF-6910 | CONCLUSÃO | PREMACIL | YARD 4 | CNT | PAV-SAND |
|  | 2 | **PAVER (PREMACIL)** |  | 2026-02-16 | 2026-02-19 |  |  |  |  |  |  |  |  |  |  |  |  |  |  |  |  |
| PSUAY-PMC-INF-6920 |  | Execute paver of pavement type 07 in Yard 4 | 4d | 2026-02-16 | 2026-02-19 | PSUAY-PMC-INF-6910 FF |  |  |  |  | 38d | 0d | PSUAY - PAVIMENTO (BLOCK PAVER - M2) [1526.92 m²]; PROFIS [7565.06 h] | Executar pavimentação do tipo 07 no Pátio 4 | UDF_G1 | PSUAY-PMC-INF-6920 | CONCLUSÃO | PREMACIL | YARD 4 | CNT | PAV-PAVER |
|  | 1 | **PAVEMENT TYPE 08 (LANDSCAPING)** |  | 2026-02-20 | 2026-02-25 |  |  |  |  |  |  |  |  |  |  |  |  |  |  |  |  |
|  | 1 | **SUBGRADE** |  | 2026-02-20 | 2026-02-20 |  |  |  |  |  |  |  |  |  |  |  |  |  |  |  |  |
| PSUAY-CAG-INF-6930 |  | Execute sub-grade layer of type 08 pavement in Yard 4 | 1d | 2026-02-20 | 2026-02-20 | PSUAY-PMC-INF-6920 |  |  |  |  | 38d | 0d | PROFIS [8269.44 h] | Executar camada subterrânea do pavimento tipo 08 no Pátio 4 | UDF_G1 | PSUAY-CAG-INF-6930 | CONCLUSÃO | CONSAG | YARD 4 | CNT |  |
|  | 2 | **TOPSOIL** |  | 2026-02-23 | 2026-02-23 |  |  |  |  |  |  |  |  |  |  |  |  |  |  |  |  |
| PSUAY-CAG-INF-6940 |  | Execute topsoil layer of type 08 pavement in Yard 4 | 1d | 2026-02-23 | 2026-02-23 | PSUAY-CAG-INF-6930 |  |  |  |  | 38d | 0d | PROFIS [8269.44 h] | Executar camada superficial de solo do tipo 08 no Pátio 4 | UDF_G1 | PSUAY-CAG-INF-6940 | CONCLUSÃO | CONSAG | YARD 4 | CNT |  |
|  | 3 | **GRASS/VEGETATION** |  | 2026-02-24 | 2026-02-25 |  |  |  |  |  |  |  |  |  |  |  |  |  |  |  |  |
| PSUAY-CAG-INF-6950 |  | Execute grass/vegetation of type 08 pavement in Yard 4 | 2d | 2026-02-24 | 2026-02-25 | PSUAY-CAG-INF-6940 |  |  |  |  | 38d |  | PROFIS [33077.8 h] | Executar grama/vegetação do tipo 08 no Pátio 4 | UDF_G1 | PSUAY-CAG-INF-6950 | CONCLUSÃO | CONSAG | YARD 4 | CNT |  |
|  | 5 | **KERB** |  | 2026-01-26 | 2026-02-11 |  |  |  |  |  |  |  |  |  |  |  |  |  |  |  |  |
| PSUAY-CAG-INF-6960 |  | Execute medium duty concrete kerb | 13d | 2026-01-26 | 2026-02-11 | PSUAY-CAG-INF-6870 FF |  |  |  |  | 17d | 0d | PROFIS [27667.8 h] | Executar meio-fio de concreto de média cilindrada |  | PSUAY-CAG-INF-6960 | CONCLUSÃO | CONSAG | YARD 4 | CNT |  |

| ID | WBS | Activity | Duration | Start | Finish | Predecessors | Complete | Remaining | Planned start | Planned finish | Total float | Free float | Resources | Check Pred | ACTIVITY ID COD. | FASES DE ENTREGA | RESPONSÁVEL | ÁREAS | PHASES - YARD | Atualização |
| --- | --- | --- | --- | --- | --- | --- | --- | --- | --- | --- | --- | --- | --- | --- | --- | --- | --- | --- | --- | --- |
|  | 2 | **STRUCTURE** |  | 2025-11-10 | 2026-03-10 |  |  |  |  |  |  |  |  |  |  |  |  |  |  |  |
|  | 1 | **DRAIN** |  | 2025-12-01 | 2026-02-20 |  |  |  |  |  |  |  |  |  |  |  |  |  |  |  |
|  | 2 | **BOX DRAIN** |  | 2025-12-01 | 2026-02-20 |  |  |  |  |  |  |  |  |  |  |  |  |  |  |  |
| PSUAY-CAG-CIV-6970 |  | Execute slot drain in Yard 4 (Canaleta 03) | 20d | 2025-12-01 A | 2025-12-06 A | PSUAY-MIL-GER-1450 | 100% |  | 2025-12-01 | 2025-12-30 |  |  | PROFIS [6681.01 h]; SURFACE DRAIN [178 m] | UDF_G1 | PSUAY-CAG-CIV-6970 | CONCLUSÃO | CONSAG | YARD 4 | CNT |  |
| PSUAY-CAG-CIV-6980 |  | Execute slot drain in Yard 4 (Canaleta 04) | 20d | 2026-01-05 A | 2026-02-20 | PSUAY-CAG-CIV-6970 | 20% | 20d | 2026-01-05 | 2026-01-30 | 41d |  | PROFIS [6681.01 h]; SURFACE DRAIN [178 m] | UDF_G1 | PSUAY-CAG-CIV-6980 | CONCLUSÃO | CONSAG | YARD 4 | CNT |  |
|  | 2 | **BUSBAR - D** |  | 2025-11-14 | 2026-01-23 |  |  |  |  |  |  |  |  |  |  |  |  |  |  |  |
|  | 4 | **BUSBAR - D - 2ND PHASE** |  | 2025-11-14 | 2026-01-23 |  |  |  |  |  |  |  |  |  |  |  |  |  |  |  |
| PSUAY-CAG-CIV-6990 |  | Execute Busbar D formwork form Yard 4 (2nd stage) | 3d | 2025-11-14 A | 2026-01-21 A | PSUAY-CAG-INF-6750 FF+3d | 100% |  | 2025-11-14 | 2025-11-18 |  |  | PROFIS [9944.95 h] | UDF_G1 | PSUAY-CAG-CIV-6990 | CONCLUSÃO | CONSAG | YARD 4 | CNT | OK |
| PSUAY-CAG-CIV-7000 |  | Execute concrete of Busbar D in Yard 4 (2nd stage) | 2d | 2025-11-17 A | 2026-01-23 A | PSUAY-CAG-CIV-6990 | 100% |  | 2025-11-17 | 2025-11-18 |  |  | PROFIS [23386.2 h]; CONCRETE-STRUCTURE [19.32 m³] | UDF_G1 | PSUAY-CAG-CIV-7000 | CONCLUSÃO | CONSAG | YARD 4 | CNT | OK |
|  | 5 | **BASE (PANEL FOUNDATION)** |  | 2025-11-19 | 2026-01-23 |  |  |  |  |  |  |  |  |  |  |  |  |  |  |  |
| PSUAY-CAG-CIV-7010 |  | Execute base foundation of Busbar D panels in Yard 4 | 1d | 2025-11-19 A | 2026-01-23 A | PSUAY-CAG-CIV-7000 | 100% |  | 2025-11-19 | 2025-11-19 |  |  | PROFIS [1210.46 h] | UDF_G1 | PSUAY-CAG-CIV-7010 | CONCLUSÃO | CONSAG | YARD 4 | CNT | OK |
|  | 2 | **ASSEMBLY (CONDUCTIX)** |  | 2025-11-20 | 2025-11-20 |  |  |  |  |  |  |  |  |  |  |  |  |  |  |  |
| PSUAY-CDX-GER-7020 |  | Handover for assembly of Busbar D in Yard 4 | 0.12d | 2025-11-20 A | 2025-11-20 A | PSUAY-CAG-CIV-7010 | 100% |  |  |  |  |  | PROFIS [1 h] | UDF_G1 | PSUAY-CDX-GER-7020 | CONCLUSÃO | CONDUCTIX | YARD 4 | ENG | OK |
|  | 3 | **BUSBAR - E** |  | 2025-12-01 | 2026-01-26 |  |  |  |  |  |  |  |  |  |  |  |  |  |  |  |
|  | 4 | **BUSBAR - E - 2ND PHASE** |  | 2025-12-01 | 2026-01-23 |  |  |  |  |  |  |  |  |  |  |  |  |  |  |  |
| PSUAY-CAG-CIV-7030 |  | Execute Busbar E formwork from Yard 4 (2nd stage) | 3d | 2025-12-01 A | 2026-01-21 A | PSUAY-CAG-INF-6760 FF+3d | 100% |  | 2025-12-12 | 2025-12-17 |  |  | PROFIS [9944.95 h] | UDF_G1 | PSUAY-CAG-CIV-7030 | CONCLUSÃO | CONSAG | YARD 4 | CNT | OK |
| PSUAY-CAG-CIV-7040 |  | Execute concrete of Busbar E in Yard 4 (2nd stage) | 2d | 2025-12-01 A | 2026-01-23 A | PSUAY-CAG-CIV-7030 | 100% |  | 2025-12-17 | 2025-12-19 |  |  | PROFIS [23386.2 h]; CONCRETE-STRUCTURE [19.32 m³] | UDF_G1 | PSUAY-CAG-CIV-7040 | CONCLUSÃO | CONSAG | YARD 4 | CNT | OK |
|  | 5 | **BASE (PANEL FOUNDATION)** |  | 2025-12-01 | 2026-01-23 |  |  |  |  |  |  |  |  |  |  |  |  |  |  |  |
| PSUAY-CAG-CIV-7050 |  | Execute base foundation of Busbar E panels in Yard 4 | 1d | 2025-12-01 A | 2026-01-23 A | PSUAY-CAG-CIV-7040 | 100% |  | 2025-12-19 | 2025-12-22 |  |  | PROFIS [1210.46 h] | UDF_G1 | PSUAY-CAG-CIV-7050 | CONCLUSÃO | CONSAG | YARD 4 | CNT |  |
|  | 2 | **ASSEMBLY (CONDUCTIX)** |  | 2026-01-26 | 2026-01-26 |  |  |  |  |  |  |  |  |  |  |  |  |  |  |  |
| PSUAY-CDX-GER-7060 |  | Handorver for assembly of Busbar E in Yard 4 | 0d | 2026-01-26 | 2026-01-26 | PSUAY-CAG-CIV-7050 |  |  |  |  | 61d |  | PROFIS | UDF_G1 | PSUAY-CDX-GER-7060 | CONCLUSÃO | CONDUCTIX | YARD 4 | ENG |  |
|  | 4 | **BUSBAR - F** |  | 2026-01-26 | 2026-02-03 |  |  |  |  |  |  |  |  |  |  |  |  |  |  |  |
|  | 4 | **BUSBAR - F - 2ND PHASE** |  | 2026-01-26 | 2026-01-30 |  |  |  |  |  |  |  |  |  |  |  |  |  |  |  |
| PSUAY-CAG-CIV-7070 |  | Execute Busbar F formwork from Yard 4 (2nd stage) | 3d | 2026-01-26 | 2026-01-28 | PSUAY-CAG-INF-6770 FF+3d |  |  |  |  | 55d | 0d | PROFIS [9944.95 h] | UDF_G1 | PSUAY-CAG-CIV-7070 | CONCLUSÃO | CONSAG | YARD 4 | CNT |  |
| PSUAY-CAG-CIV-7080 |  | Execute concrete of Busbar F in Yard 4 (2nd stage) | 2d | 2026-01-29 | 2026-01-30 | PSUAY-CAG-CIV-7070 |  |  |  |  | 55d | 0d | PROFIS [23386.2 h]; CONCRETE-STRUCTURE [19.32 m³] | UDF_G1 | PSUAY-CAG-CIV-7080 | CONCLUSÃO | CONSAG | YARD 4 | CNT |  |

Notes:
- PSUAY-CAG-CIV-6970: Translate: Executar slotdrain no Pátio 4 (Canaleta 03)
- PSUAY-CAG-CIV-6980: Translate: Executar drenagem de ranhura no Pátio 4 (Canaleta 04)
- PSUAY-CAG-CIV-6990: Translate: Executar a forma de cofragem Busbar D Yard 4 (2ª etapa)
- PSUAY-CAG-CIV-7000: Translate: Executar concreto do Barramento D no Pátio 4 (2ª etapa)
- PSUAY-CAG-CIV-7010: Translate: Executar a fundação base dos painéis D do barramento no pátio 4
- PSUAY-CDX-GER-7020: Translate: Entrega para montagem da Barra Coletora D no Pátio 4
- PSUAY-CAG-CIV-7030: Translate: Executar a formagem Busbar E a partir do Pátio 4 (2ª etapa)
- PSUAY-CAG-CIV-7040: Translate: Executar concreto da Barra Coletora E no Pátio 4 (2ª etapa)
- PSUAY-CAG-CIV-7050: Translate: Executar a fundação base dos painéis E do barramento coletor no pátio 4
- PSUAY-CDX-GER-7060: Translate: Handorver para montagem da Barra Coletora E no pátio 4
- PSUAY-CAG-CIV-7070: Translate: Executar a cofragem Busbar F do Pátio 4 (2ª etapa)
- PSUAY-CAG-CIV-7080: Translate: Executar concreto da Barra Coletora F no Pátio 4 (2ª etapa)

| ID | WBS | Activity | Duration | Start | Finish | Predecessors | Complete | Planned start | Planned finish | Total float | Free float | Calendar | Resources | Check Pred | ACTIVITY ID COD. | FASES DE ENTREGA | RESPONSÁVEL | ÁREAS | PHASES - YARD | Atualização |
| --- | --- | --- | --- | --- | --- | --- | --- | --- | --- | --- | --- | --- | --- | --- | --- | --- | --- | --- | --- | --- |
|  | 5 | **BASE (PANEL FOUNDATION)** |  | 2026-02-02 | 2026-02-02 |  |  |  |  |  |  |  |  |  |  |  |  |  |  |  |
| PSUAY-CAG-CIV-7090 |  | Execute base foundation of Busbar F panels in Yard 4 | 1d | 2026-02-02 | 2026-02-02 | PSUAY-CAG-CIV-7080 |  |  |  | 55d | 0d |  | PROFIS [1210.46 h] | UDF_G1 | PSUAY-CAG-CIV-7090 | CONCLUSÃO | CONSAG | YARD 4 | CNT |  |
|  | 2 | **ASSEMBLY (CONDUCTIX)** |  | 2026-02-03 | 2026-02-03 |  |  |  |  |  |  |  |  |  |  |  |  |  |  |  |
| PSUAY-CDX-GER-7100 |  | Execute assembly of Busbar F in Yard 4 | 0d | 2026-02-03 | 2026-02-03 | PSUAY-CAG-CIV-7090 |  |  |  | 55d |  |  | PROFIS | UDF_G1 | PSUAY-CDX-GER-7100 | CONCLUSÃO | CONDUCTIX | YARD 4 | CNT |  |
|  | 5 | **BUSBAR - G** |  | 2026-01-26 | 2026-02-03 |  |  |  |  |  |  |  |  |  |  |  |  |  |  |  |
|  | 4 | **BUSBAR - G - 2ND PHASE** |  | 2026-01-26 | 2026-01-30 |  |  |  |  |  |  |  |  |  |  |  |  |  |  |  |
| PSUAY-CAG-CIV-7110 |  | Execute Busbar G formwork from Yard 4 (2nd stage) | 3d | 2026-01-26 | 2026-01-28 | PSUAY-CAG-INF-6780 FF+3d |  |  |  | 55d | 0d |  | PROFIS [9944.95 h] | UDF_G1 | PSUAY-CAG-CIV-7110 | CONCLUSÃO | CONSAG | YARD 4 | CNT |  |
| PSUAY-CAG-CIV-7120 |  | Execute concrete of Busbar G in Yard 4 (2nd stage) | 2d | 2026-01-29 | 2026-01-30 | PSUAY-CAG-CIV-7110 |  |  |  | 55d | 0d |  | PROFIS [23386.2 h]; CONCRETE-STRUCTURE [19.32 m³] | UDF_G1 | PSUAY-CAG-CIV-7120 | CONCLUSÃO | CONSAG | YARD 4 | CNT |  |
|  | 5 | **BASE (PANEL FOUNDATION)** |  | 2026-02-02 | 2026-02-02 |  |  |  |  |  |  |  |  |  |  |  |  |  |  |  |
| PSUAY-CAG-CIV-7130 |  | Execute base foundation of Busbar G panels in Yard 4 | 1d | 2026-02-02 | 2026-02-02 | PSUAY-CAG-CIV-7120 |  |  |  | 55d | 0d |  | PROFIS [1210.46 h] | UDF_G1 | PSUAY-CAG-CIV-7130 | CONCLUSÃO | CONSAG | YARD 4 | CNT |  |
|  | 2 | **ASSEMBLY (CONDUCTIX)** |  | 2026-02-03 | 2026-02-03 |  |  |  |  |  |  |  |  |  |  |  |  |  |  |  |
| PSUAY-CDX-GER-7140 |  | Handover for assembly of Busbar G in Yard 4 | 0d | 2026-02-03 | 2026-02-03 | PSUAY-CAG-CIV-7130 |  |  |  | 55d |  |  | PROFIS | UDF_G1 | PSUAY-CDX-GER-7140 | CONCLUSÃO | CONDUCTIX | YARD 4 | CNT |  |
|  | 10 | **REEFER RACKS** |  | 2025-11-10 | 2026-02-13 |  |  |  |  |  |  |  |  |  |  |  |  |  |  |  |
|  | 1 | **ASSEMBLY** |  | 2025-11-10 | 2026-02-06 |  |  |  |  |  |  |  |  |  |  |  |  |  |  |  |
|  | 1 | **STEEL STRUCTURE (BRAFER)** |  | 2025-11-10 | 2026-01-23 |  |  |  |  |  |  |  |  |  |  |  |  |  |  |  |
| PSUAY-BRF-EST-7150 |  | Execute metal structure of Reefer racks nº1 in Yard 4 | 10d | 2025-11-10 A | 2026-01-17 A | PSUAY-MIL-GER-6425 | 100% | 2025-11-10 | 2025-11-21 |  |  | PSUAY - ELETROMEC - 1T - SEM HE | PROFIS [517138 h]; PSUAY-STE-STRUC [45.93 T] | UDF_G1 | PSUAY-BRF-EST-7150 | CONCLUSÃO | BRAFER | YARD 4 | CNT |  |
| PSUAY-BRF-EST-7160 |  | Execute metal structure of Reefer racks nº2 in Yard 4 | 10d | 2025-12-01 A | 2025-12-19 A | PSUAY-BRF-EST-7150 SS | 100% | 2025-12-01 | 2025-12-12 |  |  | PSUAY - ELETROMEC - 1T - SEM HE | PROFIS [517138 h]; PSUAY-STE-STRUC [45.93 T] |  | PSUAY-BRF-EST-7160 | CONCLUSÃO | BRAFER | YARD 4 | CNT |  |
| PSUAY-BRF-EST-7170 |  | Execute metal structure of Reefer racks nº3 in Yard 4 | 9d | 2025-12-01 A | 2025-12-19 A | PSUAY-BRF-EST-7160 SS | 100% | 2025-12-15 | 2025-12-29 |  |  | PSUAY - ELETROMEC - 1T - SEM HE | PROFIS [517138 h]; PSUAY-STE-STRUC [45.93 T] |  | PSUAY-BRF-EST-7170 | CONCLUSÃO | BRAFER | YARD 4 | CNT |  |
| PSUAY-BRF-EST-7180 |  | Execute metal structure of Reefer racks nº4 in Yard 4 | 8d | 2025-12-01 A | 2025-12-19 A | PSUAY-BRF-EST-7170 | 100% | 2025-12-30 | 2026-01-12 |  |  | PSUAY - ELETROMEC - 1T - SEM HE | PROFIS [517138 h]; PSUAY-STE-STRUC [45.93 T] |  | PSUAY-BRF-EST-7180 | CONCLUSÃO | BRAFER | YARD 4 | CNT |  |
| PSUAY-BRF-EST-7190 |  | Execute metal structure of Reefer racks nº5 in Yard 4 | 8d | 2026-01-12 A | 2026-01-17 A | PSUAY-BRF-EST-7180 | 100% | 2026-01-12 | 2026-01-21 |  |  | PSUAY - ELETROMEC - 1T - SEM HE | PROFIS [517138 h]; PSUAY-STE-STRUC [45.93 T] |  | PSUAY-BRF-EST-7190 | CONCLUSÃO | BRAFER | YARD 4 | CNT | OK |
| PSUAY-BRF-EST-7200 |  | Execute metal structure of Reefer racks nº6 in Yard 4 | 7d | 2026-01-12 A | 2026-01-23 A | PSUAY-BRF-EST-7190 | 100% | 2026-01-22 | 2026-01-30 |  |  | PSUAY - ELETROMEC - 1T - SEM HE | PROFIS [517138 h]; PSUAY-STE-STRUC [45.93 T] |  | PSUAY-BRF-EST-7200 | CONCLUSÃO | BRAFER | YARD 4 | CNT | OK |
| PSUAY-BRF-EST-7210 |  | Execute metal structure of Reefer racks nº7 in Yard 4 | 7d | 2026-01-12 A | 2026-01-23 A | PSUAY-BRF-EST-7200 | 100% | 2026-02-02 | 2026-02-10 |  |  | PSUAY - ELETROMEC - 1T - SEM HE | PROFIS [517138 h]; PSUAY-STE-STRUC [45.93 T] |  | PSUAY-BRF-EST-7210 | CONCLUSÃO | BRAFER | YARD 4 | CNT | OK |
|  | 3 | **TUNNEL CONTAINERS** |  | 2026-01-26 | 2026-02-06 |  |  |  |  |  |  |  |  |  |  |  |  |  |  |  |
| PSUAY-CAG-CIV-7220 |  | Execute Reefer tunnel containers in Yard 4 | 10d | 2026-01-26 | 2026-02-06 | PSUAY-BRF-EST-7210 FF |  |  |  | 46d | 0d | PSUAY - ELETROMEC - 1T - SEM HE | PROFIS [6944.57 h] | UDF_G1 | PSUAY-CAG-CIV-7220 | CONCLUSÃO | CONSAG | YARD 4 | CNT |  |

Notes:
- PSUAY-CAG-CIV-7090: Translate: Executar a fundação base dos painéis F do barramento coletor no pátio 4
- PSUAY-CDX-GER-7100: Translate: Executar montagem da barra de barramento F no pátio 4
- PSUAY-CAG-CIV-7110: Translate: Executar a formagem Busbar G do Pátio 4 (2ª etapa)
- PSUAY-CAG-CIV-7120: Translate: Executar concreto do Busbar G no Pátio 4 (2ª etapa)
- PSUAY-CAG-CIV-7130: Translate: Executar a fundação base dos painéis G do barramento no pátio 4
- PSUAY-CDX-GER-7140: Translate: Entrega para montagem da Barra Coletora G no pátio 4
- PSUAY-BRF-EST-7150: Translate: Executar estrutura metálica dos racks de refrigeração nº1 no pátio 4
- PSUAY-BRF-EST-7160: Translate: Executar estrutura metálica dos racks de refrigeração nº2 no pátio 4
- PSUAY-BRF-EST-7170: Translate: Executar estrutura metálica dos racks de refrigeração nº3 no pátio 4
- PSUAY-BRF-EST-7180: Translate: Executar estrutura metálica dos racks de refrigeração nº4 no Pátio 4
- PSUAY-BRF-EST-7190: Translate: Executar estrutura metálica dos racks de refrigeração nº5 no pátio 4
- PSUAY-BRF-EST-7200: Translate: Executar a estrutura metálica dos racks de refrigeração nº6 no pátio 4
- PSUAY-BRF-EST-7210: Translate: Executar estrutura metálica dos racks de refrigeração nº7 no pátio 4
- PSUAY-CAG-CIV-7220: Translate: Executar contêineres de túnel de reefer no pátio 4

| ID | WBS | Activity | Duration | Start | Finish | Predecessors | Complete | Planned start | Planned finish | Total float | Free float | Calendar | Resources | ACTIVITY ID COD. | FASES DE ENTREGA | RESPONSÁVEL | ÁREAS | PHASES - YARD | Check Pred |
| --- | --- | --- | --- | --- | --- | --- | --- | --- | --- | --- | --- | --- | --- | --- | --- | --- | --- | --- | --- |
|  | 2 | **LIFTING** |  | 2025-12-17 | 2026-01-27 |  |  |  |  |  |  |  |  |  |  |  |  |  |  |
| PSUAY-BRF-EST-7240 |  | Lifting Reefer racks nº2 in Yard 4 | 2d | 2025-12-17 A | 2025-12-17 A | PSUAY-BRF-EST-7160, PSUAY-BRF-EST-7230 | 100% | 2025-12-24 | 2025-12-29 |  |  | PSUAY - ELETROMEC - 1T - SEM HE | PROFIS [3302.97 h] | PSUAY-BRF-EST-7240 | CONCLUSÃO | BRAFER | YARD 4 | CNT |  |
| PSUAY-BRF-EST-7250 |  | Lifting Reefer racks nº3 in Yard 4 | 2d | 2025-12-18 A | 2025-12-18 A | PSUAY-BRF-EST-7170, PSUAY-BRF-EST-7240 | 100% | 2025-12-30 | 2025-12-31 |  |  | PSUAY - ELETROMEC - 1T - SEM HE | PROFIS [3302.97 h] | PSUAY-BRF-EST-7250 | CONCLUSÃO | BRAFER | YARD 4 | CNT |  |
| PSUAY-BRF-EST-7260 |  | Lifting Reefer racks nº4 in Yard 4 | 2d | 2025-12-19 A | 2025-12-19 A | PSUAY-BRF-EST-7180 | 100% | 2026-01-13 | 2026-01-14 |  |  | PSUAY - ELETROMEC - 1T - SEM HE | PROFIS [3302.97 h] | PSUAY-BRF-EST-7260 | CONCLUSÃO | BRAFER | YARD 4 | CNT |  |
| PSUAY-BRF-EST-7230 |  | Lifting Reefer racks nº1 in Yard 4 | 2d | 2026-01-26 | 2026-01-27 | PSUAY-BRF-EST-7150 |  |  |  | 15d | 0d | PSUAY - ELETROMEC - 1T - SEM HE | PROFIS [3302.97 h] | PSUAY-BRF-EST-7230 | CONCLUSÃO | BRAFER | YARD 4 | CNT | UDF_G1 |
| PSUAY-BRF-EST-7270 |  | Lifting Reefer racks nº5 in Yard 4 | 2d | 2026-01-26 | 2026-01-27 | PSUAY-BRF-EST-7190 |  |  |  | 41d | 26d | PSUAY - ELETROMEC - 1T - SEM HE | PROFIS [3302.97 h] | PSUAY-BRF-EST-7270 | CONCLUSÃO | BRAFER | YARD 4 | CNT |  |
| PSUAY-BRF-EST-7280 |  | Lifting Reefer racks nº6 in Yard 4 | 2d | 2026-01-26 | 2026-01-27 | PSUAY-BRF-EST-7200 |  |  |  | 41d | 26d | PSUAY - ELETROMEC - 1T - SEM HE | PROFIS [3302.97 h] | PSUAY-BRF-EST-7280 | CONCLUSÃO | BRAFER | YARD 4 | CNT |  |
| PSUAY-BRF-EST-7290 |  | Lifting Reefer racks nº7 in Yard 4 | 2d | 2026-01-26 | 2026-01-27 | PSUAY-BRF-EST-7210 |  |  |  | 41d | 26d | PSUAY - ELETROMEC - 1T - SEM HE | PROFIS [3302.97 h] | PSUAY-BRF-EST-7290 | CONCLUSÃO | BRAFER | YARD 4 | CNT |  |
|  | 3 | **GATES** |  | 2026-02-09 | 2026-02-13 |  |  |  |  |  |  |  |  |  |  |  |  |  |  |
| PSUAY-CAG-CIV-7300 |  | Execute gate assembly in Reefer Racks area in Yard 4 | 5d | 2026-02-09 | 2026-02-13 | PSUAY-CAG-CIV-7220 |  |  |  | 46d |  |  | PROFIS [2161.94 h] | PSUAY-CAG-CIV-7300 | CONCLUSÃO | LAGOTELA | YARD 4 | CNT |  |
|  | 6 | **SE-03 (REEFER SUBSTATION)** |  | 2026-01-26 | 2026-02-04 |  |  |  |  |  |  |  |  |  |  |  |  |  |  |
|  | 1 | **METAL STRUCTURE** |  | 2026-01-26 | 2026-02-03 |  |  |  |  |  |  |  |  |  |  |  |  |  |  |
| PSUAY-BRF-EST-7310 |  | Execute metal structure of SE-03 in Yard 4 | 7d | 2026-01-26 | 2026-02-03 | PSUAY-MIL-GER-6435 |  |  |  | 24d | 0d | PSUAY - ELETROMEC - 1T - SEM HE | PROFIS [105897 h]; PSUAY-STE-STRUC [9.4 T] | PSUAY-BRF-EST-7310 | CONCLUSÃO | BRAFER | YARD 4 | CNT | UDF_G1 |
|  | 2 | **LIFTING** |  | 2026-02-04 | 2026-02-04 |  |  |  |  |  |  |  |  |  |  |  |  |  |  |
| PSUAY-CAG-MEC-7320 |  | Execute Lifting of SE-03 in Yard 4 | 1d | 2026-02-04 | 2026-02-04 | PSUAY-BRF-EST-7310 |  |  |  | 24d | 0d |  | PROFIS [992.08 h] | PSUAY-CAG-MEC-7320 | CONCLUSÃO | CONSAG | YARD 4 | CNT | UDF_G1 |
|  | 7 | **GENERATOR REEFER** |  | 2026-03-09 | 2026-03-10 |  |  |  |  |  |  |  |  |  |  |  |  |  |  |
|  | 1 | **BASE (FOUNDATION)** |  | 2026-03-09 | 2026-03-09 |  |  |  |  |  |  |  |  |  |  |  |  |  |  |
| PSUAY-CAG-CIV-7330 |  | Execute base (foundation) of Reefer Generator in Yard 4 | 1d | 2026-03-09 | 2026-03-09 | PSUAY-MIL-GER-1450 FS+120d |  |  |  | 20d | 0d |  | PROFIS [1210.46 h] | PSUAY-CAG-CIV-7330 | CONCLUSÃO | CONSAG | YARD 4 | CNT | UDF_G1 |
|  | 2 | **LIFTING** |  | 2026-03-10 | 2026-03-10 |  |  |  |  |  |  |  |  |  |  |  |  |  |  |
| PSUAY-CAG-MEC-7340 |  | Execute Lifting of Reefer Generator in Yard 4 | 1d | 2026-03-10 | 2026-03-10 | PSUAY-CAG-CIV-7330 |  |  |  | 20d | 0d |  | PROFIS [992.08 h] | PSUAY-CAG-MEC-7340 | CONCLUSÃO | CONSAG | YARD 4 | CNT | UDF_G1 |
|  | 9 | **LEAKING CONTAINER AREA** |  | 2025-12-01 | 2026-02-19 |  |  |  |  |  |  |  |  |  |  |  |  |  |  |
|  | 1 | **FOUNDATION - CONTAINMENT BASIN** |  | 2025-12-01 | 2026-01-26 |  |  |  |  |  |  |  |  |  |  |  |  |  |  |
| PSUAY-CAG-CIV-7350 |  | Execute Excavation for Leaking Container Foundation | 1d | 2025-12-01 A | 2025-12-06 A | PSUAY-CAG-INF-6740 | 100% | 2025-12-30 | 2025-12-30 |  |  |  | PROFIS [1990.12 h] | PSUAY-CAG-CIV-7350 | CONCLUSÃO | CONSAG | YARD 4 | CNT | UDF_G1 |
| PSUAY-CAG-CIV-7360 |  | Execute BGTC for containment basin in Yard 4 | 1d | 2026-01-26 | 2026-01-26 | PSUAY-CAG-CIV-7350 |  |  |  | 51d | 0d |  | PROFIS [462.17 h]; CEMENT SOIL (BGTC) [84.16 m³] | PSUAY-CAG-CIV-7360 | CONCLUSÃO | CONSAG | YARD 4 | CNT |  |

Notes:
- PSUAY-BRF-EST-7240: Translate: Elevador de suportes para frigoríficos nº2 no pátio 4
- PSUAY-BRF-EST-7250: Translate: Elevador de suportes de refrigeração nº3 no pátio 4
- PSUAY-BRF-EST-7260: Translate: Suporte de elevação de frigoríficos nº4 no pátio 4
- PSUAY-BRF-EST-7230: Translate: Levantando racks de refrigeração nº1 no pátio 4
- PSUAY-BRF-EST-7270: Translate: Elevador de suportes para frigoríficos nº5 no pátio 4
- PSUAY-BRF-EST-7280: Translate: Levantamento de suportes refrigerados nº6 no pátio 4
- PSUAY-BRF-EST-7290: Translate: Suportes de elevação de frigoríficos nº7 no pátio 4
- PSUAY-CAG-CIV-7300: Translate: Executar montagem de portão na área de racks refrigerados no pátio 4
- PSUAY-BRF-EST-7310: Translate: Executar a estrutura metálica do SE-03 no Pátio 4
- PSUAY-CAG-MEC-7320: Translate: Executar o levantamento do SE-03 no pátio 4
- PSUAY-CAG-CIV-7330: Translate: Base de execução (fundação) do Gerador de Frigorífico no Pátio 4
- PSUAY-CAG-MEC-7340: Translate: Executar Levantamento do Gerador de Refrigerantes no Pátio 4
- PSUAY-CAG-CIV-7350: Translate: Executar escavação para fundação de contêiner vazando
- PSUAY-CAG-CIV-7360: Translate: Executar BGTC para bacia de contenção no Pátio 4

| ID | WBS | Activity | Duration | Start | Finish | Predecessors | Complete | Planned start | Planned finish | Total float | Free float | Resources | ACTIVITY ID COD. | FASES DE ENTREGA | RESPONSÁVEL | ÁREAS | PHASES - YARD | Check Pred |
| --- | --- | --- | --- | --- | --- | --- | --- | --- | --- | --- | --- | --- | --- | --- | --- | --- | --- | --- |
|  | 3 | **CIVIL - CONTAINMENT BASIN** |  | 2025-12-15 | 2026-02-19 |  |  |  |  |  |  |  |  |  |  |  |  |  |
| PSUAY-CAG-CIV-7370 |  | Execute lean concrete of base foundation of containment basin in Yard 4 | 1d | 2025-12-15 A | 2025-12-17 A | PSUAY-CAG-CIV-7360 | 100% | 2026-01-12 | 2026-01-13 |  |  | PROFIS [257.01 h]; CONCRETE-STRUCTURE [11.87 m³] | PSUAY-CAG-CIV-7370 | CONCLUSÃO | CONSAG | YARD 4 | CNT |  |
| PSUAY-CAG-CIV-7380 |  | Execute steel of base foudation of containment bain in Yard 4 | 11d | 2025-12-15 A | 2025-12-18 A | PSUAY-CAG-CIV-7370 | 100% | 2026-01-13 | 2026-01-28 |  |  | PROFIS [199672 h] | PSUAY-CAG-CIV-7380 | CONCLUSÃO | CONSAG | YARD 4 | CNT | UDF_G1 |
| PSUAY-CAG-CIV-7390 |  | Execute formwork of base foudation of containment basin in Yard 4 | 5d | 2025-12-15 A | 2026-02-19 A | PSUAY-CAG-CIV-7380 | 100% | 2026-01-28 | 2026-02-04 |  |  | PROFIS [42647.7 h] | PSUAY-CAG-CIV-7390 | CONCLUSÃO | CONSAG | YARD 4 | CNT | UDF_G1 |
| PSUAY-CAG-CIV-7400 |  | Execute concrete of base foudation ofcontainment bain in Yard 4 | 1d | 2025-12-15 A | 2025-12-19 A | PSUAY-CAG-CIV-7390 | 100% | 2026-02-04 | 2026-02-05 |  |  | PROFIS [1887.81 h]; CONCRETE-STRUCTURE [92.21 m³] | PSUAY-CAG-CIV-7400 | CONCLUSÃO | CONSAG | YARD 4 | CNT | UDF_G1 |
|  | 4 | **METAL STRUCTURE - CONTAINMENT BASIN** |  | 2026-01-27 | 2026-01-27 |  |  |  |  |  |  |  |  |  |  |  |  |  |
| PSUAY-CAG-CIV-7410 |  | Execute handrail in Leaking Container area in Yard 4 | 1d | 2026-01-27 | 2026-01-27 | PSUAY-CAG-CIV-7400 |  |  |  | 51d | 0d | PROFIS [2357.08 h]; PSUAY-STE-STRUC [0.21 T] | PSUAY-CAG-CIV-7410 | CONCLUSÃO | CONSAG | YARD 4 | CNT |  |
| PSUAY-CAG-CIV-7420 |  | Execute metal grate in Leaking Container area in Yard 4 | 1d | 2026-01-27 | 2026-01-27 | PSUAY-CAG-CIV-7390 |  |  |  | 59d |  | PROFIS [6907.41 h] | PSUAY-CAG-CIV-7420 | CONCLUSÃO | CONSAG | YARD 4 | CNT |  |
|  | 5 | **FOUNDATION - CONTAINMENT TANK** |  | 2025-12-15 | 2025-12-19 |  |  |  |  |  |  |  |  |  |  |  |  |  |
| PSUAY-CAG-CIV-7430 |  | Execute excavation for containment tank in Yard 4 | 1d | 2025-12-15 A | 2025-12-17 A | PSUAY-CAG-CIV-7400 | 100% | 2026-02-05 | 2026-02-06 |  |  | PROFIS [193.51 h] | PSUAY-CAG-CIV-7430 | CONCLUSÃO | CONSAG | YARD 4 | CNT |  |
| PSUAY-CAG-CIV-7440 |  | Execute plain concrete for containment tank in Yard 4 | 1d | 2025-12-17 A | 2025-12-19 A | PSUAY-CAG-CIV-7430 | 100% | 2026-02-06 | 2026-02-09 |  |  | PROFIS [465.66 h]; CONCRETE-STRUCTURE [70.93 m³] | PSUAY-CAG-CIV-7440 | CONCLUSÃO | CONSAG | YARD 4 | CNT |  |
|  | 6 | **CIVIL - CONTAINMENT TANK** |  | 2025-12-15 | 2026-02-18 |  |  |  |  |  |  |  |  |  |  |  |  |  |
| PSUAY-CAG-CIV-7450 |  | Execute lean concrete of base foundation of containment tank in Yard 4 | 1d | 2025-12-15 A | 2025-12-19 A | PSUAY-CAG-CIV-7440 | 100% | 2026-02-09 | 2026-02-10 |  |  | PROFIS [7650.04 h]; CONCRETE-STRUCTURE [0.99 m³] | PSUAY-CAG-CIV-7450 | CONCLUSÃO | CONSAG | YARD 4 | CNT |  |
| PSUAY-CAG-CIV-7460 |  | Execute steel of base foudation of containment tank in Yard 4 | 4d | 2025-12-15 A | 2025-12-19 A | PSUAY-CAG-CIV-7450 | 100% | 2026-02-10 | 2026-02-16 |  |  | PROFIS [73615.9 h] | PSUAY-CAG-CIV-7460 | CONCLUSÃO | CONSAG | YARD 4 | CNT | UDF_G1 |
| PSUAY-CAG-CIV-7470 |  | Execute formwork of base foudation of containment tank in Yard 4 | 1d | 2025-12-15 A | 2026-01-16 A | PSUAY-CAG-CIV-7460 | 100% | 2026-02-16 | 2026-02-17 |  |  | PROFIS [6413.86 h] | PSUAY-CAG-CIV-7470 | CONCLUSÃO | CONSAG | YARD 4 | CNT | UDF_G1 |
| PSUAY-CAG-CIV-7480 |  | Execute concrete of base foudation of containment tank in Yard 4 | 1d | 2025-12-15 A | 2026-02-18 A | PSUAY-CAG-CIV-7470 | 100% | 2026-02-17 | 2026-02-18 |  |  | PROFIS [696 h]; CONCRETE-STRUCTURE [34 m³] | PSUAY-CAG-CIV-7480 | CONCLUSÃO | CONSAG | YARD 4 | CNT | UDF_G1 |
|  | 7 | **PROTECTOR POSTS (BOLLARDS)** |  | 2026-01-28 | 2026-01-30 |  |  |  |  |  |  |  |  |  |  |  |  |  |
| PSUAY-CAG-CIV-7490 |  | Execute base foundation of bollards in leaking container area in Yard 4 | 2d | 2026-01-28 | 2026-01-29 | PSUAY-CAG-CIV-7410, PSUAY-CAG-CIV-7480 |  |  |  | 51d | 0d | PROFIS [19367.4 h] | PSUAY-CAG-CIV-7490 | CONCLUSÃO | CONSAG | YARD 4 | CNT |  |
| PSUAY-CAG-CIV-7500 |  | Execute installation of bollards in leaking container area in Yard 4 | 1d | 2026-01-30 | 2026-01-30 | PSUAY-CAG-CIV-7490 |  |  |  | 51d | 0d | PROFIS [1801.62 h] | PSUAY-CAG-CIV-7500 | CONCLUSÃO | CONSAG | YARD 4 | CNT |  |
|  | 13 | **EXTERNAL DRIVER TOILET** |  | 2026-01-05 | 2026-02-06 |  |  |  |  |  |  |  |  |  |  |  |  |  |
|  | 1 | **BASE FOUNDATION** |  | 2026-01-05 | 2026-01-10 |  |  |  |  |  |  |  |  |  |  |  |  |  |
| PSUAY-CAG-CIV-7520 |  | Execute the formwork for the civil foundation of Toilet Block (External Drive) in Yard 4 | 1d | 2026-01-05 A | 2026-01-10 A | PSUAY-CAG-CIV-7510 | 100% | 2026-01-28 | 2026-01-29 |  |  | PROFIS [5539.98 h] | PSUAY-CAG-CIV-7520 | CONCLUSÃO | CONSAG | YARD 4 | CNT |  |
| PSUAY-CAG-CIV-7510 |  | Execute steel base foundation of Toilet Block (External Driver) in Yard 4 | 4d | 2026-01-05 A | 2026-01-10 A | PSUAY-CAG-CIV-7500 | 100% | 2026-01-22 | 2026-01-28 |  |  | PROFIS [34408.4 h] | PSUAY-CAG-CIV-7510 | CONCLUSÃO | CONSAG | YARD 4 | CNT | UDF_G1 |
| PSUAY-CAG-CIV-7530 |  | Execute concrete foundation of Toilet Block (External Driver) in Yard 4 | 1d | 2026-01-05 A | 2026-01-10 A | PSUAY-CAG-CIV-7520 | 100% | 2026-01-29 | 2026-01-30 |  |  | PROFIS [325.32 h]; CONCRETE-STRUCTURE [15.89 m³] | PSUAY-CAG-CIV-7530 | CONCLUSÃO | CONSAG | YARD 4 | CNT |  |

Notes:
- PSUAY-CAG-CIV-7370: Translate: Executar concreto magro da fundação base da bacia de contenção no Pátio 4
- PSUAY-CAG-CIV-7380: Translate: Executar aço da base de fundação da banheira de contenção no Pátio 4
- PSUAY-CAG-CIV-7390: Translate: Executar a formagem da fundação da base da bacia de contenção no Pátio 4
- PSUAY-CAG-CIV-7400: Translate: Executar concreto da base de fundação da banheira de contenção no Pátio 4
- PSUAY-CAG-CIV-7410: Translate: Execute corrimão na área do Contêiner Vazando no Pátio 4
- PSUAY-CAG-CIV-7420: Translate: Coloque a grade de metal na área do Recipiente Vazante no Quintal 4
- PSUAY-CAG-CIV-7430: Translate: Executar escavação para tanque de contenção no Pátio 4
- PSUAY-CAG-CIV-7440: Translate: Executar concreto liso para tanque de contenção no Pátio 4
- PSUAY-CAG-CIV-7450: Translate: Executar concreto magro da fundação base do tanque de contenção no Pátio 4
- PSUAY-CAG-CIV-7460: Translate: Executar aço da base de fundação do tanque de contenção no Pátio 4
- PSUAY-CAG-CIV-7470: Translate: Executar a formagem da base de fundação do tanque de contenção no Pátio 4
- PSUAY-CAG-CIV-7480: Translate: Executar concreto da base de fundação do tanque de contenção no Pátio 4
- PSUAY-CAG-CIV-7490: Translate: Executar a base dos pilardos na área do recipiente com vazamento no Pátio 4
- PSUAY-CAG-CIV-7500: Translate: Executar a instalação de pilardos na área de contêineres vazantes no Pátio 4
- PSUAY-CAG-CIV-7520: Translate: Executar a formagem para a fundação civil do Bloco de Vasos Sanitários (Acionamento Externo) no Pátio 4
- PSUAY-CAG-CIV-7510: Translate: Executar a fundação de base de aço do Bloco de Vaso Sanitário (Driver Externo) no pátio 4
- PSUAY-CAG-CIV-7530: Translate: Executar a fundação de concreto do Bloco Sanitário (Driver Externo) no pátio 4

| ID | WBS | Activity | Duration | Start | Finish | Predecessors | Complete | Remaining | Planned start | Planned finish | Total float | Free float | Calendar | Resources | ACTIVITY ID COD. | FASES DE ENTREGA | RESPONSÁVEL | ÁREAS | PHASES - YARD | Check Pred | SERVIÇOS |
| --- | --- | --- | --- | --- | --- | --- | --- | --- | --- | --- | --- | --- | --- | --- | --- | --- | --- | --- | --- | --- | --- |
|  | 3 | **INFRA SWAGE** |  | 2026-01-05 | 2026-01-10 |  |  |  |  |  |  |  |  |  |  |  |  |  |  |  |  |
| PSUAY-CAG-MEC-7540 |  | Execute infra swage toilet (External Driver) in Yard 4 | 5d | 2026-01-05 A | 2026-01-10 A | PSUAY-CAG-CIV-7530 | 100% |  | 2026-01-30 | 2026-02-06 |  |  |  | PROFIS [9920.82 h] | PSUAY-CAG-MEC-7540 | CONCLUSÃO | CONSAG | YARD 4 | CNT |  |  |
|  | 2 | **ASSEMBLY (METALBOX)** |  | 2026-02-02 | 2026-02-06 |  |  |  |  |  |  |  |  |  |  |  |  |  |  |  |  |
| PSUAY-MTB-GER-7550 |  | Execute toilet assembly (External Driver) in Yard 4 | 5d | 2026-02-02 | 2026-02-06 | PSUAY-CAG-MEC-7540 |  |  |  |  | 51d |  |  | PROFIS [49544.6 h] | PSUAY-MTB-GER-7550 | CONCLUSÃO | METALBOX | YARD 4 | CNT |  |  |
|  | 3 | **FENCING** |  | 2026-01-12 | 2026-03-26 |  |  |  |  |  |  |  |  |  |  |  |  |  |  |  |  |
|  | 2 | **HANDRAIL** |  | 2026-02-12 | 2026-02-26 |  |  |  |  |  |  |  |  |  |  |  |  |  |  |  |  |
| PSUAY-CAG-CIV-7560 |  | Execute handrail in Yard 4 | 11d | 2026-02-12 | 2026-02-26 | PSUAY-CAG-INF-6960 |  |  |  |  | 17d | 0d |  | PROFIS [166200 h] | PSUAY-CAG-CIV-7560 | CONCLUSÃO | CONSAG | YARD 4 | CNT | UDF_G1 |  |
|  | 3 | **CONCRETE BARRIER** |  | 2026-01-12 | 2026-03-26 |  |  |  |  |  |  |  |  |  |  |  |  |  |  |  |  |
| PSUAY-CAG-CIV-7600 |  | Execute concrete barrier in Yard 4 - Segment 4 | 5d | 2026-01-12 A | 2026-03-26 | PSUAY-CAG-CIV-7590 | 30% | 5d | 2026-03-06 | 2026-03-12 | 17d |  |  | PROFIS [48851.8 h] | PSUAY-CAG-CIV-7600 | CONCLUSÃO | CONSAG | YARD 4 | CNT |  |  |
| PSUAY-CAG-CIV-7570 |  | Execute concrete barrier in Yard 4 - Segment 1 | 5d | 2026-02-27 | 2026-03-05 | PSUAY-CAG-CIV-7560 |  |  |  |  | 17d | 0d |  | PROFIS [48851.8 h] | PSUAY-CAG-CIV-7570 | CONCLUSÃO | CONSAG | YARD 4 | CNT | UDF_G1 |  |
| PSUAY-CAG-CIV-7580 |  | Execute concrete barrier in Yard 4 - Segment 2 | 5d | 2026-03-06 | 2026-03-12 | PSUAY-CAG-CIV-7570 |  |  |  |  | 17d | 0d |  | PROFIS [48851.8 h] | PSUAY-CAG-CIV-7580 | CONCLUSÃO | CONSAG | YARD 4 | CNT |  |  |
| PSUAY-CAG-CIV-7590 |  | Execute concrete barrier in Yard 4 - Segment 3 | 5d | 2026-03-13 | 2026-03-19 | PSUAY-CAG-CIV-7580 |  |  |  |  | 17d | 0d |  | PROFIS [48851.8 h] | PSUAY-CAG-CIV-7590 | CONCLUSÃO | CONSAG | YARD 4 | CNT |  |  |
|  | 13 | **HM TOWER PROTECTION (BOLLARDS)** |  | 2026-02-06 | 2026-02-26 |  |  |  |  |  |  |  |  |  |  |  |  |  |  |  |  |
| PSUAY-CAG-CIV-7610 |  | Execute bollards in HM towers in Yard 4 | 15d | 2026-02-06 | 2026-02-26 | PSUAY-CAG-CIV-7560 FF |  |  |  |  | 37d |  |  | PROFIS [30627.5 h] | PSUAY-CAG-CIV-7610 | CONCLUSÃO | CONSAG | YARD 4 | CNT |  |  |
|  | 5 | **TOWERS** |  | 2025-11-10 | 2026-03-20 |  |  |  |  |  |  |  |  |  |  |  |  |  |  |  |  |
|  | 12 | **HIGH MAST HM-E03-01** |  | 2025-11-24 | 2026-01-29 |  |  |  |  |  |  |  |  |  |  |  |  |  |  |  |  |
|  | 5 | **ENERGIZATION (LUZVILLE)** |  | 2025-11-24 | 2026-01-29 |  |  |  |  |  |  |  |  |  |  |  |  |  |  |  |  |
| PSUAY-LZE-ELE-7620 |  | Execute HM-E03-01 BT cable pulling and energization in Yard 4 | 4d | 2025-11-24 A | 2026-01-29 | PSUAY-LZE-MEC-3050, PSUAY-LZE-ELE-3000 | 90% | 4d | 2025-12-02 | 2025-12-05 | 31d | 0d | PSUAY - ELETROMEC - 1T - SEM HE | PROFIS [6563.05 h]; CABLE LOW VOLTAGE [1020 m] | PSUAY-LZE-ELE-7620 | CONCLUSÃO | LUZVILLE | YARD 4 | CNT | UDF_G1 | HM-ENERG |
|  | 11 | **HIGH MAST HM-E04-01** |  | 2025-12-08 | 2026-02-10 |  |  |  |  |  |  |  |  |  |  |  |  |  |  |  |  |
|  | 2 | **ASSEMBLY (LUZVILLE)** |  | 2025-12-08 | 2025-12-13 |  |  |  |  |  |  |  |  |  |  |  |  |  |  |  |  |
| PSUAY-LZE-ELE-7630 |  | Execute HM-E04-01 assembly in Yard 4 | 6d | 2025-12-08 A | 2025-12-13 A | PSUAY-LZE-ELE-8010 | 100% |  | 2025-11-10 | 2025-11-15 |  |  | PSUAY - ELETROMEC - 1T - HE SAB | PROFIS [11890.7 h]; POST HIGH MAST [1 un] | PSUAY-LZE-ELE-7630 | CONCLUSÃO | LUZVILLE | YARD 4 | CNT | UDF_G1 | HM-ASSEM |
|  | 5 | **ENERGIZATION (LUZVILLE)** |  | 2025-12-19 | 2026-02-10 |  |  |  |  |  |  |  |  |  |  |  |  |  |  |  |  |
| PSUAY-LZE-ELE-7640 |  | Execute HM-E04-01 BT cable pulling and energization in Yard 4 | 8d | 2025-12-19 A | 2026-02-10 | PSUAY-LZE-ELE-7630, PSUAY-LZE-ELE-7620 | 90% | 8d | 2025-12-19 | 2026-01-05 | 31d | 0d | PSUAY - ELETROMEC - 1T - SEM HE | PROFIS [15262.3 h]; CABLE LOW VOLTAGE [2372 m] | PSUAY-LZE-ELE-7640 | CONCLUSÃO | LUZVILLE | YARD 4 | CNT |  | HM-ENERG |
|  | 10 | **HIGH MAST HM-F04-01** |  | 2025-11-24 | 2026-02-10 |  |  |  |  |  |  |  |  |  |  |  |  |  |  |  |  |
|  | 5 | **ENERGIZATION (LUZVILLE)** |  | 2025-11-24 | 2026-02-10 |  |  |  |  |  |  |  |  |  |  |  |  |  |  |  |  |
| PSUAY-LZE-ELE-7650 |  | Execute HM-F04-01 BT cable pulling and energization in Yard 4 | 9d | 2025-11-24 A | 2026-02-10 | PSUAY-LZE-ELE-7640 SS | 90% | 8d | 2025-12-18 | 2026-01-05 | 41d | 0d | PSUAY - ELETROMEC - 1T - SEM HE | PROFIS [17578.7 h]; CABLE LOW VOLTAGE [2732 m] | PSUAY-LZE-ELE-7650 | CONCLUSÃO | LUZVILLE | YARD 4 | CNT |  | HM-ENERG |

Notes:
- PSUAY-CAG-MEC-7540: Translate: Executar vaso sanitário infra swage (Driver Externo) no pátio 4
- PSUAY-MTB-GER-7550: Translate: Executar montagem do vaso sanitário (Driver Externo) no pátio 4
- PSUAY-CAG-CIV-7560: Translate: Executar corrimão no pátio 4
- PSUAY-CAG-CIV-7600: Translate: Executar barreira de concreto no Pátio 4 - Segmento 4
- PSUAY-CAG-CIV-7570: Translate: Executar barreira de concreto no Pátio 4 - Segmento 1
- PSUAY-CAG-CIV-7580: Translate: Executar barreira de concreto no Pátio 4 - Segmento 2
- PSUAY-CAG-CIV-7590: Translate: Executar barreira de concreto no Pátio 4 - Segmento 3
- PSUAY-CAG-CIV-7610: Translate: Executar pilardos nas torres HM no Pátio 4
- PSUAY-LZE-ELE-7620: Translate: Lançar cabo e energizar HM-E03-01 BT no pátio 4
- PSUAY-LZE-ELE-7630: Translate: Executar a montagem HM-E04-01 no pátio 4
- PSUAY-LZE-ELE-7640: Translate: Executar puxar e energizar cabos HM-E04-01 BT no pátio 4
- PSUAY-LZE-ELE-7650: Translate: Executar puxar e energizar cabos HM-F04-01 BT no pátio 4

| ID | WBS | Activity | Duration | Start | Finish | Predecessors | Complete | Remaining | Planned start | Planned finish | Total float | Calendar | Resources | Check Pred | ACTIVITY ID COD. | FASES DE ENTREGA | RESPONSÁVEL | ÁREAS | SERVIÇOS | PHASES - YARD | Atualização |
| --- | --- | --- | --- | --- | --- | --- | --- | --- | --- | --- | --- | --- | --- | --- | --- | --- | --- | --- | --- | --- | --- |
|  | 9 | **HIGH MAST HM-F05-01** |  | 2025-11-10 | 2026-03-04 |  |  |  |  |  |  |  |  |  |  |  |  |  |  |  |  |
|  | 3 | **BASE (FOUNDATION)** |  | 2025-11-10 | 2025-11-18 |  |  |  |  |  |  |  |  |  |  |  |  |  |  |  |  |
| PSUAY-CAG-CIV-7660 |  | Execute steel for the civil base of the HM-F05-01 in Yard 4 | 4d | 2025-11-10 A | 2025-11-13 A | PSUAY-MIL-GER-1450 | 100% |  |  |  |  |  | PROFIS [62948.5 h] | UDF_G1 | PSUAY-CAG-CIV-7660 | CONCLUSÃO | CONSAG | YARD 4 | HM-CIV | CNT |  |
| PSUAY-CAG-CIV-7670 |  | Execute the formwork for the civil base of HM-F05-01 in Yard 4 | 1d | 2025-11-14 A | 2025-11-14 A | PSUAY-CAG-CIV-7660 | 100% |  |  |  |  |  | PROFIS [9777.4 h] |  | PSUAY-CAG-CIV-7670 | CONCLUSÃO | CONSAG | YARD 4 | HM-CIV | CNT |  |
| PSUAY-CAG-CIV-7680 |  | Execute concrete for the civil foundations of the HM-F05-01 in Yard 4 | 1d | 2025-11-17 A | 2025-11-17 A | PSUAY-CAG-CIV-7670 | 100% |  |  |  |  |  | PROFIS [595.15 h]; CONCRETE-STRUCTURE [29.07 m³] |  | PSUAY-CAG-CIV-7680 | CONCLUSÃO | CONSAG | YARD 4 | HM-CIV | CNT |  |
| PSUAY-CAG-CIV-7690 |  | Execute HM-F05-01 panels foundation in Yard 4 | 1d | 2025-11-18 A | 2025-11-18 A | PSUAY-CAG-CIV-7680 | 100% |  |  |  |  |  | PROFIS [2420.93 h] |  | PSUAY-CAG-CIV-7690 | CONCLUSÃO | CONSAG | YARD 4 | HM-CIV | CNT |  |
|  | 2 | **ASSEMBLY (LUZVILLE)** |  | 2025-11-24 | 2025-12-13 |  |  |  |  |  |  |  |  |  |  |  |  |  |  |  |  |
| PSUAY-LZE-ELE-7700 |  | Execute HM-F05-01 assembly in Yard 4 | 6d | 2025-11-24 A | 2025-12-13 A | PSUAY-LZE-ELE-7630, PSUAY-CAG-CIV-7690 FS+1d | 100% |  | 2025-11-17 | 2025-11-22 |  | PSUAY - ELETROMEC - 1T - HE SAB | PROFIS [11890.7 h]; POST HIGH MAST [1 un] |  | PSUAY-LZE-ELE-7700 | CONCLUSÃO | LUZVILLE | YARD 4 | HM-ASSEM | CNT |  |
|  | 5 | **ENERGIZATION (LUZVILLE)** |  | 2026-01-12 | 2026-03-04 |  |  |  |  |  |  |  |  |  |  |  |  |  |  |  |  |
| PSUAY-LZE-ELE-7710 |  | Execute HM-F05-01 BT cable pulling and energization in Yard 4 | 4d | 2026-01-12 A | 2026-03-04 | PSUAY-LZE-ELE-7700, PSUAY-LZE-ELE-7900 | 90% | 4d | 2026-02-17 | 2026-02-20 | 33.5d | PSUAY - ELETROMEC - 1T - SEM HE | PROFIS [7817.75 h]; CABLE LOW VOLTAGE [1215 m] |  | PSUAY-LZE-ELE-7710 | CONCLUSÃO | LUZVILLE | YARD 4 | HM-ENERG | CNT |  |
|  | 8 | **HIGH MAST HM-F05-02** |  | 2025-12-01 | 2026-03-12 |  |  |  |  |  |  |  |  |  |  |  |  |  |  |  |  |
|  | 3 | **BASE (FOUNDATION)** |  | 2025-12-01 | 2025-12-20 |  |  |  |  |  |  |  |  |  |  |  |  |  |  |  |  |
| PSUAY-CAG-CIV-7720 |  | Execute steel for the civil base of the HM-F05-02 in Yard 4 | 4d | 2025-12-01 A | 2025-12-06 A | PSUAY-CAG-CIV-7670, PSUAY-CAG-CIV-7790 | 100% |  | 2025-12-08 | 2025-12-11 |  |  | PROFIS [62948.5 h] | UDF_G1 | PSUAY-CAG-CIV-7720 | CONCLUSÃO | CONSAG | YARD 4 | HM-CIV | CNT |  |
| PSUAY-CAG-CIV-7730 |  | Execute the formwork for the civil base of HM-F05-02 in Yard 4 | 1d | 2025-12-01 A | 2025-12-20 A | PSUAY-CAG-CIV-7720 | 100% |  | 2025-12-12 | 2025-12-12 |  |  | PROFIS [9777.4 h] |  | PSUAY-CAG-CIV-7730 | CONCLUSÃO | CONSAG | YARD 4 | HM-CIV | CNT |  |
| PSUAY-CAG-CIV-7740 |  | Execute concrete for the civil foundations of the HM-F05-02 in Yard 4 | 1d | 2025-12-19 A | 2025-12-19 A | PSUAY-CAG-CIV-7730 | 100% |  | 2025-12-23 | 2025-12-23 |  |  | PROFIS [595.15 h]; CONCRETE-STRUCTURE [29.07 m³] |  | PSUAY-CAG-CIV-7740 | CONCLUSÃO | CONSAG | YARD 4 | HM-CIV | CNT |  |
| PSUAY-CAG-CIV-7750 |  | Execute HM-F05-02 panels foundation in Yard 4 | 1d | 2025-12-19 A | 2025-12-20 A | PSUAY-CAG-CIV-7740 | 100% |  | 2025-12-24 | 2025-12-24 |  |  | PROFIS [2420.93 h] |  | PSUAY-CAG-CIV-7750 | CONCLUSÃO | CONSAG | YARD 4 | HM-CIV | CNT |  |
|  | 2 | **ASSEMBLY (LUZVILLE)** |  | 2026-01-19 | 2026-01-24 |  |  |  |  |  |  |  |  |  |  |  |  |  |  |  |  |
| PSUAY-LZE-ELE-7760 |  | Execute HM-F05-02 assembly in Yard 4 | 6d | 2026-01-19 A | 2026-01-24 A | PSUAY-LZE-ELE-7700, PSUAY-CAG-CIV-7750 FS+1d | 100% |  |  |  |  | PSUAY - ELETROMEC - 1T - HE SAB | PROFIS [11890.7 h]; POST HIGH MAST [1 un] |  | PSUAY-LZE-ELE-7760 | CONCLUSÃO | LUZVILLE | YARD 4 | HM-ASSEM | CNT | OK |
|  | 5 | **ENERGIZATION (LUZVILLE)** |  | 2026-03-04 | 2026-03-12 |  |  |  |  |  |  |  |  |  |  |  |  |  |  |  |  |
| PSUAY-LZE-ELE-7770 |  | Execute HM-F05-02 BT cable pulling and energization in Yard 4 | 6d | 2026-03-04 | 2026-03-12 | PSUAY-LZE-ELE-11680, PSUAY-LZE-ELE-7760 |  |  |  |  | 27.5d | PSUAY - ELETROMEC - 1T - SEM HE | PROFIS [11131.4 h]; CABLE LOW VOLTAGE [1730 m] |  | PSUAY-LZE-ELE-7770 | CONCLUSÃO | LUZVILLE | YARD 4 | HM-ENERG | CNT |  |
|  | 7 | **HIGH MAST HM-F06-01** |  | 2025-12-15 | 2026-03-20 |  |  |  |  |  |  |  |  |  |  |  |  |  |  |  |  |
|  | 3 | **BASE (FOUNDATION)** |  | 2025-12-15 | 2025-12-20 |  |  |  |  |  |  |  |  |  |  |  |  |  |  |  |  |
| PSUAY-CAG-CIV-7780 |  | Execute steel for the civil base of the HM-F06-01 in Yard 4 | 4d | 2025-12-15 A | 2025-12-18 A | PSUAY-MIL-GER-1450 FS+11d | 100% |  |  |  |  |  | PROFIS [62948.5 h] | UDF_G1 | PSUAY-CAG-CIV-7780 | CONCLUSÃO | CONSAG | YARD 4 | HM-CIV | CNT |  |
| PSUAY-CAG-CIV-7790 |  | Execute the formwork for the civil base of HM-F06-01 in Yard 4 | 1d | 2025-12-19 A | 2025-12-19 A | PSUAY-CAG-CIV-7780 | 100% |  |  |  |  |  | PROFIS [9777.4 h] |  | PSUAY-CAG-CIV-7790 | CONCLUSÃO | CONSAG | YARD 4 | HM-CIV | CNT |  |
| PSUAY-CAG-CIV-7800 |  | Execute concrete for the civil foundations of the HM-F06-01 in Yard 4 | 1d | 2025-12-20 A | 2025-12-20 A | PSUAY-CAG-CIV-7790 | 100% |  | 2025-12-22 | 2025-12-22 |  |  | PROFIS [595.15 h]; CONCRETE-STRUCTURE [29.07 m³] |  | PSUAY-CAG-CIV-7800 | CONCLUSÃO | CONSAG | YARD 4 | HM-CIV | CNT |  |
| PSUAY-CAG-CIV-7810 |  | Execute HM-F06-01 panels foundation in Yard 4 | 1d | 2025-12-20 A | 2025-12-20 A | PSUAY-CAG-CIV-7800 | 100% |  | 2025-12-23 | 2025-12-23 |  |  | PROFIS [2420.93 h] |  | PSUAY-CAG-CIV-7810 | CONCLUSÃO | CONSAG | YARD 4 | HM-CIV | CNT |  |

Notes:
- PSUAY-CAG-CIV-7660: Translate: Executar aço para a base civil do HM-F05-01 no pátio 4
- PSUAY-CAG-CIV-7670: Translate: Execute a cofragem para a base civil do HM-F05-01 no Pátio 4
- PSUAY-CAG-CIV-7680: Translate: Executar concreto para as fundações civis do HM-F05-01 no pátio 4
- PSUAY-CAG-CIV-7690: Translate: Executar fundação dos painéis HM-F05-01 no Pátio 4
- PSUAY-LZE-ELE-7700: Translate: Executar a montagem HM-F05-01 no Pátio 4
- PSUAY-LZE-ELE-7710: Translate: Executar puxar cabos HM-F05-01 BT e energizar no pátio 4
- PSUAY-CAG-CIV-7720: Translate: Executar aço para a base civil do HM-F05-02 no Pátio 4
- PSUAY-CAG-CIV-7730: Translate: Executar a formagem para a base civil do HM-F05-02 no Pátio 4
- PSUAY-CAG-CIV-7740: Translate: Executar concreto para as fundações civis do HM-F05-02 no Pátio 4
- PSUAY-CAG-CIV-7750: Translate: Executar fundação de painéis HM-F05-02 no pátio 4
- PSUAY-LZE-ELE-7760: Translate: Executar a montagem HM-F05-02 no Pátio 4
- PSUAY-LZE-ELE-7770: Translate: Executar puxar cabos HM-F05-02 BT e energizar no pátio 4
- PSUAY-CAG-CIV-7780: Translate: Executar aço para a base civil do HM-F06-01 no pátio 4
- PSUAY-CAG-CIV-7790: Translate: Execute a formagem para a base civil do HM-F06-01 no Pátio 4
- PSUAY-CAG-CIV-7800: Translate: Executar concreto para as fundações civis do HM-F06-01 no pátio 4
- PSUAY-CAG-CIV-7810: Translate: Executar fundação dos painéis HM-F06-01 no Pátio 4

| ID | WBS | Activity | Duration | Start | Finish | Predecessors | Complete | Remaining | Planned start | Planned finish | Total float | Free float | Calendar | Resources | Atualização | ACTIVITY ID COD. | FASES DE ENTREGA | RESPONSÁVEL | ÁREAS | SERVIÇOS | PHASES - YARD | Check Pred |
| --- | --- | --- | --- | --- | --- | --- | --- | --- | --- | --- | --- | --- | --- | --- | --- | --- | --- | --- | --- | --- | --- | --- |
|  | 2 | **ASSEMBLY (LUZVILLE)** |  | 2026-01-12 | 2026-01-24 |  |  |  |  |  |  |  |  |  |  |  |  |  |  |  |  |  |
| PSUAY-LZE-ELE-7820 |  | Execute HM-F06-01 assembly in Yard 4 | 6d | 2026-01-12 A | 2026-01-24 A | PSUAY-LZE-ELE-7700 SS, PSUAY-CAG-CIV-7810 FS+1d | 100% |  | 2026-01-12 | 2026-01-17 |  |  | PSUAY - ELETROMEC - 1T - HE SAB | PROFIS [11890.7 h]; POST HIGH MAST [1 un] | OK | PSUAY-LZE-ELE-7820 | CONCLUSÃO | LUZVILLE | YARD 4 | HM-ASSEM | CNT |  |
|  | 5 | **ENERGIZATION (LUZVILLE)** |  | 2026-03-12 | 2026-03-20 |  |  |  |  |  |  |  |  |  |  |  |  |  |  |  |  |  |
| PSUAY-LZE-ELE-7830 |  | Execute HM-F06-01 BT cable pulling and energization in Yard 4 | 6d | 2026-03-12 | 2026-03-20 | PSUAY-LZE-ELE-7820, PSUAY-LZE-ELE-11740 |  |  |  |  | 21.56d |  | PSUAY - ELETROMEC - 1T - SEM HE | PROFIS [11208.6 h]; CABLE LOW VOLTAGE [1742 m] |  | PSUAY-LZE-ELE-7830 | CONCLUSÃO | LUZVILLE | YARD 4 | HM-ENERG | CNT |  |
|  | 6 | **HIGH MAST HM-G04-01** |  | 2025-11-25 | 2025-11-29 |  |  |  |  |  |  |  |  |  |  |  |  |  |  |  |  |  |
|  | 5 | **ENERGIZATION (LUZVILLE)** |  | 2025-11-25 | 2025-11-29 |  |  |  |  |  |  |  |  |  |  |  |  |  |  |  |  |  |
| PSUAY-LZE-ELE-7840 |  | Execute HM-G04-01 BT cable pulling and energization in Yard 4 | 6d | 2025-11-25 A | 2025-11-29 A | PSUAY-LZE-GER-6020 | 100% |  | 2025-11-25 | 2025-12-02 |  |  | PSUAY - ELETROMEC - 1T - SEM HE | PROFIS [10938.4 h]; CABLE LOW VOLTAGE [1700 m] |  | PSUAY-LZE-ELE-7840 | CONCLUSÃO | LUZVILLE | YARD 4 | HM-ENERG | CNT | UDF_G1 |
|  | 5 | **HIGH MAST HM-G07-01** |  | 2026-01-19 | 2026-02-26 |  |  |  |  |  |  |  |  |  |  |  |  |  |  |  |  |  |
|  | 3 | **BASE (FOUNDATION)** |  | 2026-01-19 | 2026-01-28 |  |  |  |  |  |  |  |  |  |  |  |  |  |  |  |  |  |
| PSUAY-CAG-CIV-7850 |  | Execute steel for the civil base of the HM-G07-01 in Yard 4 | 4d | 2026-01-19 A | 2026-01-22 A | PSUAY-CAG-CIV-8120 | 100% |  |  |  |  |  |  | PROFIS [62948.5 h] | OK | PSUAY-CAG-CIV-7850 | CONCLUSÃO | CONSAG | YARD 4 | HM-CIV | CNT | UDF_G1 |
| PSUAY-CAG-CIV-7860 |  | Execute the formwork for the civil base of HM-G07-01 in Yard 4 | 1d | 2026-01-23 A | 2026-01-26 | PSUAY-CAG-CIV-7850 | 80% | 1d | 2026-01-23 | 2026-01-23 | 17.56d | 0d |  | PROFIS [9777.4 h] | OK | PSUAY-CAG-CIV-7860 | CONCLUSÃO | CONSAG | YARD 4 | HM-CIV | CNT |  |
| PSUAY-CAG-CIV-7870 |  | Execute concrete for the civil foundations of the HM-G07-01 in Yard 4 | 1d | 2026-01-27 | 2026-01-27 | PSUAY-CAG-CIV-7860 |  |  |  |  | 17.56d | 0d |  | PROFIS [595.15 h]; CONCRETE-STRUCTURE [29.07 m³] |  | PSUAY-CAG-CIV-7870 | CONCLUSÃO | CONSAG | YARD 4 | HM-CIV | CNT |  |
| PSUAY-CAG-CIV-7880 |  | Execute HM-G07-01 panels foundation in Yard 4 | 1d | 2026-01-28 | 2026-01-28 | PSUAY-CAG-CIV-7870 |  |  |  |  | 17.56d | 3.12d |  | PROFIS [2420.93 h] |  | PSUAY-CAG-CIV-7880 | CONCLUSÃO | CONSAG | YARD 4 | HM-CIV | CNT |  |
|  | 2 | **ASSEMBLY (LUZVILLE)** |  | 2026-02-04 | 2026-02-11 |  |  |  |  |  |  |  |  |  |  |  |  |  |  |  |  |  |
| PSUAY-LZE-ELE-7890 |  | Execute HM-G07-01 assembly in Yard 4 | 6d | 2026-02-04 | 2026-02-11 | PSUAY-CAG-CIV-7880 FS+1d, PSUAY-LZE-ELE-8150 |  |  |  |  | 16.38d | 0d | PSUAY - ELETROMEC - 1T - HE SAB | PROFIS [11890.7 h]; POST HIGH MAST [1 un] |  | PSUAY-LZE-ELE-7890 | CONCLUSÃO | LUZVILLE | YARD 4 | HM-ASSEM | CNT |  |
|  | 5 | **ENERGIZATION (LUZVILLE)** |  | 2026-02-11 | 2026-02-26 |  |  |  |  |  |  |  |  |  |  |  |  |  |  |  |  |  |
| PSUAY-LZE-ELE-7900 |  | Execute HM-G07-01 BT cable pulling and energization in Yard 4 | 11d | 2026-02-11 | 2026-02-26 | PSUAY-LZE-ELE-7890 |  |  |  |  | 14.5d | 0d | PSUAY - ELETROMEC - 1T - SEM HE | PROFIS [21374.9 h]; CABLE LOW VOLTAGE [3322 m] |  | PSUAY-LZE-ELE-7900 | CONCLUSÃO | LUZVILLE | YARD 4 | HM-ENERG | CNT |  |
|  | 4 | **HIGH MAST HM-H04-01** |  | 2025-12-19 | 2026-02-24 |  |  |  |  |  |  |  |  |  |  |  |  |  |  |  |  |  |
|  | 5 | **ENERGIZATION (LUZVILLE)** |  | 2025-12-19 | 2026-02-24 |  |  |  |  |  |  |  |  |  |  |  |  |  |  |  |  |  |
| PSUAY-LZE-ELE-7910 |  | Execute HM-H04-01 BT cable pulling and energization in Yard 4 | 10d | 2025-12-19 A | 2026-02-24 | PSUAY-LZE-ELE-7640 | 90% | 10d | 2026-01-06 | 2026-01-19 | 31d | 0d | PSUAY - ELETROMEC - 1T - SEM HE | PROFIS [19573.3 h]; CABLE LOW VOLTAGE [3042 m] |  | PSUAY-LZE-ELE-7910 | CONCLUSÃO | LUZVILLE | YARD 4 | HM-ENERG | CNT | UDF_G1 |
|  | 3 | **HIGH MAST HM-H06-01** |  | 2025-11-19 | 2026-03-10 |  |  |  |  |  |  |  |  |  |  |  |  |  |  |  |  |  |
|  | 2 | **ASSEMBLY (LUZVILLE)** |  | 2025-11-19 | 2025-11-25 |  |  |  |  |  |  |  |  |  |  |  |  |  |  |  |  |  |
| PSUAY-LZE-ELE-7920 |  | Execute HM-H06-01 assembly in Yard 4 | 6d | 2025-11-19 A | 2025-11-25 A | PSUAY-MIL-GER-1450 FS+9d | 100% |  |  |  |  |  | PSUAY - ELETROMEC - 1T - HE SAB | PROFIS [11890.7 h]; POST HIGH MAST [1 un] |  | PSUAY-LZE-ELE-7920 | CONCLUSÃO | LUZVILLE | YARD 4 | HM-ASSEM | CNT | UDF_G1 |
|  | 5 | **ENERGIZATION (LUZVILLE)** |  | 2026-02-26 | 2026-03-10 |  |  |  |  |  |  |  |  |  |  |  |  |  |  |  |  |  |
| PSUAY-LZE-ELE-7930 |  | Execute HM-H06-01 BT cable pulling and energization in Yard 4 | 8d | 2026-02-26 | 2026-03-10 | PSUAY-LZE-ELE-7900 |  |  |  |  | 14.5d | 0d | PSUAY - ELETROMEC - 1T - SEM HE | PROFIS [15410.3 h]; CABLE LOW VOLTAGE [2395 m] |  | PSUAY-LZE-ELE-7930 | CONCLUSÃO | LUZVILLE | YARD 4 | HM-ENERG | CNT |  |

Notes:
- PSUAY-LZE-ELE-7820: Translate: Executar a montagem HM-F06-01 no Pátio 4
- PSUAY-LZE-ELE-7830: Translate: Executar puxar cabos HM-F06-01 BT e energizar no pátio 4
- PSUAY-LZE-ELE-7840: Translate: Executar puxar e energizar cabos HM-G04-01 BT no pátio 4
- PSUAY-CAG-CIV-7850: Translate: Executar aço para a base civil do HM-G07-01 no Pátio 4
- PSUAY-CAG-CIV-7860: Translate: Executar a formagem para a base civil do HM-G07-01 no Pátio 4
- PSUAY-CAG-CIV-7870: Translate: Executar concreto para as fundações civis do HM-G07-01 no pátio 4
- PSUAY-CAG-CIV-7880: Translate: Executar fundação dos painéis HM-G07-01 no Pátio 4
- PSUAY-LZE-ELE-7890: Translate: Executar a montagem do HM-G07-01 no pátio 4
- PSUAY-LZE-ELE-7900: Translate: Executar puxar cabos HM-G07-01 BT e energizar no pátio 4
- PSUAY-LZE-ELE-7910: Translate: Executar puxar e energizar cabos HM-H04-01 BT no pátio 4
- PSUAY-LZE-ELE-7920: Translate: Executar a montagem HM-H06-01 no Pátio 4
- PSUAY-LZE-ELE-7930: Translate: Executar puxar cabos HM-H06-01 BT e energizar no pátio 4

| ID | WBS | Activity | Duration | Start | Finish | Predecessors | Complete | Planned start | Planned finish | Total float | Free float | Calendar | Resources | Check Pred | ACTIVITY ID COD. | FASES DE ENTREGA | RESPONSÁVEL | ÁREAS | SERVIÇOS | PHASES - YARD | Atualização |
| --- | --- | --- | --- | --- | --- | --- | --- | --- | --- | --- | --- | --- | --- | --- | --- | --- | --- | --- | --- | --- | --- |
|  | 1 | **HIGH MAST HM-H09-01** |  | 2025-12-01 | 2026-02-16 |  |  |  |  |  |  |  |  |  |  |  |  |  |  |  |  |
|  | 3 | **BASE (FOUNDATION)** |  | 2025-12-01 | 2026-01-26 |  |  |  |  |  |  |  |  |  |  |  |  |  |  |  |  |
| PSUAY-CAG-CIV-7940 |  | Execute steel for the civil base of the HM-H09-01 in Yard 4 | 4d | 2025-12-01 A | 2025-12-06 A | PSUAY-CAG-CIV-8180 | 100% | 2025-12-22 | 2025-12-29 |  |  |  | PROFIS [62948.5 h] | UDF_G1 | PSUAY-CAG-CIV-7940 | CONCLUSÃO | CONSAG | YARD 4 | HM-CIV | CNT |  |
| PSUAY-CAG-CIV-7950 |  | Execute the formwork for the civil base of HM-H09-01 in Yard 4 | 1d | 2025-12-01 A | 2026-01-19 A | PSUAY-CAG-CIV-7940 | 100% | 2025-12-30 | 2025-12-30 |  |  |  | PROFIS [9777.4 h] |  | PSUAY-CAG-CIV-7950 | CONCLUSÃO | CONSAG | YARD 4 | HM-CIV | CNT |  |
| PSUAY-CAG-CIV-7960 |  | Execute concrete for the civil foundations of the HM-H09-01 in Yard 4 | 1d | 2026-01-20 A | 2026-01-20 A | PSUAY-CAG-CIV-7950 | 100% |  |  |  |  |  | PROFIS [595.15 h]; CONCRETE-STRUCTURE [29.07 m³] |  | PSUAY-CAG-CIV-7960 | CONCLUSÃO | CONSAG | YARD 4 | HM-CIV | CNT |  |
| PSUAY-CAG-CIV-7970 |  | Execute HM-H09-01 panels foundation in Yard 4 | 1d | 2026-01-26 | 2026-01-26 | PSUAY-CAG-CIV-7960 |  |  |  | 30.25d | 3d |  | PROFIS [2420.93 h] |  | PSUAY-CAG-CIV-7970 | CONCLUSÃO | CONSAG | YARD 4 | HM-CIV | CNT |  |
|  | 2 | **ASSEMBLY (LUZVILLE)** |  | 2026-02-02 | 2026-02-09 |  |  |  |  |  |  |  |  |  |  |  |  |  |  |  |  |
| PSUAY-LZE-ELE-7980 |  | Execute HM-H09-01 assembly in Yard 4 | 6d | 2026-02-02 | 2026-02-09 | PSUAY-LZE-ELE-8210, PSUAY-CAG-CIV-7970 FS+1d |  |  |  | 30.25d | 0d | PSUAY - ELETROMEC - 1T - HE SAB | PROFIS [11890.7 h]; POST HIGH MAST [1 un] |  | PSUAY-LZE-ELE-7980 | CONCLUSÃO | LUZVILLE | YARD 4 | HM-ASSEM | CNT |  |
|  | 5 | **ENERGIZATION (LUZVILLE)** |  | 2026-02-10 | 2026-02-16 |  |  |  |  |  |  |  |  |  |  |  |  |  |  |  |  |
| PSUAY-LZE-ELE-7990 |  | Execute HM-H09-01 BT cable pulling and energization in Yard 4 | 4d | 2026-02-10 | 2026-02-16 | PSUAY-LZE-ELE-7980, PSUAY-LZE-ELE-8220 |  |  |  | 45.69d |  | PSUAY - ELETROMEC - 1T - SEM HE | PROFIS [6460.1 h]; CABLE LOW VOLTAGE [1004 m] |  | PSUAY-LZE-ELE-7990 | CONCLUSÃO | LUZVILLE | YARD 4 | HM-ENERG | CNT |  |
|  | 14 | **HIGH MAST HM-J05-01** |  | 2026-01-12 | 2026-01-24 |  |  |  |  |  |  |  |  |  |  |  |  |  |  |  |  |
|  | 5 | **ENERGIZATION (LUZVILLE)** |  | 2026-01-12 | 2026-01-24 |  |  |  |  |  |  |  |  |  |  |  |  |  |  |  |  |
| PSUAY-LZE-ELE-8000 |  | Execute HM-J05-01 BT cable pulling and energization in Yard 4 | 4d | 2026-01-12 A | 2026-01-24 A | PSUAY-LZE-ELE-8040 | 100% | 2026-03-03 | 2026-03-06 |  |  | PSUAY - ELETROMEC - 1T - SEM HE | PROFIS [6659.56 h]; CABLE LOW VOLTAGE [1035 m] | UDF_G1 | PSUAY-LZE-ELE-8000 | CONCLUSÃO | LUZVILLE | YARD 4 | HM-ENERG | CNT | OK |
|  | 15 | **HIGH MAST HM-J05-02** |  | 2025-11-19 | 2026-03-09 |  |  |  |  |  |  |  |  |  |  |  |  |  |  |  |  |
|  | 2 | **ASSEMBLY (LUZVILLE)** |  | 2025-11-19 | 2025-11-25 |  |  |  |  |  |  |  |  |  |  |  |  |  |  |  |  |
| PSUAY-LZE-ELE-8010 |  | Execute HM-J05-02 assembly in Yard 4 | 6d | 2025-11-19 A | 2025-11-25 A | PSUAY-MIL-GER-1450 FS+9d | 100% |  |  |  |  | PSUAY - ELETROMEC - 1T - HE SAB | PROFIS [11890.7 h]; POST HIGH MAST [1 un] | UDF_G1 | PSUAY-LZE-ELE-8010 | CONCLUSÃO | LUZVILLE | YARD 4 | HM-ASSEM | CNT |  |
|  | 5 | **ENERGIZATION (LUZVILLE)** |  | 2026-02-27 | 2026-03-09 |  |  |  |  |  |  |  |  |  |  |  |  |  |  |  |  |
| PSUAY-LZE-ELE-8020 |  | Execute HM-J05-02 BT cable pulling and energization in Yard 4 | 6d | 2026-02-27 | 2026-03-09 | PSUAY-LZE-ELE-8280 |  |  |  | 30.12d |  | PSUAY - ELETROMEC - 1T - SEM HE | PROFIS [10591 h]; CABLE LOW VOLTAGE [1646 m] |  | PSUAY-LZE-ELE-8020 | CONCLUSÃO | LUZVILLE | YARD 4 | HM-ENERG | CNT |  |
|  | 16 | **HIGH MAST HM-J06-01** |  | 2025-12-08 | 2026-03-12 |  |  |  |  |  |  |  |  |  |  |  |  |  |  |  |  |
|  | 2 | **ASSEMBLY (LUZVILLE)** |  | 2025-12-08 | 2025-12-19 |  |  |  |  |  |  |  |  |  |  |  |  |  |  |  |  |
| PSUAY-LZE-ELE-8030 |  | Execute HM-J06-01 assembly in Yard 4 | 6d | 2025-12-08 A | 2025-12-19 A | PSUAY-LZE-ELE-7920 SS | 100% | 2025-12-08 | 2025-12-13 |  |  | PSUAY - ELETROMEC - 1T - HE SAB | PROFIS [11890.7 h]; POST HIGH MAST [1 un] | UDF_G1 | PSUAY-LZE-ELE-8030 | CONCLUSÃO | LUZVILLE | YARD 4 | HM-ASSEM | CNT |  |
|  | 5 | **ENERGIZATION (LUZVILLE)** |  | 2026-02-26 | 2026-03-12 |  |  |  |  |  |  |  |  |  |  |  |  |  |  |  |  |
| PSUAY-LZE-ELE-8040 |  | Execute HM-J06-01 BT cable pulling and energization in Yard 4 | 10d | 2026-02-26 | 2026-03-12 | PSUAY-LZE-ELE-8030, PSUAY-LZE-ELE-7930 SS |  |  |  | 14.5d | 0d | PSUAY - ELETROMEC - 1T - SEM HE | PROFIS [19110 h]; CABLE LOW VOLTAGE [2970 m] |  | PSUAY-LZE-ELE-8040 | CONCLUSÃO | LUZVILLE | YARD 4 | HM-ENERG | CNT |  |
|  | 17 | **HIGH MAST HM-J06-02** |  | 2025-11-10 | 2026-02-27 |  |  |  |  |  |  |  |  |  |  |  |  |  |  |  |  |
|  | 3 | **BASE (FOUNDATION)** |  | 2025-11-10 | 2025-11-18 |  |  |  |  |  |  |  |  |  |  |  |  |  |  |  |  |
| PSUAY-CAG-CIV-8050 |  | Execute steel for the civil base of the HM-J06-02 in Yard 4 | 4d | 2025-11-10 A | 2025-11-13 A | PSUAY-MIL-GER-1450 | 100% |  |  |  |  |  | PROFIS [62948.5 h] | UDF_G1 | PSUAY-CAG-CIV-8050 | CONCLUSÃO | CONSAG | YARD 4 | HM-CIV | CNT |  |
| PSUAY-CAG-CIV-8060 |  | Execute the formwork for the civil base of HM-J06-02 in Yard 4 | 1d | 2025-11-14 A | 2025-11-14 A | PSUAY-CAG-CIV-8050 | 100% |  |  |  |  |  | PROFIS [9777.4 h] |  | PSUAY-CAG-CIV-8060 | CONCLUSÃO | CONSAG | YARD 4 | HM-CIV | CNT |  |
| PSUAY-CAG-CIV-8070 |  | Execute concrete for the civil foundations of the HM-J06-02 in Yard 4 | 1d | 2025-11-17 A | 2025-11-17 A | PSUAY-CAG-CIV-8060 | 100% |  |  |  |  |  | PROFIS [595.15 h]; CONCRETE-STRUCTURE [29.07 m³] |  | PSUAY-CAG-CIV-8070 | CONCLUSÃO | CONSAG | YARD 4 | HM-CIV | CNT |  |
| PSUAY-CAG-CIV-8080 |  | Execute HM-J06-02 panels foundation in Yard 4 | 1d | 2025-11-18 A | 2025-11-18 A | PSUAY-CAG-CIV-8070 | 100% |  |  |  |  |  | PROFIS [2420.93 h] |  | PSUAY-CAG-CIV-8080 | CONCLUSÃO | CONSAG | YARD 4 | HM-CIV | CNT |  |

Notes:
- PSUAY-CAG-CIV-7940: Translate: Executar aço para a base civil do HM-H09-01 no Pátio 4
- PSUAY-CAG-CIV-7950: Translate: Executar a formagem para a base civil do HM-H09-01 no Pátio 4
- PSUAY-CAG-CIV-7960: Translate: Executar concreto para as fundações civis do HM-H09-01 no Pátio 4
- PSUAY-CAG-CIV-7970: Translate: Executar fundação dos painéis HM-H09-01 no pátio 4
- PSUAY-LZE-ELE-7980: Translate: Executar a montagem HM-H09-01 no Pátio 4
- PSUAY-LZE-ELE-7990: Translate: Execute puxar e energizar cabos HM-H09-01 BT no pátio 4
- PSUAY-LZE-ELE-8000: Translate: Executar puxar e energizar cabos HM-J05-01 BT no pátio 4
- PSUAY-LZE-ELE-8010: Translate: Executar a montagem HM-J05-02 no pátio 4
- PSUAY-LZE-ELE-8020: Translate: Executar puxar cabos HM-J05-02 BT e energizar no pátio 4
- PSUAY-LZE-ELE-8030: Translate: Executar a montagem do HM-J06-01 no Pátio 4
- PSUAY-LZE-ELE-8040: Translate: Executar puxar e energizar cabos HM-J06-01 BT no Pátio 4
- PSUAY-CAG-CIV-8050: Translate: Executar aço para a base civil do HM-J06-02 no pátio 4
- PSUAY-CAG-CIV-8060: Translate: Executar a formagem para a base civil do HM-J06-02 no Pátio 4
- PSUAY-CAG-CIV-8070: Translate: Executar concreto para as fundações civis do HM-J06-02 no pátio 4
- PSUAY-CAG-CIV-8080: Translate: Executar fundação dos painéis HM-J06-02 no Pátio 4

| ID | WBS | Activity | Duration | Start | Finish | Predecessors | Complete | Remaining | Planned start | Planned finish | Total float | Free float | Calendar | Resources | ACTIVITY ID COD. | FASES DE ENTREGA | RESPONSÁVEL | ÁREAS | SERVIÇOS | PHASES - YARD | Check Pred | Atualização |
| --- | --- | --- | --- | --- | --- | --- | --- | --- | --- | --- | --- | --- | --- | --- | --- | --- | --- | --- | --- | --- | --- | --- |
|  | 2 | **ASSEMBLY (LUZVILLE)** |  | 2025-12-15 | 2025-12-23 |  |  |  |  |  |  |  |  |  |  |  |  |  |  |  |  |  |
| PSUAY-LZE-ELE-8090 |  | Execute HM-J06-02 assembly in Yard 4 | 6d | 2025-12-15 A | 2025-12-23 A | PSUAY-LZE-ELE-8030 SS+1d, PSUAY-CAG-CIV-8080 SS+1d | 100% |  | 2025-12-15 | 2025-12-20 |  |  | PSUAY - ELETROMEC - 1T - HE SAB | PROFIS [11890.7 h]; POST HIGH MAST [1 un] | PSUAY-LZE-ELE-8090 | CONCLUSÃO | LUZVILLE | YARD 4 | HM-ASSEM | CNT |  |  |
|  | 5 | **ENERGIZATION (LUZVILLE)** |  | 2026-02-20 | 2026-02-27 |  |  |  |  |  |  |  |  |  |  |  |  |  |  |  |  |  |
| PSUAY-LZE-ELE-8100 |  | Execute HM-J06-02 BT cable pulling and energization in Yard 4 | 5d | 2026-02-20 | 2026-02-27 | PSUAY-LZE-ELE-8090, PSUAY-LZE-ELE-8340 |  |  |  |  | 30.12d | 0d | PSUAY - ELETROMEC - 1T - SEM HE | PROFIS [9085.32 h]; CABLE LOW VOLTAGE [1412 m] | PSUAY-LZE-ELE-8100 | CONCLUSÃO | LUZVILLE | YARD 4 | HM-ENERG | CNT |  |  |
|  | 18 | **HIGH MAST HM-J09-01** |  | 2025-12-01 | 2026-03-10 |  |  |  |  |  |  |  |  |  |  |  |  |  |  |  |  |  |
|  | 3 | **BASE (FOUNDATION)** |  | 2025-12-01 | 2026-01-26 |  |  |  |  |  |  |  |  |  |  |  |  |  |  |  |  |  |
| PSUAY-CAG-CIV-8110 |  | Execute steel for the civil base of the HM-J09-01 in Yard 4 | 4d | 2025-12-01 A | 2025-12-06 A | PSUAY-CAG-CIV-8060, PSUAY-CAG-CIV-7790 | 100% |  | 2025-12-08 | 2025-12-11 |  |  |  | PROFIS [62948.5 h] | PSUAY-CAG-CIV-8110 | CONCLUSÃO | CONSAG | YARD 4 | HM-CIV | CNT | UDF_G1 |  |
| PSUAY-CAG-CIV-8120 |  | Execute the formwork for the civil base of HM-J09-01 in Yard 4 | 1d | 2025-12-01 A | 2025-12-23 A | PSUAY-CAG-CIV-8110 | 100% |  | 2025-12-12 | 2025-12-12 |  |  |  | PROFIS [9777.4 h] | PSUAY-CAG-CIV-8120 | CONCLUSÃO | CONSAG | YARD 4 | HM-CIV | CNT |  |  |
| PSUAY-CAG-CIV-8130 |  | Execute concrete for the civil foundations of the HM-J09-01 in Yard 4 | 1d | 2025-12-19 A | 2025-12-23 A | PSUAY-CAG-CIV-8120 | 100% |  | 2025-12-23 | 2025-12-23 |  |  |  | PROFIS [595.15 h]; CONCRETE-STRUCTURE [29.07 m³] | PSUAY-CAG-CIV-8130 | CONCLUSÃO | CONSAG | YARD 4 | HM-CIV | CNT |  |  |
| PSUAY-CAG-CIV-8140 |  | Execute HM-J09-01 panels foundation in Yard 4 | 1d | 2026-01-26 | 2026-01-26 | PSUAY-CAG-CIV-8130 |  |  |  |  | 14.19d | 0d |  | PROFIS [2420.93 h] | PSUAY-CAG-CIV-8140 | CONCLUSÃO | CONSAG | YARD 4 | HM-CIV | CNT |  |  |
|  | 2 | **ASSEMBLY (LUZVILLE)** |  | 2026-01-23 | 2026-02-04 |  |  |  |  |  |  |  |  |  |  |  |  |  |  |  |  |  |
| PSUAY-LZE-ELE-8150 |  | Execute HM-J09-01 assembly in Yard 4 | 6d | 2026-01-23 A | 2026-02-04 | PSUAY-LZE-ELE-7820, PSUAY-CAG-CIV-8140 FS+1d | 90% | 6d | 2026-01-26 | 2026-01-31 | 16.38d | 0d | PSUAY - ELETROMEC - 1T - HE SAB | PROFIS [11890.7 h]; POST HIGH MAST [1 un] | PSUAY-LZE-ELE-8150 | CONCLUSÃO | LUZVILLE | YARD 4 | HM-ASSEM | CNT |  | OK |
|  | 5 | **ENERGIZATION (LUZVILLE)** |  | 2026-03-02 | 2026-03-10 |  |  |  |  |  |  |  |  |  |  |  |  |  |  |  |  |  |
| PSUAY-LZE-ELE-8160 |  | Execute HM-J09-01 BT cable pulling and energization in Yard 4 | 6d | 2026-03-02 | 2026-03-10 | PSUAY-LZE-ELE-8150, PSUAY-LZE-ELE-8400 |  |  |  |  | 29.12d |  | PSUAY - ELETROMEC - 1T - SEM HE | PROFIS [11202.2 h]; CABLE LOW VOLTAGE [1741 m] | PSUAY-LZE-ELE-8160 | CONCLUSÃO | LUZVILLE | YARD 4 | HM-ENERG | CNT |  |  |
|  | 19 | **HIGH MAST HM-J09-02** |  | 2025-12-01 | 2026-02-10 |  |  |  |  |  |  |  |  |  |  |  |  |  |  |  |  |  |
|  | 3 | **BASE (FOUNDATION)** |  | 2025-12-01 | 2026-01-10 |  |  |  |  |  |  |  |  |  |  |  |  |  |  |  |  |  |
| PSUAY-CAG-CIV-8170 |  | Execute steel for the civil base of the HM-J09-02 in Yard 4 | 4d | 2025-12-01 A | 2025-12-06 A | PSUAY-CAG-CIV-7730 | 100% |  | 2025-12-15 | 2025-12-18 |  |  |  | PROFIS [62948.5 h] | PSUAY-CAG-CIV-8170 | CONCLUSÃO | CONSAG | YARD 4 | HM-CIV | CNT | UDF_G1 |  |
| PSUAY-CAG-CIV-8180 |  | Execute the formwork for the civil base of HM-J09-02 in Yard 4 | 1d | 2025-12-01 A | 2025-12-23 A | PSUAY-CAG-CIV-8170 | 100% |  | 2025-12-19 | 2025-12-19 |  |  |  | PROFIS [9777.4 h] | PSUAY-CAG-CIV-8180 | CONCLUSÃO | CONSAG | YARD 4 | HM-CIV | CNT |  |  |
| PSUAY-CAG-CIV-8190 |  | Execute concrete for the civil foundations of the HM-J09-02 in Yard 4 | 1d | 2025-12-19 A | 2025-12-23 A | PSUAY-CAG-CIV-8180 | 100% |  | 2025-12-23 | 2025-12-23 |  |  |  | PROFIS [595.15 h]; CONCRETE-STRUCTURE [29.07 m³] | PSUAY-CAG-CIV-8190 | CONCLUSÃO | CONSAG | YARD 4 | HM-CIV | CNT |  |  |
| PSUAY-CAG-CIV-8200 |  | Execute HM-J09-02 panels foundation in Yard 4 | 1d | 2026-01-05 A | 2026-01-10 A | PSUAY-CAG-CIV-8190 | 100% |  | 2026-01-12 | 2026-01-12 |  |  |  | PROFIS [2420.93 h] | PSUAY-CAG-CIV-8200 | CONCLUSÃO | CONSAG | YARD 4 | HM-CIV | CNT |  |  |
|  | 2 | **ASSEMBLY (LUZVILLE)** |  | 2026-01-23 | 2026-01-31 |  |  |  |  |  |  |  |  |  |  |  |  |  |  |  |  |  |
| PSUAY-LZE-ELE-8210 |  | Execute HM-J09-02assembly in Yard 4 | 6d | 2026-01-23 A | 2026-01-31 | PSUAY-LZE-ELE-7760, PSUAY-CAG-CIV-8200 FS+1d | 90% | 6d | 2026-01-26 | 2026-01-31 | 27.69d | 0d | PSUAY - ELETROMEC - 1T - HE SAB | PROFIS [11890.7 h]; POST HIGH MAST [1 un] | PSUAY-LZE-ELE-8210 | CONCLUSÃO | LUZVILLE | YARD 4 | HM-ASSEM | CNT |  | OK |
|  | 5 | **ENERGIZATION (LUZVILLE)** |  | 2026-02-04 | 2026-02-10 |  |  |  |  |  |  |  |  |  |  |  |  |  |  |  |  |  |
| PSUAY-LZE-ELE-8220 |  | Execute HM-J09-02 BT cable pulling and energization in Yard 4 | 5d | 2026-02-04 | 2026-02-10 | PSUAY-LZE-ELE-8210, PSUAY-LZE-ELE-5250 |  |  |  |  | 25.81d | 0d | PSUAY - ELETROMEC - 1T - HE SAB | PROFIS [8203.81 h]; CABLE LOW VOLTAGE [1275 m] | PSUAY-LZE-ELE-8220 | CONCLUSÃO | LUZVILLE | YARD 4 | HM-ENERG | CNT |  |  |

Notes:
- PSUAY-LZE-ELE-8090: Translate: Executar a montagem HM-J06-02 no Pátio 4
- PSUAY-LZE-ELE-8100: Translate: Executar puxar cabos HM-J06-02 BT e energizar no pátio 4
- PSUAY-CAG-CIV-8110: Translate: Executar aço para a base civil do HM-J09-01 no Pátio 4
- PSUAY-CAG-CIV-8120: Translate: Executar a cofragem para a base civil do HM-J09-01 no Pátio 4
- PSUAY-CAG-CIV-8130: Translate: Executar concreto para as fundações civis do HM-J09-01 no Pátio 4
- PSUAY-CAG-CIV-8140: Translate: Executar fundação dos painéis HM-J09-01 no Pátio 4
- PSUAY-LZE-ELE-8150: Translate: Executar a montagem HM-J09-01 no pátio 4
- PSUAY-LZE-ELE-8160: Translate: Executar puxar cabos HM-J09-01 BT e energizar no pátio 4
- PSUAY-CAG-CIV-8170: Translate: Executar aço para a base civil do HM-J09-02 no Pátio 4
- PSUAY-CAG-CIV-8180: Translate: Executar a formagem para a base civil do HM-J09-02 no Pátio 4
- PSUAY-CAG-CIV-8190: Translate: Executar concreto para as fundações civis do HM-J09-02 no pátio 4
- PSUAY-CAG-CIV-8200: Translate: Executar fundação dos painéis HM-J09-02 no Pátio 4
- PSUAY-LZE-ELE-8210: Translate: Executar montagem HM-J09-02 no Pátio 4
- PSUAY-LZE-ELE-8220: Translate: Execute puxar cabos HM-J09-02 BT e energizar no pátio 4

| ID | WBS | Activity | Duration | Start | Finish | Predecessors | Complete | Planned start | Planned finish | Total float | Free float | Calendar | Resources | Check Pred | ACTIVITY ID COD. | FASES DE ENTREGA | RESPONSÁVEL | ÁREAS | SERVIÇOS | PHASES - YARD |
| --- | --- | --- | --- | --- | --- | --- | --- | --- | --- | --- | --- | --- | --- | --- | --- | --- | --- | --- | --- | --- |
|  | 22 | **HIGH MAST HM-K06-01** |  | 2025-12-01 | 2026-01-17 |  |  |  |  |  |  |  |  |  |  |  |  |  |  |  |
|  | 3 | **BASE (FOUNDATION)** |  | 2025-12-01 | 2025-12-17 |  |  |  |  |  |  |  |  |  |  |  |  |  |  |  |
| PSUAY-CAG-CIV-8230 |  | Execute steel for the civil base of the HM-K06-01 in Yard 4 | 2d | 2025-12-01 A | 2025-12-06 A | PSUAY-CAG-CIV-7780 SS | 100% | 2025-12-01 | 2025-12-02 |  |  |  | PROFIS [62948.5 h] | UDF_G1 | PSUAY-CAG-CIV-8230 | CONCLUSÃO | CONSAG | YARD 4 | HM-CIV | CNT |
| PSUAY-CAG-CIV-8240 |  | Execute the formwork for the civil base of HM-K06-01 in Yard 4 | 1d | 2025-12-03 A | 2025-12-15 A | PSUAY-CAG-CIV-8230 | 100% | 2025-12-03 | 2025-12-03 |  |  |  | PROFIS [9777.4 h] |  | PSUAY-CAG-CIV-8240 | CONCLUSÃO | CONSAG | YARD 4 | HM-CIV | CNT |
| PSUAY-CAG-CIV-8250 |  | Execute concrete for the civil foundations of the HM-K06-01 in Yard 4 | 1d | 2025-12-16 A | 2025-12-16 A | PSUAY-CAG-CIV-8240 | 100% |  |  |  |  |  | PROFIS [595.15 h]; CONCRETE-STRUCTURE [29.07 m³] |  | PSUAY-CAG-CIV-8250 | CONCLUSÃO | CONSAG | YARD 4 | HM-CIV | CNT |
| PSUAY-CAG-CIV-8260 |  | Execute HM-K06-01 panels foundation in Yard 4 | 1d | 2025-12-17 A | 2025-12-17 A | PSUAY-CAG-CIV-8250 | 100% |  |  |  |  |  | PROFIS [2420.93 h] |  | PSUAY-CAG-CIV-8260 | CONCLUSÃO | CONSAG | YARD 4 | HM-CIV | CNT |
|  | 2 | **ASSEMBLY (LUZVILLE)** |  | 2025-12-22 | 2026-01-17 |  |  |  |  |  |  |  |  |  |  |  |  |  |  |  |
| PSUAY-LZE-ELE-8270 |  | Execute HM-K06-01 assembly in Yard 4 | 6d | 2025-12-22 A | 2026-01-17 A | PSUAY-LZE-ELE-8090, PSUAY-CAG-CIV-8260 FS+1d | 100% | 2026-01-05 | 2026-01-10 |  |  | PSUAY - ELETROMEC - 1T - HE SAB | PROFIS [11890.7 h]; POST HIGH MAST [1 un] |  | PSUAY-LZE-ELE-8270 | CONCLUSÃO | LUZVILLE | YARD 4 | HM-ASSEM | CNT |
|  | 5 | **ENERGIZATION (LUZVILLE)** |  | 2026-01-12 | 2026-01-17 |  |  |  |  |  |  |  |  |  |  |  |  |  |  |  |
| PSUAY-LZE-ELE-8280 |  | Execute HM-K06-01 BT cable pulling and energization in Yard 4 | 6d | 2026-01-12 A | 2026-01-17 A | PSUAY-LZE-ELE-8270, PSUAY-LZE-ELE-8100 | 100% | 2026-02-18 | 2026-02-26 |  |  | PSUAY - ELETROMEC - 1T - SEM HE | PROFIS [11749.1 h]; CABLE LOW VOLTAGE [1826 m] |  | PSUAY-LZE-ELE-8280 | CONCLUSÃO | LUZVILLE | YARD 4 | HM-ENERG | CNT |
|  | 21 | **HIGH MAST HM-L07-01** |  | 2025-12-01 | 2026-02-20 |  |  |  |  |  |  |  |  |  |  |  |  |  |  |  |
|  | 3 | **BASE (FOUNDATION)** |  | 2025-12-01 | 2025-12-18 |  |  |  |  |  |  |  |  |  |  |  |  |  |  |  |
| PSUAY-CAG-CIV-8290 |  | Execute steel for the civil base of the HM-L07-01 in Yard 4 | 4d | 2025-12-01 A | 2025-12-06 A | PSUAY-CAG-CIV-8240 | 100% | 2025-12-04 | 2025-12-09 |  |  |  | PROFIS [62948.5 h] | UDF_G1 | PSUAY-CAG-CIV-8290 | CONCLUSÃO | CONSAG | YARD 4 | HM-CIV | CNT |
| PSUAY-CAG-CIV-8300 |  | Execute the formwork for the civil base of HM-L07-01 in Yard 4 | 1d | 2025-12-03 A | 2025-12-16 A | PSUAY-CAG-CIV-8290, PSUAY-CAG-CIV-8240 | 100% | 2025-12-10 | 2025-12-10 |  |  |  | PROFIS [9777.4 h] |  | PSUAY-CAG-CIV-8300 | CONCLUSÃO | CONSAG | YARD 4 | HM-CIV | CNT |
| PSUAY-CAG-CIV-8310 |  | Execute concrete for the civil foundations of the HM-L07-01 in Yard 4 | 1d | 2025-12-17 A | 2025-12-17 A | PSUAY-CAG-CIV-8300, PSUAY-CAG-CIV-8250 | 100% |  |  |  |  |  | PROFIS [595.15 h]; CONCRETE-STRUCTURE [29.07 m³] |  | PSUAY-CAG-CIV-8310 | CONCLUSÃO | CONSAG | YARD 4 | HM-CIV | CNT |
| PSUAY-CAG-CIV-8320 |  | Execute HM-L07-01 panels foundation in Yard 4 | 1d | 2025-12-18 A | 2025-12-18 A | PSUAY-CAG-CIV-8310, PSUAY-CAG-CIV-8260 | 100% |  |  |  |  |  | PROFIS [2420.93 h] |  | PSUAY-CAG-CIV-8320 | CONCLUSÃO | CONSAG | YARD 4 | HM-CIV | CNT |
|  | 2 | **ASSEMBLY (LUZVILLE)** |  | 2026-01-26 | 2026-01-31 |  |  |  |  |  |  |  |  |  |  |  |  |  |  |  |
| PSUAY-LZE-ELE-8330 |  | Execute HM-L07-01 assembly in Yard 4 | 6d | 2026-01-26 | 2026-01-31 | PSUAY-LZE-ELE-8270, PSUAY-CAG-CIV-8320 FS+1d |  |  |  | 32.69d | 0d | PSUAY - ELETROMEC - 1T - HE SAB | PROFIS [11890.7 h]; POST HIGH MAST [1 un] |  | PSUAY-LZE-ELE-8330 | CONCLUSÃO | LUZVILLE | YARD 4 | HM-ASSEM | CNT |
|  | 5 | **ENERGIZATION (LUZVILLE)** |  | 2026-02-10 | 2026-02-20 |  |  |  |  |  |  |  |  |  |  |  |  |  |  |  |
| PSUAY-LZE-ELE-8340 |  | Execute HM-L07-01 BT cable pulling and energization in Yard 4 | 9d | 2026-02-10 | 2026-02-20 | PSUAY-LZE-ELE-8330, PSUAY-LZE-ELE-8220 |  |  |  | 25.81d | 0d | PSUAY - ELETROMEC - 1T - HE SAB | PROFIS [17617.3 h]; CABLE LOW VOLTAGE [2738 m] |  | PSUAY-LZE-ELE-8340 | CONCLUSÃO | LUZVILLE | YARD 4 | HM-ENERG | CNT |
|  | 20 | **HIGH MAST HM-L09-01** |  | 2025-12-01 | 2026-03-02 |  |  |  |  |  |  |  |  |  |  |  |  |  |  |  |
|  | 3 | **BASE (FOUNDATION)** |  | 2025-12-01 | 2025-12-19 |  |  |  |  |  |  |  |  |  |  |  |  |  |  |  |
| PSUAY-CAG-CIV-8350 |  | Execute steel for the civil base of the HM-L09-01 in Yard 4 | 4d | 2025-12-01 A | 2025-12-06 A | PSUAY-CAG-CIV-8300 | 100% | 2025-12-11 | 2025-12-16 |  |  |  | PROFIS [62948.5 h] | UDF_G1 | PSUAY-CAG-CIV-8350 | CONCLUSÃO | CONSAG | YARD 4 | HM-CIV | CNT |
| PSUAY-CAG-CIV-8360 |  | Execute the formwork for the civil base of HM-L09-01 in Yard 4 | 1d | 2025-12-01 A | 2025-12-17 A | PSUAY-CAG-CIV-8350 | 100% | 2025-12-17 | 2025-12-17 |  |  |  | PROFIS [9777.4 h] |  | PSUAY-CAG-CIV-8360 | CONCLUSÃO | CONSAG | YARD 4 | HM-CIV | CNT |
| PSUAY-CAG-CIV-8370 |  | Execute concrete for the civil foundations of the HM-L09-01 in Yard 4 | 1d | 2025-12-18 A | 2025-12-18 A | PSUAY-CAG-CIV-8360 | 100% |  |  |  |  |  | PROFIS [595.15 h]; CONCRETE-STRUCTURE [29.07 m³] |  | PSUAY-CAG-CIV-8370 | CONCLUSÃO | CONSAG | YARD 4 | HM-CIV | CNT |
| PSUAY-CAG-CIV-8380 |  | Execute HM-L09-01 panels foundation in Yard 4 | 1d | 2025-12-19 A | 2025-12-19 A | PSUAY-CAG-CIV-8370 | 100% |  |  |  |  |  | PROFIS [2420.93 h] |  | PSUAY-CAG-CIV-8380 | CONCLUSÃO | CONSAG | YARD 4 | HM-CIV | CNT |

Notes:
- PSUAY-CAG-CIV-8230: Translate: Executar aço para a base civil do HM-K06-01 no Pátio 4
- PSUAY-CAG-CIV-8240: Translate: Executar a cofragem para a base civil do HM-K06-01 no Pátio 4
- PSUAY-CAG-CIV-8250: Translate: Executar concreto para as fundações civis do HM-K06-01 no Pátio 4
- PSUAY-CAG-CIV-8260: Translate: Executar fundação dos painéis HM-K06-01 no pátio 4
- PSUAY-LZE-ELE-8270: Translate: Executar a montagem HM-K06-01 no pátio 4
- PSUAY-LZE-ELE-8280: Translate: Executar puxar e energizar cabos HM-K06-01 BT no Pátio 4
- PSUAY-CAG-CIV-8290: Translate: Executar aço para a base civil do HM-L07-01 no Pátio 4
- PSUAY-CAG-CIV-8300: Translate: Execute a formagem para a base civil do HM-L07-01 no Pátio 4
- PSUAY-CAG-CIV-8310: Translate: Executar concreto para as fundações civis do HM-L07-01 no Pátio 4
- PSUAY-CAG-CIV-8320: Translate: Executar fundação dos painéis HM-L07-01 no pátio 4
- PSUAY-LZE-ELE-8330: Translate: Executar a montagem HM-L07-01 no Pátio 4
- PSUAY-LZE-ELE-8340: Translate: Executar puxar cabos HM-L07-01 BT e energizar no pátio 4
- PSUAY-CAG-CIV-8350: Translate: Executar aço para a base civil do HM-L09-01 no Pátio 4
- PSUAY-CAG-CIV-8360: Translate: Execute a formagem para a base civil do HM-L09-01 no Pátio 4
- PSUAY-CAG-CIV-8370: Translate: Executar concreto para as fundações civis do HM-L09-01 no Pátio 4
- PSUAY-CAG-CIV-8380: Translate: Executar fundação dos painéis HM-L09-01 no Pátio 4

| ID | WBS | Activity | Duration | Start | Finish | Predecessors | Complete | Remaining | Planned start | Planned finish | Total float | Free float | Calendar | Resources | Atualização | ACTIVITY ID COD. | FASES DE ENTREGA | RESPONSÁVEL | ÁREAS | SERVIÇOS | PHASES - YARD | Check Pred |
| --- | --- | --- | --- | --- | --- | --- | --- | --- | --- | --- | --- | --- | --- | --- | --- | --- | --- | --- | --- | --- | --- | --- |
|  | 2 | **ASSEMBLY (LUZVILLE)** |  | 2025-12-22 | 2026-01-22 |  |  |  |  |  |  |  |  |  |  |  |  |  |  |  |  |  |
| PSUAY-LZE-ELE-8390 |  | Execute HM-L09-01 assembly in Yard 4 | 6d | 2025-12-22 A | 2026-01-22 A | PSUAY-LZE-ELE-8330, PSUAY-CAG-CIV-8380 FS+1d | 100% |  | 2026-01-19 | 2026-01-24 |  |  | PSUAY - ELETROMEC - 1T - HE SAB | PROFIS [11890.7 h]; POST HIGH MAST [1 un] | OK | PSUAY-LZE-ELE-8390 | CONCLUSÃO | LUZVILLE | YARD 4 | HM-ASSEM | CNT |  |
|  | 5 | **ENERGIZATION (LUZVILLE)** |  | 2026-02-20 | 2026-03-02 |  |  |  |  |  |  |  |  |  |  |  |  |  |  |  |  |  |
| PSUAY-LZE-ELE-8400 |  | Execute HM-L09-01 BT cable pulling and energization in Yard 4 | 6d | 2026-02-20 | 2026-03-02 | PSUAY-LZE-ELE-8390, PSUAY-LZE-ELE-5260, PSUAY-LZE-ELE-8340 |  |  |  |  | 22.56d | 0d | PSUAY - ELETROMEC - 1T - SEM HE | PROFIS [11234.4 h]; CABLE LOW VOLTAGE [1746 m] |  | PSUAY-LZE-ELE-8400 | CONCLUSÃO | LUZVILLE | YARD 4 | HM-ENERG | CNT |  |
|  | 2 | **OPTIC FIBER** |  | 2026-02-04 | 2026-03-06 |  |  |  |  |  |  |  |  |  |  |  |  |  |  |  |  |  |
|  | 1 | **HM-FEC - LOOP 1** |  | 2026-02-04 | 2026-02-18 |  |  |  |  |  |  |  |  |  |  |  |  |  |  |  |  |  |
| PSUAY-LZE-ELE-8410 |  | Execute Fiber Optic Cable Pulling in HM-FEC-LOOP 1 Yard 4 | 4d | 2026-02-04 | 2026-02-10 | PSUAY-LZE-ELE-8090, PSUAY-LZE-ELE-8330, PSUAY-LZE-ELE-8390, PSUAY-LZE-ELE-8150, PSUAY-LZE-ELE-8210, PSUAY-LZE-ELE-8270, PSUAY-LZE-ELE-5580, PSUAY-LZE-GER-5570 |  |  |  |  | 43.88d | 0d | PSUAY - ELETROMEC - 1T - SEM HE | PROFIS [6589.86 h]; CABLE FIBER OPTICS [1229 m] |  | PSUAY-LZE-ELE-8410 | CONCLUSÃO | LUZVILLE | YARD 4 |  | CNT |  |
| PSUAY-LZE-ELE-8420 |  | Execute Fiber Optic Fusions in HM-FEC-LOOP 1 Yard 4 | 4d | 2026-02-10 | 2026-02-16 | PSUAY-LZE-ELE-8410 |  |  |  |  | 43.88d | 0d | PSUAY - ELETROMEC - 1T - SEM HE | PROFIS [6589.86 h]; CABLE FIBER OPTICS [1229 m] |  | PSUAY-LZE-ELE-8420 | CONCLUSÃO | LUZVILLE | YARD 4 |  | CNT |  |
| PSUAY-LZE-ELE-8430 |  | Execute Fiber Optic Connectorizations in HM-FEC-LOOP 1 Yard 4 | 2d | 2026-02-16 | 2026-02-18 | PSUAY-LZE-ELE-8420 |  |  |  |  | 43.88d |  | PSUAY - ELETROMEC - 1T - SEM HE | PROFIS [3963.57 h] |  | PSUAY-LZE-ELE-8430 | CONCLUSÃO | LUZVILLE | YARD 4 |  | CNT |  |
|  | 2 | **HM-FEC - LOOP 2** |  | 2026-02-24 | 2026-03-06 |  |  |  |  |  |  |  |  |  |  |  |  |  |  |  |  |  |
| PSUAY-LZE-ELE-8440 |  | Execute Fiber Optic Cable Pulling in HM-FEC-LOOP 2 Yard 4 | 4d | 2026-02-24 | 2026-03-02 | PSUAY-LZE-ELE-7920, PSUAY-LZE-ELE-8030, PSUAY-LZE-ELE-7890, PSUAY-LZE-ELE-8010, PSUAY-LZE-ELE-11670, PSUAY-LZE-ELE-11730, PSUAY-LZE-ELE-5580, PSUAY-LZE-GER-5570 |  |  |  |  | 31.81d | 0d | PSUAY - ELETROMEC - 1T - SEM HE | PROFIS [7249.38 h]; CABLE FIBER OPTICS [1352 m] |  | PSUAY-LZE-ELE-8440 | CONCLUSÃO | LUZVILLE | YARD 4 |  | CNT |  |
| PSUAY-LZE-ELE-8450 |  | Execute Fiber Optic Fusions in HM-FEC-LOOP 2 Yard 4 | 2d | 2026-03-02 | 2026-03-04 | PSUAY-LZE-ELE-8440 |  |  |  |  | 31.81d | 0d | PSUAY - ELETROMEC - 1T - SEM HE | PROFIS [3963.57 h] |  | PSUAY-LZE-ELE-8450 | CONCLUSÃO | LUZVILLE | YARD 4 |  | CNT |  |
| PSUAY-LZE-ELE-8460 |  | Execute Fiber Optic Connectorizations in HM-FEC-LOOP 2 Yard 4 | 2d | 2026-03-04 | 2026-03-06 | PSUAY-LZE-ELE-8450 |  |  |  |  | 31.81d |  | PSUAY - ELETROMEC - 1T - SEM HE | PROFIS [3963.57 h] |  | PSUAY-LZE-ELE-8460 | CONCLUSÃO | LUZVILLE | YARD 4 |  | CNT |  |
|  | 3 | **HM-FEC - LOOP 3** |  | 2026-02-25 | 2026-03-06 |  |  |  |  |  |  |  |  |  |  |  |  |  |  |  |  |  |
| PSUAY-LZE-ELE-8470 |  | Execute Fiber Optic Cable Pulling in HM-FEC-LOOP 3 Yard 4 | 4d | 2026-02-25 | 2026-03-02 | PSUAY-LZE-ELE-7820, PSUAY-LZE-ELE-7760, PSUAY-LZE-ELE-7700, PSUAY-LZE-ELE-7650, PSUAY-LZE-ELE-7840, PSUAY-LZE-ELE-7910, PSUAY-LZE-ELE-5580, PSUAY-LZE-GER-5570 |  |  |  |  | 31d | 0d | PSUAY - ELETROMEC - 1T - SEM HE | PROFIS [7571.1 h]; CABLE FIBER OPTICS [1412 m] |  | PSUAY-LZE-ELE-8470 | CONCLUSÃO | LUZVILLE | YARD 4 |  | CNT |  |
| PSUAY-LZE-ELE-8480 |  | Execute Fiber Optic Fusions in HM-FEC-LOOP 3 Yard 4 | 2d | 2026-03-03 | 2026-03-04 | PSUAY-LZE-ELE-8470 |  |  |  |  | 31d | 0d | PSUAY - ELETROMEC - 1T - SEM HE | PROFIS [3963.57 h] |  | PSUAY-LZE-ELE-8480 | CONCLUSÃO | LUZVILLE | YARD 4 |  | CNT |  |
| PSUAY-LZE-ELE-8490 |  | Execute Fiber Optic Connectorizations in HM-FEC-LOOP 3 Yard 4 | 2d | 2026-03-05 | 2026-03-06 | PSUAY-LZE-ELE-8480 |  |  |  |  | 31d |  | PSUAY - ELETROMEC - 1T - SEM HE | PROFIS [3963.57 h] |  | PSUAY-LZE-ELE-8490 | CONCLUSÃO | LUZVILLE | YARD 4 |  | CNT |  |
|  | 4 | **SIGNS** |  | 2026-02-27 | 2026-03-23 |  |  |  |  |  |  |  |  |  |  |  |  |  |  |  |  |  |
|  | 2 | **HORIZONTAL SIGNS** |  | 2026-02-27 | 2026-03-12 |  |  |  |  |  |  |  |  |  |  |  |  |  |  |  |  |  |
| PSUAY-CAG-INF-8500 |  | Execute Pavement Striping in Yard 4 | 5d | 2026-02-27 | 2026-03-05 | PSUAY-CAG-CIV-7560 |  |  |  |  | 20d | 0d |  | PROFIS [347083 h] |  | PSUAY-CAG-INF-8500 | CONCLUSÃO | CONSAG | YARD 4 |  | CNT |  |
| PSUAY-CAG-INF-8510 |  | Execute Pavement Marking in Yard 4 | 5d | 2026-03-06 | 2026-03-12 | PSUAY-CAG-INF-8500 |  |  |  |  | 20d | 0d |  | PROFIS [222543 h] |  | PSUAY-CAG-INF-8510 | CONCLUSÃO | CONSAG | YARD 4 |  | CNT |  |
|  | 1 | **TRAFFIC SIGNS** |  | 2026-03-13 | 2026-03-23 |  |  |  |  |  |  |  |  |  |  |  |  |  |  |  |  |  |
| PSUAY-CAG-INF-8520 |  | Execute traffic signs in Yard 4 | 7d | 2026-03-13 | 2026-03-23 | PSUAY-CAG-INF-8510 |  |  |  |  | 20d |  |  | PROFIS [12025.8 h] |  | PSUAY-CAG-INF-8520 | CONCLUSÃO | CONSAG | YARD 4 |  | CNT | UDF_G1 |
|  | 6 | **ELECTRICAL (LUZVILLE)** |  | 2025-12-08 | 2026-03-31 |  |  |  |  |  |  |  |  |  |  |  |  |  |  |  |  |  |
|  | 1 | **SE-03 AND GENERATORS** |  | 2025-12-19 | 2026-03-23 |  |  |  |  |  |  |  |  |  |  |  |  |  |  |  |  |  |
|  | 1 | **SE-03 REEFER SUBSTATION** |  | 2025-12-19 | 2026-03-23 |  |  |  |  |  |  |  |  |  |  |  |  |  |  |  |  |  |
|  | 1 | **ELETROCENTER** |  | 2025-12-19 | 2026-03-03 |  |  |  |  |  |  |  |  |  |  |  |  |  |  |  |  |  |
| PSUAY-LZE-ELE-8530 |  | Execute grounding grid for SE-03 in Yard 4 | 6d | 2025-12-19 A | 2026-02-12 | PSUAY-CAG-MEC-7320 | 80% | 6d | 2026-02-02 | 2026-02-09 | 24d | 0d | PSUAY - ELETROMEC - 1T - SEM HE | PROFIS [11890.7 h] |  | PSUAY-LZE-ELE-8530 | CONCLUSÃO | LUZVILLE | YARD 4 |  | CNT |  |
| PSUAY-LZE-ELE-8540 |  | Execute Securing of SE-03 to Civil Base | 2d | 2026-02-13 | 2026-02-16 | PSUAY-LZE-ELE-8530 |  |  |  |  | 24d | 0d | PSUAY - ELETROMEC - 1T - SEM HE | PROFIS [3963.57 h] |  | PSUAY-LZE-ELE-8540 | CONCLUSÃO | LUZVILLE | YARD 4 |  | CNT |  |
| PSUAY-LZE-ELE-8550 |  | Execute install of supports and trays in SE-03 Yard 4 | 8d | 2026-02-17 | 2026-02-26 | PSUAY-LZE-ELE-8540 |  |  |  |  | 24d | 0d | PSUAY - ELETROMEC - 1T - SEM HE | PROFIS [15854.3 h] |  | PSUAY-LZE-ELE-8550 | CONCLUSÃO | LUZVILLE | YARD 4 |  | CNT |  |
| PSUAY-LZE-ELE-8560 |  | Execute infrastructure groundind in SE-03 Yard 4 | 2d | 2026-02-27 | 2026-03-02 | PSUAY-LZE-ELE-8550 |  |  |  |  | 31d | 0d | PSUAY - ELETROMEC - 1T - SEM HE | PROFIS [3963.57 h] |  | PSUAY-LZE-ELE-8560 | CONCLUSÃO | LUZVILLE | YARD 4 |  | CNT |  |
| PSUAY-LZE-ELE-8570 |  | Execute SE-03 groundind in SE-03 Yard 4 | 1d | 2026-03-03 | 2026-03-03 | PSUAY-LZE-ELE-8560 |  |  |  |  | 31d | 10.5d | PSUAY - ELETROMEC - 1T - SEM HE | PROFIS [1981.78 h] |  | PSUAY-LZE-ELE-8570 | CONCLUSÃO | LUZVILLE | YARD 4 |  | CNT |  |

Notes:
- PSUAY-LZE-ELE-8390: Translate: Executar a montagem HM-L09-01 no pátio 4
- PSUAY-LZE-ELE-8400: Translate: Executar puxar e energizar cabos HM-L09-01 BT no Pátio 4
- PSUAY-LZE-ELE-8410: Translate: Executar puxar cabo de fibra óptica em HM-FEC-LOOP 1 jarda 4
- PSUAY-LZE-ELE-8420: Translate: Execute fusões de fibra óptica no HM-FEC-LOOP 1 jarda 4
- PSUAY-LZE-ELE-8430: Translate: Executar Conectações de Fibra Óptica em HM-FEC-LOOP 1 jarda 4
- PSUAY-LZE-ELE-8440: Translate: Executar puxar cabo de fibra óptica em HM-FEC-LOOP 2 jardas 4
- PSUAY-LZE-ELE-8450: Translate: Execute fusões de fibra óptica no HM-FEC-LOOP 2 Jarda 4
- PSUAY-LZE-ELE-8460: Translate: Executar Conectações de Fibra Óptica no HM-FEC-LOOP 2 Jardas 4
- PSUAY-LZE-ELE-8470: Translate: Executar puxar cabo de fibra óptica no HM-FEC-LOOP 3 jardas 4
- PSUAY-LZE-ELE-8480: Translate: Execute fusões de fibra óptica no HM-FEC-LOOP 3 jardas 4
- PSUAY-LZE-ELE-8490: Translate: Execute conectações de fibra óptica em HM-FEC-LOOP 3 jardas 4
- PSUAY-CAG-INF-8500: Translate: Execute Faixa de Pavimentação no Pátio 4
- PSUAY-CAG-INF-8510: Translate: Execute a Marcação no Pavimento no Pátio 4
- PSUAY-CAG-INF-8520: Translate: Execute placas de trânsito no Pátio 4
- PSUAY-LZE-ELE-8530: Translate: Executar a grade de aterramento para SE-03 no Pátio 4
- PSUAY-LZE-ELE-8540: Translate: Executar a Segurança do SE-03 até a Base Civil
- PSUAY-LZE-ELE-8550: Translate: Executar instalação de suportes e bandejas no Pátio SE-03 4
- PSUAY-LZE-ELE-8560: Translate: Executar infraestrutura terrestre no Pátio 4 da SE-03
- PSUAY-LZE-ELE-8570: Translate: Executar SE-03 grounddown em SE-03 Yard 4

| ID | WBS | Activity | Duration | Start | Finish | Predecessors | Complete | Remaining | Planned start | Planned finish | Total float | Free float | Calendar | Resources | ACTIVITY ID COD. | FASES DE ENTREGA | RESPONSÁVEL | ÁREAS | PHASES - YARD |
| --- | --- | --- | --- | --- | --- | --- | --- | --- | --- | --- | --- | --- | --- | --- | --- | --- | --- | --- | --- |
|  | 2 | **CABLE PREPARATION - HV - AXIS K** |  | 2026-01-12 | 2026-03-04 |  |  |  |  |  |  |  |  |  |  |  |  |  |  |
| PSUAY-LZE-ELE-8580 |  | Execute Cable Terminations Installation in SE-03 Yard 4 | 2d | 2026-01-12 A | 2026-03-02 | PSUAY-LZE-ELE-8550 | 50% | 2d | 2026-02-24 | 2026-02-25 | 30d | 0d | PSUAY - ELETROMEC - 1T - SEM HE | PROFIS [3963.57 h] | PSUAY-LZE-ELE-8580 | CONCLUSÃO | LUZVILLE | YARD 4 | CNT |
| PSUAY-LZE-ELE-8590 |  | Execute VLF Testing on Cables in SE-03 Yard 4 | 1d | 2026-03-03 | 2026-03-03 | PSUAY-LZE-ELE-8580 |  |  |  |  | 30d | 0d | PSUAY - ELETROMEC - 1T - SEM HE | PROFIS [1981.78 h] | PSUAY-LZE-ELE-8590 | CONCLUSÃO | LUZVILLE | YARD 4 | CNT |
| PSUAY-LZE-ELE-8600 |  | Execute Cable End Connectorization in SE-03 Yard 4 | 1d | 2026-03-04 | 2026-03-04 | PSUAY-LZE-ELE-8590 |  |  |  |  | 30d | 9.5d | PSUAY - ELETROMEC - 1T - SEM HE | PROFIS [1981.78 h] | PSUAY-LZE-ELE-8600 | CONCLUSÃO | LUZVILLE | YARD 4 | CNT |
|  | 3 | **SCADA PANEL** |  | 2026-03-12 | 2026-03-18 |  |  |  |  |  |  |  |  |  |  |  |  |  |  |
| PSUAY-LZE-ELE-8610 |  | Execute RTU Panel Installation in SE-03 Yard 4 | 2d | 2026-03-12 | 2026-03-16 | PSUAY-LZE-ELE-8550, PSUAY-LZE-ELE-8000 |  |  |  |  | 14.5d | 0d | PSUAY - ELETROMEC - 1T - SEM HE | PROFIS [3963.57 h] | PSUAY-LZE-ELE-8610 | CONCLUSÃO | LUZVILLE | YARD 4 | CNT |
| PSUAY-LZE-ELE-8620 |  | Execute Feeder Cable Pulling in SE-03 Yard 4 | 1d | 2026-03-16 | 2026-03-17 | PSUAY-LZE-ELE-8610 |  |  |  |  | 20.5d | 0d | PSUAY - ELETROMEC - 1T - SEM HE | PROFIS [150.14 h]; CABLE LOW VOLTAGE [40 m] | PSUAY-LZE-ELE-8620 | CONCLUSÃO | LUZVILLE | YARD 4 | CNT |
| PSUAY-LZE-ELE-8630 |  | Execute Preparation, Testing, and Connection in SE-03 Yard 4 | 1d | 2026-03-17 | 2026-03-18 | PSUAY-LZE-ELE-8620 |  |  |  |  | 20.5d | 0d | PSUAY - ELETROMEC - 1T - SEM HE | PROFIS [1981.78 h] | PSUAY-LZE-ELE-8630 | CONCLUSÃO | LUZVILLE | YARD 4 | CNT |
|  | 4 | **STARTUP** |  | 2026-03-18 | 2026-03-23 |  |  |  |  |  |  |  |  |  |  |  |  |  |  |
| PSUAY-LZE-ELE-8640 |  | Release for SE-03 E-House Commissioning and Energization in Yard 4 | 2d | 2026-03-18 | 2026-03-20 | PSUAY-LZE-ELE-8600, PSUAY-LZE-ELE-8630, PSUAY-LZE-ELE-8570 |  |  |  |  | 20.5d | 0d | PSUAY - ELETROMEC - 1T - SEM HE | PROFIS [3963.57 h] | PSUAY-LZE-ELE-8640 | CONCLUSÃO | LUZVILLE | YARD 4 | CNT |
| PSUAY-LZE-ELE-8650 |  | Execute Startup | 1d | 2026-03-20 | 2026-03-23 | PSUAY-LZE-ELE-8640 |  |  |  |  | 20.5d |  | PSUAY - ELETROMEC - 1T - SEM HE | PROFIS [1981.78 h] | PSUAY-LZE-ELE-8650 | CONCLUSÃO | LUZVILLE | YARD 4 | CNT |
|  | 2 | **GENERATOR 1000 KVA - 380V** |  | 2026-03-11 | 2026-03-23 |  |  |  |  |  |  |  |  |  |  |  |  |  |  |
|  | 1 | **GENERATOR** |  | 2026-03-11 | 2026-03-23 |  |  |  |  |  |  |  |  |  |  |  |  |  |  |
| PSUAY-LZE-ELE-8660 |  | Execute generator fix on base in Yard 4 | 1d | 2026-03-11 | 2026-03-11 | PSUAY-CAG-MEC-7340 |  |  |  |  | 20d | 0d | PSUAY - ELETROMEC - 1T - SEM HE | PROFIS [1981.78 h] | PSUAY-LZE-ELE-8660 | CONCLUSÃO | LUZVILLE | YARD 4 | CNT |
| PSUAY-LZE-ELE-8670 |  | Execute generator grounding in Yard 4 | 1d | 2026-03-12 | 2026-03-12 | PSUAY-LZE-ELE-8660 |  |  |  |  | 20d | 0d | PSUAY - ELETROMEC - 1T - SEM HE | PROFIS [1981.78 h] | PSUAY-LZE-ELE-8670 | CONCLUSÃO | LUZVILLE | YARD 4 | CNT |
| PSUAY-LZE-ELE-8680 |  | Execute generator cable pulling in Yard 4 | 3d | 2026-03-13 | 2026-03-17 | PSUAY-LZE-ELE-8670 |  |  |  |  | 20d | 0d |  | PROFIS [12611.4 h]; CABLE LOW VOLTAGE [1960 m] | PSUAY-LZE-ELE-8680 | CONCLUSÃO | LUZVILLE | YARD 4 | CNT |
| PSUAY-LZE-ELE-8690 |  | Execute generator cable preparation in Yard 4 | 2d | 2026-03-18 | 2026-03-19 | PSUAY-LZE-ELE-8680 |  |  |  |  | 20d | 0d |  | PROFIS [3963.57 h] | PSUAY-LZE-ELE-8690 | CONCLUSÃO | LUZVILLE | YARD 4 | CNT |
| PSUAY-LZE-ELE-8700 |  | Execute generator cable teste and connection in Yard 4 | 2d | 2026-03-20 | 2026-03-23 | PSUAY-LZE-ELE-8690 |  |  |  |  | 20d |  |  | PROFIS [3963.57 h] | PSUAY-LZE-ELE-8700 | CONCLUSÃO | LUZVILLE | YARD 4 | CNT |
|  | 3 | **CABLE PULLING** |  | 2026-01-12 | 2026-03-31 |  |  |  |  |  |  |  |  |  |  |  |  |  |  |
|  | 1 | **ELETROCENTERS x SS1 (AXIS L)** |  | 2026-02-04 | 2026-03-31 |  |  |  |  |  |  |  |  |  |  |  |  |  |  |
|  | 3 | **SE-03 x SS1** |  | 2026-02-04 | 2026-02-25 |  |  |  |  |  |  |  |  |  |  |  |  |  |  |
| PSUAY-LZE-ELE-8710 |  | Execute HV Cable Pulling SE-03 x SS1 in Yard 4 | 13d | 2026-02-04 | 2026-02-20 | PSUAY-LZE-ELE-4150 |  |  |  |  | 14d | 0d | PSUAY - ELETROMEC - 1T - SEM HE | PROFIS [31280.6 h]; MATERIAL - CABO HV [4167 m] | PSUAY-LZE-ELE-8710 | CONCLUSÃO | LUZVILLE | YARD 4 | CNT |
| PSUAY-LZE-ELE-8720 |  | Execute Preparation and Termination Installation SE-03 x SS1 in Yard 4 | 2d | 2026-02-23 | 2026-02-24 | PSUAY-LZE-ELE-8710 |  |  |  |  | 38d | 0d | PSUAY - ELETROMEC - 1T - SEM HE | PROFIS [3963.57 h] | PSUAY-LZE-ELE-8720 | CONCLUSÃO | LUZVILLE | YARD 4 | CNT |
| PSUAY-LZE-ELE-8730 |  | Execute VLF Testing and Connection SE-03 x SS1 in Yard 4 | 1d | 2026-02-25 | 2026-02-25 | PSUAY-LZE-ELE-8720 |  |  |  |  | 38d |  | PSUAY - ELETROMEC - 1T - SEM HE | PROFIS [1981.78 h] | PSUAY-LZE-ELE-8730 | CONCLUSÃO | LUZVILLE | YARD 4 | CNT |

Notes:
- PSUAY-LZE-ELE-8580: Translate: Executar Instalação de Terminações de Cabo no Pátio SE-03 4
- PSUAY-LZE-ELE-8590: Translate: Executar testes VLF em cabos no Jardim SE-03 4
- PSUAY-LZE-ELE-8600: Translate: Executar a conectivação de extremidade do cabo no Jardim SE-03 4
- PSUAY-LZE-ELE-8610: Translate: Executar instalação do painel RTU no Pátio SE-03 4
- PSUAY-LZE-ELE-8620: Translate: Executar puxar cabo alimentador no SE-03 Jarda 4
- PSUAY-LZE-ELE-8630: Translate: Executar preparação, testes e conexão no pátio SE-03 4
- PSUAY-LZE-ELE-8640: Translate: Liberação para comissionamento e energização da Casa Elétrica SE-03 no Pátio 4
- PSUAY-LZE-ELE-8650: Translate: Executar Inicialização
- PSUAY-LZE-ELE-8660: Translate: Executar reparação do gerador na base no Pátio 4
- PSUAY-LZE-ELE-8670: Translate: Executar aterramento do gerador no Pátio 4
- PSUAY-LZE-ELE-8680: Translate: Executar puxar cabos do gerador no pátio 4
- PSUAY-LZE-ELE-8690: Translate: Execute a preparação dos cabos do gerador no Pátio 4
- PSUAY-LZE-ELE-8700: Translate: Executar teste de cabo do gerador e conexão no pátio 4
- PSUAY-LZE-ELE-8710: Translate: Executar Cabo HV puxando SE-03 x SS1 no pátio 4
- PSUAY-LZE-ELE-8720: Translate: Executar a Instalação de Preparação e Terminação SE-03 x SS1 no Pátio 4
- PSUAY-LZE-ELE-8730: Translate: Execute Teste VLF e Conexão SE-03 x SS1 no pátio 4

| ID | WBS | Activity | Duration | Start | Finish | Predecessors | Complete | Remaining | Planned start | Planned finish | Total float | Free float | Calendar | Resources | ACTIVITY ID COD. | FASES DE ENTREGA | RESPONSÁVEL | ÁREAS | PHASES - YARD | Atualização |
| --- | --- | --- | --- | --- | --- | --- | --- | --- | --- | --- | --- | --- | --- | --- | --- | --- | --- | --- | --- | --- |
|  | 2 | **SE-06 x SS1** |  | 2026-02-23 | 2026-03-16 |  |  |  |  |  |  |  |  |  |  |  |  |  |  |  |
| PSUAY-LZE-ELE-8740 |  | Execute HV Cable Pulling SE-06 x SS1 in Yard 4 | 13d | 2026-02-23 | 2026-03-11 | PSUAY-LZE-ELE-8710 |  |  |  |  | 14d | 0d | PSUAY - ELETROMEC - 1T - SEM HE | PROFIS [26010.9 h]; MATERIAL - CABO HV [3465 m] | PSUAY-LZE-ELE-8740 | CONCLUSÃO | LUZVILLE | YARD 4 | CNT |  |
| PSUAY-LZE-ELE-8750 |  | Execute Preparation and Termination Installation SE-06 x SS1 in Yard 4 | 2d | 2026-03-12 | 2026-03-13 | PSUAY-LZE-ELE-8740 |  |  |  |  | 25d | 0d | PSUAY - ELETROMEC - 1T - SEM HE | PROFIS [3963.57 h] | PSUAY-LZE-ELE-8750 | CONCLUSÃO | LUZVILLE | YARD 4 | CNT |  |
| PSUAY-LZE-ELE-8760 |  | Execute VLF Testing and Connection SE-06 x SS1 in Yard 4 | 1d | 2026-03-16 | 2026-03-16 | PSUAY-LZE-ELE-8750 |  |  |  |  | 25d |  | PSUAY - ELETROMEC - 1T - SEM HE | PROFIS [1981.78 h] | PSUAY-LZE-ELE-8760 | CONCLUSÃO | LUZVILLE | YARD 4 | CNT |  |
|  | 1 | **SE-07 x SS1** |  | 2026-03-12 | 2026-03-31 |  |  |  |  |  |  |  |  |  |  |  |  |  |  |  |
| PSUAY-LZE-ELE-8770 |  | Execute HV Cable Pulling SE-07 x SS1 in Yard 4 | 13d | 2026-03-12 | 2026-03-30 | PSUAY-LZE-ELE-8740 |  |  |  |  | 14d | 0d | PSUAY - ELETROMEC - 1T - SEM HE | PROFIS [25312.8 h]; MATERIAL - CABO HV [3372 m] | PSUAY-LZE-ELE-8770 | CONCLUSÃO | LUZVILLE | YARD 4 | CNT |  |
| PSUAY-LZE-ELE-8780 |  | Execute Preparation and Termination Installation SE-07 x SS1 in Yard 4 | 2d | 2026-03-27 | 2026-03-30 | PSUAY-LZE-ELE-8770 FF |  |  |  |  | 14d | 0d | PSUAY - ELETROMEC - 1T - SEM HE | PROFIS [3963.57 h] | PSUAY-LZE-ELE-8780 | CONCLUSÃO | LUZVILLE | YARD 4 | CNT |  |
| PSUAY-LZE-ELE-8790 |  | Execute VLF Testing and Connection SE-07 x SS1 in Yard 4 | 1d | 2026-03-31 | 2026-03-31 | PSUAY-LZE-ELE-8780 |  |  |  |  | 14d |  | PSUAY - ELETROMEC - 1T - SEM HE | PROFIS [1981.78 h] | PSUAY-LZE-ELE-8790 | CONCLUSÃO | LUZVILLE | YARD 4 | CNT |  |
|  | 3 | **eRTG** |  | 2026-01-12 | 2026-03-06 |  |  |  |  |  |  |  |  |  |  |  |  |  |  |  |
|  | 1 | **eRTG1-FP-01** |  | 2026-01-12 | 2026-02-27 |  |  |  |  |  |  |  |  |  |  |  |  |  |  |  |
| PSUAY-LZE-ELE-8820 |  | Execute Testing and Connection in eRTG1-FP-01 Yard 4 | 2d | 2026-01-12 A | 2026-02-27 | PSUAY-LZE-ELE-8810 | 33% | 2d | 2026-02-19 | 2026-02-20 | 36d |  | PSUAY - ELETROMEC - 1T - SEM HE | PROFIS [3963.57 h] | PSUAY-LZE-ELE-8820 | CONCLUSÃO | LUZVILLE | YARD 4 | CNT |  |
| PSUAY-LZE-ELE-8800 |  | Execute LV Cable Pulling in eRTG1-FP-01 Yard 4 | 5d | 2026-01-19 A | 2026-01-23 A | PSUAY-LZE-ELE-3520 FS+2d | 100% |  | 2026-02-17 | 2026-02-23 |  |  | PSUAY - ELETROMEC - 1T - SEM HE | PROFIS [8377.54 h]; CABLE LOW VOLTAGE [2232 m] | PSUAY-LZE-ELE-8800 | CONCLUSÃO | LUZVILLE | YARD 4 | CNT | OK |
| PSUAY-LZE-ELE-8810 |  | Execute Preparation and Termination in eRTG1-FP-01 Yard 4 | 2d | 2026-02-24 | 2026-02-25 | PSUAY-LZE-ELE-8800 |  |  |  |  | 36d | 0d | PSUAY - ELETROMEC - 1T - SEM HE | PROFIS [3963.57 h] | PSUAY-LZE-ELE-8810 | CONCLUSÃO | LUZVILLE | YARD 4 | CNT |  |
|  | 2 | **eRTG1-FP-02** |  | 2026-01-19 | 2026-02-27 |  |  |  |  |  |  |  |  |  |  |  |  |  |  |  |
| PSUAY-LZE-ELE-8830 |  | Execute LV Cable Pulling in eRTG1-FP-02 Yard 4 | 5d | 2026-01-19 A | 2026-01-23 A | PSUAY-LZE-ELE-8800 | 100% |  | 2026-02-24 | 2026-03-02 |  |  | PSUAY - ELETROMEC - 1T - SEM HE | PROFIS [8377.54 h]; CABLE LOW VOLTAGE [2232 m] | PSUAY-LZE-ELE-8830 | CONCLUSÃO | LUZVILLE | YARD 4 | CNT | OK |
| PSUAY-LZE-ELE-8840 |  | Execute Preparation and Termination in eRTG1-FP-02 Yard 4 | 2d | 2026-02-24 | 2026-02-25 | PSUAY-LZE-ELE-8830 |  |  |  |  | 36d | 0d | PSUAY - ELETROMEC - 1T - SEM HE | PROFIS [3963.57 h] | PSUAY-LZE-ELE-8840 | CONCLUSÃO | LUZVILLE | YARD 4 | CNT |  |
| PSUAY-LZE-ELE-8850 |  | Execute Testing and Connection in eRTG1-FP-02 Yard 4 | 2d | 2026-02-26 | 2026-02-27 | PSUAY-LZE-ELE-8840 |  |  |  |  | 36d |  | PSUAY - ELETROMEC - 1T - SEM HE | PROFIS [3963.57 h] | PSUAY-LZE-ELE-8850 | CONCLUSÃO | LUZVILLE | YARD 4 | CNT |  |
|  | 3 | **eRTG1-FP-03** |  | 2026-01-19 | 2026-02-27 |  |  |  |  |  |  |  |  |  |  |  |  |  |  |  |
| PSUAY-LZE-ELE-8860 |  | Execute LV Cable Pulling in eRTG1-FP-03 Yard 4 | 5d | 2026-01-19 A | 2026-01-24 A | PSUAY-LZE-ELE-8830 | 100% |  | 2026-03-03 | 2026-03-09 |  |  | PSUAY - ELETROMEC - 1T - SEM HE | PROFIS [9908.91 h]; CABLE LOW VOLTAGE [2640 m] | PSUAY-LZE-ELE-8860 | CONCLUSÃO | LUZVILLE | YARD 4 | CNT | OK |
| PSUAY-LZE-ELE-8870 |  | Execute Preparation and Termination in eRTG1-FP-03 Yard 4 | 2d | 2026-02-24 | 2026-02-25 | PSUAY-LZE-ELE-8860 |  |  |  |  | 36d | 0d | PSUAY - ELETROMEC - 1T - SEM HE | PROFIS [3963.57 h] | PSUAY-LZE-ELE-8870 | CONCLUSÃO | LUZVILLE | YARD 4 | CNT |  |
| PSUAY-LZE-ELE-8880 |  | Execute Testing and Connection in eRTG1-FP-03 Yard 4 | 2d | 2026-02-26 | 2026-02-27 | PSUAY-LZE-ELE-8870 |  |  |  |  | 36d |  | PSUAY - ELETROMEC - 1T - SEM HE | PROFIS [3963.57 h] | PSUAY-LZE-ELE-8880 | CONCLUSÃO | LUZVILLE | YARD 4 | CNT |  |
|  | 4 | **eRTG1-FP-04** |  | 2026-01-19 | 2026-03-06 |  |  |  |  |  |  |  |  |  |  |  |  |  |  |  |
| PSUAY-LZE-ELE-8890 |  | Execute LV Cable Pulling in eRTG1-FP-04 Yard 4 | 5d | 2026-01-19 A | 2026-03-02 | PSUAY-LZE-ELE-8860 | 90% | 5d | 2026-03-10 | 2026-03-16 | 15d | 0d | PSUAY - ELETROMEC - 1T - SEM HE | PROFIS [9908.91 h]; CABLE LOW VOLTAGE [2640 m] | PSUAY-LZE-ELE-8890 | CONCLUSÃO | LUZVILLE | YARD 4 | CNT | OK |
| PSUAY-LZE-ELE-8900 |  | Execute Preparation and Termination in eRTG1-FP-04 Yard 4 | 2d | 2026-03-03 | 2026-03-04 | PSUAY-LZE-ELE-8890 |  |  |  |  | 31d | 0d | PSUAY - ELETROMEC - 1T - SEM HE | PROFIS [3963.57 h] | PSUAY-LZE-ELE-8900 | CONCLUSÃO | LUZVILLE | YARD 4 | CNT |  |
| PSUAY-LZE-ELE-8910 |  | Execute Testing and Connection in eRTG1-FP-04 Yard 4 | 2d | 2026-03-05 | 2026-03-06 | PSUAY-LZE-ELE-8900 |  |  |  |  | 31d |  | PSUAY - ELETROMEC - 1T - SEM HE | PROFIS [3963.57 h] | PSUAY-LZE-ELE-8910 | CONCLUSÃO | LUZVILLE | YARD 4 | CNT |  |

Notes:
- PSUAY-LZE-ELE-8740: Translate: Executar cabo HV puxando SE-06 x SS1 no pátio 4
- PSUAY-LZE-ELE-8750: Translate: Executar Preparação e Instalação de Terminação SE-06 x SS1 no Pátio 4
- PSUAY-LZE-ELE-8760: Translate: Execute Teste VLF e Conexão SE-06 x SS1 no pátio 4
- PSUAY-LZE-ELE-8770: Translate: Executar cabo HV puxando SE-07 x SS1 no pátio 4
- PSUAY-LZE-ELE-8780: Translate: Executar Preparação e Instalação de Terminação SE-07 x SS1 no Pátio 4
- PSUAY-LZE-ELE-8790: Translate: Execute o teste VLF e a conexão SE-07 x SS1 no pátio 4
- PSUAY-LZE-ELE-8820: Translate: Executar Testes e Conexão no eRTG1-FP-01 Yard 4
- PSUAY-LZE-ELE-8800: Translate: Executar cabo LV puxando eRTG1-FP-01 jarda 4
- PSUAY-LZE-ELE-8810: Translate: Executar Preparação e Terminação em eRTG1-FP-01 Yard 4
- PSUAY-LZE-ELE-8830: Translate: Executar cabo LV puxando eRTG1-FP-02 jarda 4
- PSUAY-LZE-ELE-8840: Translate: Executar Preparação e Terminação em eRTG1-FP-02 Jarda 4
- PSUAY-LZE-ELE-8850: Translate: Executar Testes e Conexão no eRTG1-FP-02 Yard 4
- PSUAY-LZE-ELE-8860: Translate: Executar cabo LV puxando eRTG1-FP-03 jarda 4
- PSUAY-LZE-ELE-8870: Translate: Executar Preparação e Terminação em eRTG1-FP-03 Jarda 4
- PSUAY-LZE-ELE-8880: Translate: Executar Testes e Conexão no eRTG1-FP-03 Yard 4
- PSUAY-LZE-ELE-8890: Translate: Executar cabo LV puxando eRTG1-FP-04 jarda 4
- PSUAY-LZE-ELE-8900: Translate: Executar Preparação e Terminação em eRTG1-FP-04 Jarda 4
- PSUAY-LZE-ELE-8910: Translate: Executar Testes e Conexão em eRTG1-FP-04 Jarda 4

| ID | WBS | Activity | Duration | Start | Finish | Predecessors | Total float | Free float | Calendar | Resources | ACTIVITY ID COD. | FASES DE ENTREGA | RESPONSÁVEL | ÁREAS | PHASES - YARD |
| --- | --- | --- | --- | --- | --- | --- | --- | --- | --- | --- | --- | --- | --- | --- | --- |
|  | 5 | **EXTERNAL DRIVER TOILET BLOCK** |  | 2026-03-13 | 2026-03-24 |  |  |  |  |  |  |  |  |  |  |
| PSUAY-LZE-ELE-8920 |  | Execute LV Cable Pulling in External Driver Toilet Yard 4 | 4d | 2026-03-13 | 2026-03-18 | PSUAY-LZE-ELE-10540 | 16d | 0d | PSUAY - ELETROMEC - 1T - SEM HE | PROFIS [7450.45 h]; CABLE LOW VOLTAGE [1985 m] | PSUAY-LZE-ELE-8920 | CONCLUSÃO | LUZVILLE | YARD 4 | CNT |
| PSUAY-LZE-ELE-8930 |  | Execute Cable Preparation and Termination in External Driver Toilet Yard 4 | 2d | 2026-03-19 | 2026-03-20 | PSUAY-LZE-ELE-8920 | 19d | 0d | PSUAY - ELETROMEC - 1T - SEM HE | PROFIS [3963.57 h] | PSUAY-LZE-ELE-8930 | CONCLUSÃO | LUZVILLE | YARD 4 | CNT |
| PSUAY-LZE-ELE-8940 |  | Execute Testing and Connection in External Driver Toilet Yard 4 | 2d | 2026-03-23 | 2026-03-24 | PSUAY-LZE-ELE-8930 | 19d |  | PSUAY - ELETROMEC - 1T - SEM HE | PROFIS [3963.57 h] | PSUAY-LZE-ELE-8940 | CONCLUSÃO | LUZVILLE | YARD 4 | CNT |
|  | 6 | **WEIGHBRIDGE** |  | 2026-03-19 | 2026-03-27 |  |  |  |  |  |  |  |  |  |  |
| PSUAY-LZE-ELE-8950 |  | Execute LV Cable Pulling in Weighbridge Yard 4 | 3d | 2026-03-19 | 2026-03-23 | PSUAY-LZE-ELE-8920 | 16d | 0d | PSUAY - ELETROMEC - 1T - SEM HE | PROFIS [5386.1 h]; CABLE LOW VOLTAGE [1435 m] | PSUAY-LZE-ELE-8950 | CONCLUSÃO | LUZVILLE | YARD 4 | CNT |
| PSUAY-LZE-ELE-8960 |  | Execute Cable Preparation and Termination in Weighbridge Yard 4 | 2d | 2026-03-24 | 2026-03-25 | PSUAY-LZE-ELE-8950 | 16d | 0d | PSUAY - ELETROMEC - 1T - SEM HE | PROFIS [3963.57 h] | PSUAY-LZE-ELE-8960 | CONCLUSÃO | LUZVILLE | YARD 4 | CNT |
| PSUAY-LZE-ELE-8970 |  | Execute Testing and Connection in Weighbridge Yard 4 | 2d | 2026-03-26 | 2026-03-27 | PSUAY-LZE-ELE-8960 | 16d |  | PSUAY - ELETROMEC - 1T - SEM HE | PROFIS [3963.57 h] | PSUAY-LZE-ELE-8970 | CONCLUSÃO | LUZVILLE | YARD 4 | CNT |
|  | 2 | **REEFERS** |  | 2025-12-08 | 2026-03-30 |  |  |  |  |  |  |  |  |  |  |
|  | 1 | **REEFER RR-1** |  | 2025-12-17 | 2026-02-27 |  |  |  |  |  |  |  |  |  |  |
|  | 1 | **INFRASTRUCTURE** |  | 2026-01-28 | 2026-02-10 |  |  |  |  |  |  |  |  |  |  |
| PSUAY-LZE-ELE-8980 |  | Execute infrastructure for cables in Reefer RR1 in Yard 4 | 10d | 2026-01-28 | 2026-02-10 | PSUAY-BRF-EST-7250 | 15d | 0d | PSUAY - ELETROMEC - 1T - SEM HE | PROFIS [19817.8 h] | PSUAY-LZE-ELE-8980 | CONCLUSÃO | LUZVILLE | YARD 4 | CNT |
|  | 2 | **LIGHTING** |  | 2026-02-06 | 2026-02-25 |  |  |  |  |  |  |  |  |  |  |
| PSUAY-LZE-ELE-8990 |  | Execute lightining instalation in Reefer RR1 in Yard 4 | 6d | 2026-02-06 | 2026-02-13 | PSUAY-LZE-ELE-8980 SS+7d | 15d | 0d | PSUAY - ELETROMEC - 1T - SEM HE | PROFIS [11890.7 h] | PSUAY-LZE-ELE-8990 | CONCLUSÃO | LUZVILLE | YARD 4 | CNT |
| PSUAY-LZE-ELE-9000 |  | Execute LV lighting cable pulling in Reefer RR1 in Yard 4 | 3d | 2026-02-16 | 2026-02-18 | PSUAY-LZE-ELE-8990 | 36d | 0d | PSUAY - ELETROMEC - 1T - SEM HE | PROFIS [4691.72 h]; CABLE LOW VOLTAGE [1250 m] | PSUAY-LZE-ELE-9000 | CONCLUSÃO | LUZVILLE | YARD 4 | CNT |
| PSUAY-LZE-ELE-9010 |  | Execute preparation, teste and connectorization for lighting cables in Reefer RR1 in Yard 4 | 5d | 2026-02-19 | 2026-02-25 | PSUAY-LZE-ELE-9000 | 36d | 0d | PSUAY - ELETROMEC - 1T - SEM HE | PROFIS [9908.91 h] | PSUAY-LZE-ELE-9010 | CONCLUSÃO | LUZVILLE | YARD 4 | CNT |
|  | 3 | **PANELS** |  | 2026-02-16 | 2026-02-23 |  |  |  |  |  |  |  |  |  |  |
|  | 1 | **REEFER RACK DB - 380V** |  | 2026-02-16 | 2026-02-16 |  |  |  |  |  |  |  |  |  |  |
| PSUAY-LZE-ELE-9020 |  | Execute assembly of Reefer RR1 DB-380V panel in Yard 4 | 1d | 2026-02-16 | 2026-02-16 | PSUAY-LZE-ELE-8990 | 37d | 0d | PSUAY - ELETROMEC - 1T - SEM HE | PROFIS [1981.78 h] | PSUAY-LZE-ELE-9020 | CONCLUSÃO | LUZVILLE | YARD 4 | CNT |
|  | 2 | **REEFER RACK LEVEL DB - FLOOR** |  | 2026-02-17 | 2026-02-23 |  |  |  |  |  |  |  |  |  |  |
| PSUAY-LZE-ELE-9030 |  | Execute assembly of Reefer RR1 DB (Floor) panels in Yard 4 | 5d | 2026-02-17 | 2026-02-23 | PSUAY-LZE-ELE-9020 | 38d | 1d | PSUAY - ELETROMEC - 1T - SEM HE | PROFIS [9908.91 h] | PSUAY-LZE-ELE-9030 | CONCLUSÃO | LUZVILLE | YARD 4 | CNT |
|  | 3 | **REEFER RACK MAIN PANEL - 440V** |  | 2026-02-17 | 2026-02-17 |  |  |  |  |  |  |  |  |  |  |
| PSUAY-LZE-ELE-9040 |  | Execute assembly of Reefer RR1 Main Panel-440V in Yard 4 | 1d | 2026-02-17 | 2026-02-17 | PSUAY-LZE-ELE-9020 | 37d | 0d | PSUAY - ELETROMEC - 1T - SEM HE | PROFIS [1981.78 h] | PSUAY-LZE-ELE-9040 | CONCLUSÃO | LUZVILLE | YARD 4 | CNT |
|  | 4 | **PAINEL SCADA - AUTOMAÇÃO** |  | 2026-02-18 | 2026-02-18 |  |  |  |  |  |  |  |  |  |  |
| PSUAY-LZE-ELE-9050 |  | Execute assembly of Reefer RR1 SCADA panel in Yard 4 | 1d | 2026-02-18 | 2026-02-18 | PSUAY-LZE-ELE-9040 | 37d | 0d | PSUAY - ELETROMEC - 1T - SEM HE | PROFIS [1981.78 h] | PSUAY-LZE-ELE-9050 | CONCLUSÃO | LUZVILLE | YARD 4 | CNT |

Notes:
- PSUAY-LZE-ELE-8920: Translate: Executar puxar cabo LV no pátio do vaso sanitário do driver externo 4
- PSUAY-LZE-ELE-8930: Translate: Executar preparação e terminação de cabos no pátio 4 do banheiro com motorista externo
- PSUAY-LZE-ELE-8940: Translate: Executar Testes e Conexão no Pátio 4 do Banheiro Externo do Driver
- PSUAY-LZE-ELE-8950: Translate: Executar puxar cabo LV no pátio 4 da ponte de pesagem
- PSUAY-LZE-ELE-8960: Translate: Executar a preparação e terminação do cabo no pátio 4 da ponte de pesagem
- PSUAY-LZE-ELE-8970: Translate: Executar Testes e Conexão no Pátio da Ponte de Pesagem 4
- PSUAY-LZE-ELE-8980: Translate: Executar infraestrutura para cabos no Reefer RR1 no pátio 4
- PSUAY-LZE-ELE-8990: Translate: Executar instalação de iluminação no Reefer RR1 no pátio 4
- PSUAY-LZE-ELE-9000: Translate: Execute puxar cabo de iluminação LV para dentro do Reefer RR1 no pátio 4
- PSUAY-LZE-ELE-9010: Translate: Executar preparação, teste e conectivação para cabos de iluminação no Reefer RR1 no pátio 4
- PSUAY-LZE-ELE-9020: Translate: Executar montagem do painel Reefer RR1 DB-380V no pátio 4
- PSUAY-LZE-ELE-9030: Translate: Executar montagem dos painéis DB (Floor) Reefer RR1 no pátio 4
- PSUAY-LZE-ELE-9040: Translate: Executar montagem do Painel Principal Reefer RR1-440V no pátio 4
- PSUAY-LZE-ELE-9050: Translate: Executar montagem do painel SCADA do Reefer RR1 no pátio 4

| ID | WBS | Activity | Duration | Start | Finish | Predecessors | Complete | Planned start | Planned finish | Total float | Free float | Calendar | Resources | ACTIVITY ID COD. | FASES DE ENTREGA | RESPONSÁVEL | ÁREAS | PHASES - YARD |
| --- | --- | --- | --- | --- | --- | --- | --- | --- | --- | --- | --- | --- | --- | --- | --- | --- | --- | --- |
|  | 4 | **CABLE PULLING (SE03 X REEFER)** |  | 2025-12-17 | 2026-02-16 |  |  |  |  |  |  |  |  |  |  |  |  |  |
|  | 1 | **POWER CABLES** |  | 2025-12-17 | 2026-02-16 |  |  |  |  |  |  |  |  |  |  |  |  |  |
| PSUAY-LZE-ELE-9060 |  | Execute Power cables pulling in Reefer RR1 in Yard 4 | 4d | 2025-12-17 A | 2025-12-19 A | PSUAY-LZE-ELE-8990 SS | 100% | 2026-01-14 | 2026-01-19 |  |  | PSUAY - ELETROMEC - 1T - SEM HE | PROFIS [7198.98 h]; CABLE LOW VOLTAGE [1918 m] | PSUAY-LZE-ELE-9060 | CONCLUSÃO | LUZVILLE | YARD 4 | CNT |
| PSUAY-LZE-ELE-9070 |  | Execute Power Cable Preparation in Reefer RR1 in Yard 4 | 3d | 2026-02-06 | 2026-02-10 | PSUAY-LZE-ELE-9060 |  |  |  | 43d | 0d | PSUAY - ELETROMEC - 1T - SEM HE | PROFIS [5945.35 h] | PSUAY-LZE-ELE-9070 | CONCLUSÃO | LUZVILLE | YARD 4 | CNT |
| PSUAY-LZE-ELE-9080 |  | Execute Power Cable Testing in Reefer RR1 in Yard 4 | 2d | 2026-02-11 | 2026-02-12 | PSUAY-LZE-ELE-9070 |  |  |  | 43d | 0d | PSUAY - ELETROMEC - 1T - SEM HE | PROFIS [3963.57 h] | PSUAY-LZE-ELE-9080 | CONCLUSÃO | LUZVILLE | YARD 4 | CNT |
| PSUAY-LZE-ELE-9090 |  | Execute Power Cable Connectorization in Reefer RR1 in YArd 4 | 2d | 2026-02-13 | 2026-02-16 | PSUAY-LZE-ELE-9080 |  |  |  | 43d | 7d | PSUAY - ELETROMEC - 1T - SEM HE | PROFIS [3963.57 h] | PSUAY-LZE-ELE-9090 | CONCLUSÃO | LUZVILLE | YARD 4 | CNT |
|  | 2 | **OPTIC FIBER** |  | 2026-02-06 | 2026-02-10 |  |  |  |  |  |  |  |  |  |  |  |  |  |
| PSUAY-LZE-ELE-9100 |  | Execute Fiber Optic Cable Pulling in Reefer RR1 in Yard 4 | 1d | 2026-02-06 | 2026-02-06 | PSUAY-LZE-ELE-9060 |  |  |  | 47d | 0d | PSUAY - ELETROMEC - 1T - SEM HE | PROFIS [825.74 h]; CABLE FIBER OPTICS [154 m] | PSUAY-LZE-ELE-9100 | CONCLUSÃO | LUZVILLE | YARD 4 | CNT |
| PSUAY-LZE-ELE-9110 |  | Execute Fiber Fusion Splicing in Reefer RR1 in Yard 4 | 1d | 2026-02-09 | 2026-02-09 | PSUAY-LZE-ELE-9100 |  |  |  | 47d | 0d | PSUAY - ELETROMEC - 1T - SEM HE | PROFIS [1981.78 h] | PSUAY-LZE-ELE-9110 | CONCLUSÃO | LUZVILLE | YARD 4 | CNT |
| PSUAY-LZE-ELE-9120 |  | Execute Fiber Connectorization in Reefer RR1 in Yard 4 | 1d | 2026-02-10 | 2026-02-10 | PSUAY-LZE-ELE-9110 |  |  |  | 47d | 11d | PSUAY - ELETROMEC - 1T - SEM HE | PROFIS [1981.78 h] | PSUAY-LZE-ELE-9120 | CONCLUSÃO | LUZVILLE | YARD 4 | CNT |
|  | 5 | **GROUNDING** |  | 2026-02-19 | 2026-02-24 |  |  |  |  |  |  |  |  |  |  |  |  |  |
| PSUAY-LZE-ELE-9130 |  | Execute grounding for Reefer RR1 in Yard 4 | 4d | 2026-02-19 | 2026-02-24 | PSUAY-LZE-ELE-9020, PSUAY-LZE-ELE-9030 FF, PSUAY-LZE-ELE-9040, PSUAY-LZE-ELE-9050 |  |  |  | 37d | 1d | PSUAY - ELETROMEC - 1T - SEM HE | PROFIS [7927.13 h] | PSUAY-LZE-ELE-9130 | CONCLUSÃO | LUZVILLE | YARD 4 | CNT |
|  | 6 | **PRE-COMMISSIONING** |  | 2026-02-26 | 2026-02-27 |  |  |  |  |  |  |  |  |  |  |  |  |  |
| PSUAY-LZE-ELE-9140 |  | Execute pre-commissioning in RR1 in Yard 4 | 2d | 2026-02-26 | 2026-02-27 | PSUAY-LZE-ELE-9130, PSUAY-LZE-ELE-9120, PSUAY-LZE-ELE-9090, PSUAY-LZE-ELE-9010, PSUAY-LZE-ELE-8980 |  |  |  | 36d |  | PSUAY - ELETROMEC - 1T - SEM HE | PROFIS [3963.57 h] | PSUAY-LZE-ELE-9140 | CONCLUSÃO | LUZVILLE | YARD 4 | CNT |
|  | 2 | **REEFER RR-2** |  | 2025-12-22 | 2026-02-27 |  |  |  |  |  |  |  |  |  |  |  |  |  |
|  | 1 | **INFRASTRUCTURE** |  | 2026-01-28 | 2026-02-10 |  |  |  |  |  |  |  |  |  |  |  |  |  |
| PSUAY-LZE-ELE-9150 |  | Execute infrastructure for cables in Reefer RR2 in Yard 4 | 10d | 2026-01-28 | 2026-02-10 | PSUAY-LZE-ELE-8980 SS |  |  |  | 15d | 0d | PSUAY - ELETROMEC - 1T - SEM HE | PROFIS [19817.8 h] | PSUAY-LZE-ELE-9150 | CONCLUSÃO | LUZVILLE | YARD 4 | CNT |
|  | 2 | **LIGHTING** |  | 2026-02-06 | 2026-02-25 |  |  |  |  |  |  |  |  |  |  |  |  |  |
| PSUAY-LZE-ELE-9160 |  | Execute lightining instalation in Reefer RR2 in Yard 4 | 6d | 2026-02-06 | 2026-02-13 | PSUAY-LZE-ELE-9150 SS+7d |  |  |  | 15d | 0d | PSUAY - ELETROMEC - 1T - SEM HE | PROFIS [11890.7 h] | PSUAY-LZE-ELE-9160 | CONCLUSÃO | LUZVILLE | YARD 4 | CNT |
| PSUAY-LZE-ELE-9170 |  | Execute LV lighting cable pulling in Reefer RR2 in Yard 4 | 3d | 2026-02-16 | 2026-02-18 | PSUAY-LZE-ELE-9160 |  |  |  | 36d | 0d | PSUAY - ELETROMEC - 1T - SEM HE | PROFIS [4691.72 h]; CABLE LOW VOLTAGE [1250 m] | PSUAY-LZE-ELE-9170 | CONCLUSÃO | LUZVILLE | YARD 4 | CNT |
| PSUAY-LZE-ELE-9180 |  | Execute preparation, teste and connectorization for lighting cables in Reefer RR2 in Yard 4 | 5d | 2026-02-19 | 2026-02-25 | PSUAY-LZE-ELE-9170 |  |  |  | 36d | 0d | PSUAY - ELETROMEC - 1T - SEM HE | PROFIS [9908.91 h] | PSUAY-LZE-ELE-9180 | CONCLUSÃO | LUZVILLE | YARD 4 | CNT |
|  | 3 | **PANELS** |  | 2026-02-16 | 2026-02-23 |  |  |  |  |  |  |  |  |  |  |  |  |  |
|  | 1 | **REEFER RACK DB - 380V** |  | 2026-02-16 | 2026-02-16 |  |  |  |  |  |  |  |  |  |  |  |  |  |
| PSUAY-LZE-ELE-9190 |  | Execute assembly of Reefer RR2 DB-380V panel in Yard 4 | 1d | 2026-02-16 | 2026-02-16 | PSUAY-LZE-ELE-9160 |  |  |  | 37d | 0d | PSUAY - ELETROMEC - 1T - SEM HE | PROFIS [1981.78 h] | PSUAY-LZE-ELE-9190 | CONCLUSÃO | LUZVILLE | YARD 4 | CNT |

Notes:
- PSUAY-LZE-ELE-9060: Translate: Executar cabos de energia puxando o Reefer RR1 no pátio 4
- PSUAY-LZE-ELE-9070: Translate: Execute a preparação do cabo de energia no Reefer RR1 no pátio 4
- PSUAY-LZE-ELE-9080: Translate: Execute Teste de Cabo de Energia no Reefer RR1 no Pátio 4
- PSUAY-LZE-ELE-9090: Translate: Execute a conectividade do cabo de energia no Reefer RR1 em YRD4
- PSUAY-LZE-ELE-9100: Translate: Executar puxagem de cabo de fibra óptica para o reefer RR1 no pátio 4
- PSUAY-LZE-ELE-9110: Translate: Execute emenda por fusão de fibra no Reefer RR1 no Pátio 4
- PSUAY-LZE-ELE-9120: Translate: Execute a conectivação de fibra no Reefer RR1 no pátio 4
- PSUAY-LZE-ELE-9130: Translate: Executar grounding para Reefer RR1 no Yard 4
- PSUAY-LZE-ELE-9140: Translate: Executar pré-comissionamento no RR1 no Pátio 4
- PSUAY-LZE-ELE-9150: Translate: Executar infraestrutura para cabos no Reefer RR2 no pátio 4
- PSUAY-LZE-ELE-9160: Translate: Execute instalação de relâmpagos no Reefer RR2 no pátio 4
- PSUAY-LZE-ELE-9170: Translate: Executar cabo de iluminação LV puxando o Reefer RR2 no Pátio 4
- PSUAY-LZE-ELE-9180: Translate: Executar preparação, teste e conectivação para cabos de iluminação no Reefer RR2 no pátio 4
- PSUAY-LZE-ELE-9190: Translate: Executar montagem do painel Reefer RR2 DB-380V no pátio 4

| ID | WBS | Activity | Duration | Start | Finish | Predecessors | Complete | Planned start | Planned finish | Total float | Free float | Calendar | Resources | ACTIVITY ID COD. | FASES DE ENTREGA | RESPONSÁVEL | ÁREAS | PHASES - YARD |
| --- | --- | --- | --- | --- | --- | --- | --- | --- | --- | --- | --- | --- | --- | --- | --- | --- | --- | --- |
|  | 2 | **REEFER RACK LEVEL DB - FLOOR** |  | 2026-02-17 | 2026-02-23 |  |  |  |  |  |  |  |  |  |  |  |  |  |
| PSUAY-LZE-ELE-9200 |  | Execute assembly of Reefer RR2 DB (Floor) panels in Yard 4 | 5d | 2026-02-17 | 2026-02-23 | PSUAY-LZE-ELE-9190 |  |  |  | 38d | 1d | PSUAY - ELETROMEC - 1T - SEM HE | PROFIS [9908.91 h] | PSUAY-LZE-ELE-9200 | CONCLUSÃO | LUZVILLE | YARD 4 | CNT |
|  | 3 | **REEFER RACK MAIN PANEL - 440V** |  | 2026-02-17 | 2026-02-17 |  |  |  |  |  |  |  |  |  |  |  |  |  |
| PSUAY-LZE-ELE-9210 |  | Execute assembly of Reefer RR2 Main Panel-440V in Yard 4 | 1d | 2026-02-17 | 2026-02-17 | PSUAY-LZE-ELE-9190 |  |  |  | 37d | 0d | PSUAY - ELETROMEC - 1T - SEM HE | PROFIS [1981.78 h] | PSUAY-LZE-ELE-9210 | CONCLUSÃO | LUZVILLE | YARD 4 | CNT |
|  | 4 | **PAINEL SCADA - AUTOMAÇÃO** |  | 2026-02-18 | 2026-02-18 |  |  |  |  |  |  |  |  |  |  |  |  |  |
| PSUAY-LZE-ELE-9220 |  | Execute assembly of Reefer RR2 SCADA panel in Yard 4 | 1d | 2026-02-18 | 2026-02-18 | PSUAY-LZE-ELE-9210 |  |  |  | 37d | 0d | PSUAY - ELETROMEC - 1T - SEM HE | PROFIS [1981.78 h] | PSUAY-LZE-ELE-9220 | CONCLUSÃO | LUZVILLE | YARD 4 | CNT |
|  | 4 | **CABLE PULLING (SE03 X REEFER)** |  | 2025-12-22 | 2026-02-16 |  |  |  |  |  |  |  |  |  |  |  |  |  |
|  | 1 | **POWER CABLES** |  | 2025-12-22 | 2026-02-16 |  |  |  |  |  |  |  |  |  |  |  |  |  |
| PSUAY-LZE-ELE-9230 |  | Execute Power cables pulling in Reefer RR2 in Yard 4 | 4d | 2025-12-22 A | 2025-12-23 A | PSUAY-LZE-ELE-9060 | 100% | 2026-01-15 | 2026-01-20 |  |  | PSUAY - ELETROMEC - 1T - SEM HE | PROFIS [7987.19 h]; CABLE LOW VOLTAGE [2128 m] | PSUAY-LZE-ELE-9230 | CONCLUSÃO | LUZVILLE | YARD 4 | CNT |
| PSUAY-LZE-ELE-9240 |  | Execute Power Cable Preparation in Reefer RR2 in Yard 4 | 3d | 2026-02-06 | 2026-02-10 | PSUAY-LZE-ELE-9230 |  |  |  | 43d | 0d | PSUAY - ELETROMEC - 1T - SEM HE | PROFIS [5945.35 h] | PSUAY-LZE-ELE-9240 | CONCLUSÃO | LUZVILLE | YARD 4 | CNT |
| PSUAY-LZE-ELE-9250 |  | Execute Power Cable Testing in Reefer RR2 in Yard 4 | 2d | 2026-02-11 | 2026-02-12 | PSUAY-LZE-ELE-9240 |  |  |  | 43d | 0d | PSUAY - ELETROMEC - 1T - SEM HE | PROFIS [3963.57 h] | PSUAY-LZE-ELE-9250 | CONCLUSÃO | LUZVILLE | YARD 4 | CNT |
| PSUAY-LZE-ELE-9260 |  | Execute Power Cable Connectorization in Reefer RR2 in YArd 4 | 2d | 2026-02-13 | 2026-02-16 | PSUAY-LZE-ELE-9250 |  |  |  | 43d | 7d | PSUAY - ELETROMEC - 1T - SEM HE | PROFIS [3963.57 h] | PSUAY-LZE-ELE-9260 | CONCLUSÃO | LUZVILLE | YARD 4 | CNT |
|  | 2 | **OPTIC FIBER** |  | 2026-02-06 | 2026-02-10 |  |  |  |  |  |  |  |  |  |  |  |  |  |
| PSUAY-LZE-ELE-9270 |  | Execute Fiber Optic Cable Pulling in Reefer RR2 in Yard 4 | 1d | 2026-02-06 | 2026-02-06 | PSUAY-LZE-ELE-9230 |  |  |  | 47d | 0d | PSUAY - ELETROMEC - 1T - SEM HE | PROFIS [911.53 h]; CABLE FIBER OPTICS [170 m] | PSUAY-LZE-ELE-9270 | CONCLUSÃO | LUZVILLE | YARD 4 | CNT |
| PSUAY-LZE-ELE-9280 |  | Execute Fiber Fusion Splicing in Reefer RR2 in Yard 4 | 1d | 2026-02-09 | 2026-02-09 | PSUAY-LZE-ELE-9270 |  |  |  | 47d | 0d | PSUAY - ELETROMEC - 1T - SEM HE | PROFIS [1981.78 h] | PSUAY-LZE-ELE-9280 | CONCLUSÃO | LUZVILLE | YARD 4 | CNT |
| PSUAY-LZE-ELE-9290 |  | Execute Fiber Connectorization in Reefer RR2 in Yard 4 | 1d | 2026-02-10 | 2026-02-10 | PSUAY-LZE-ELE-9280 |  |  |  | 47d | 11d | PSUAY - ELETROMEC - 1T - SEM HE | PROFIS [1981.78 h] | PSUAY-LZE-ELE-9290 | CONCLUSÃO | LUZVILLE | YARD 4 | CNT |
|  | 5 | **GROUNDING** |  | 2026-02-19 | 2026-02-24 |  |  |  |  |  |  |  |  |  |  |  |  |  |
| PSUAY-LZE-ELE-9300 |  | Execute grounding for Reefer RR2 in Yard 4 | 4d | 2026-02-19 | 2026-02-24 | PSUAY-LZE-ELE-9150, PSUAY-LZE-ELE-9190, PSUAY-LZE-ELE-9200 FF, PSUAY-LZE-ELE-9210, PSUAY-LZE-ELE-9220 |  |  |  | 37d | 1d | PSUAY - ELETROMEC - 1T - SEM HE | PROFIS [7927.13 h] | PSUAY-LZE-ELE-9300 | CONCLUSÃO | LUZVILLE | YARD 4 | CNT |
|  | 6 | **PRE-COMMISSIONING** |  | 2026-02-26 | 2026-02-27 |  |  |  |  |  |  |  |  |  |  |  |  |  |
| PSUAY-LZE-ELE-9310 |  | Execute pre-commissioning in RR2 in Yard 4 | 2d | 2026-02-26 | 2026-02-27 | PSUAY-LZE-ELE-9300, PSUAY-LZE-ELE-9290, PSUAY-LZE-ELE-9260, PSUAY-LZE-ELE-9180, PSUAY-LZE-ELE-9150 |  |  |  | 36d |  | PSUAY - ELETROMEC - 1T - SEM HE | PROFIS [3963.57 h] | PSUAY-LZE-ELE-9310 | CONCLUSÃO | LUZVILLE | YARD 4 | CNT |
|  | 3 | **REEFER RR-3** |  | 2025-12-19 | 2026-03-18 |  |  |  |  |  |  |  |  |  |  |  |  |  |
|  | 1 | **INFRASTRUCTURE** |  | 2026-02-16 | 2026-02-27 |  |  |  |  |  |  |  |  |  |  |  |  |  |
| PSUAY-LZE-ELE-9320 |  | Execute infrastructure for cables in Reefer RR3 in Yard 4 | 10d | 2026-02-16 | 2026-02-27 | PSUAY-LZE-ELE-8990 |  |  |  | 15d | 0d | PSUAY - ELETROMEC - 1T - SEM HE | PROFIS [19817.8 h] | PSUAY-LZE-ELE-9320 | CONCLUSÃO | LUZVILLE | YARD 4 | CNT |
|  | 2 | **LIGHTING** |  | 2026-02-25 | 2026-03-16 |  |  |  |  |  |  |  |  |  |  |  |  |  |
| PSUAY-LZE-ELE-9330 |  | Execute lightining instalation in Reefer RR3 in Yard 4 | 6d | 2026-02-25 | 2026-03-04 | PSUAY-LZE-ELE-9320 SS+7d |  |  |  | 15d | 0d | PSUAY - ELETROMEC - 1T - SEM HE | PROFIS [11890.7 h] | PSUAY-LZE-ELE-9330 | CONCLUSÃO | LUZVILLE | YARD 4 | CNT |
| PSUAY-LZE-ELE-9340 |  | Execute LV lighting cable pulling in Reefer RR3 in Yard 4 | 3d | 2026-03-05 | 2026-03-09 | PSUAY-LZE-ELE-9330 |  |  |  | 23d | 0d | PSUAY - ELETROMEC - 1T - SEM HE | PROFIS [4691.72 h]; CABLE LOW VOLTAGE [1250 m] | PSUAY-LZE-ELE-9340 | CONCLUSÃO | LUZVILLE | YARD 4 | CNT |
| PSUAY-LZE-ELE-9350 |  | Execute preparation, teste and connectorization for lighting cables in Reefer RR3 in Yard 4 | 5d | 2026-03-10 | 2026-03-16 | PSUAY-LZE-ELE-9340 |  |  |  | 23d | 0d | PSUAY - ELETROMEC - 1T - SEM HE | PROFIS [9908.91 h] | PSUAY-LZE-ELE-9350 | CONCLUSÃO | LUZVILLE | YARD 4 | CNT |

Notes:
- PSUAY-LZE-ELE-9200: Translate: Executar montagem dos painéis Reefer RR2 DB (Floor) no pátio 4
- PSUAY-LZE-ELE-9210: Translate: Executar montagem do Quadro Principal do Reefer RR2-440V no Pátio 4
- PSUAY-LZE-ELE-9220: Translate: Executar montagem do painel SCADA Reefer RR2 no pátio 4
- PSUAY-LZE-ELE-9230: Translate: Executar cabos de energia puxando o Reefer RR2 no pátio 4
- PSUAY-LZE-ELE-9240: Translate: Execute a preparação do cabo de energia no reefer RR2 no pátio 4
- PSUAY-LZE-ELE-9250: Translate: Execute Testes de Cabo de Energia no Reefer RR2 no Pátio 4
- PSUAY-LZE-ELE-9260: Translate: Execute a conectividade do cabo de energia no Reefer RR2 em YRD 4
- PSUAY-LZE-ELE-9270: Translate: Execute puxagem de cabo de fibra óptica para o reefer RR2 no pátio 4
- PSUAY-LZE-ELE-9280: Translate: Execute emenda por fusão de fibra no Reefer RR2 no Pátio 4
- PSUAY-LZE-ELE-9290: Translate: Execute a conectivação de fibra no Reefer RR2 no pátio 4
- PSUAY-LZE-ELE-9300: Translate: Executar grounding para Reefer RR2 no Yard 4
- PSUAY-LZE-ELE-9310: Translate: Executar pré-comissionamento no RR2 no Pátio 4
- PSUAY-LZE-ELE-9320: Translate: Executar infraestrutura para cabos no Reefer RR3 no pátio 4
- PSUAY-LZE-ELE-9330: Translate: Execute instalação de relâmpago no Reefer RR3 no pátio 4
- PSUAY-LZE-ELE-9340: Translate: Executar cabo de iluminação LV puxando o Reefer RR3 no Pátio 4
- PSUAY-LZE-ELE-9350: Translate: Executar preparação, teste e conectivação para cabos de iluminação no Reefer RR3 no Pátio 4

| ID | WBS | Activity | Duration | Start | Finish | Predecessors | Complete | Planned start | Planned finish | Total float | Free float | Calendar | Resources | ACTIVITY ID COD. | FASES DE ENTREGA | RESPONSÁVEL | ÁREAS | PHASES - YARD |
| --- | --- | --- | --- | --- | --- | --- | --- | --- | --- | --- | --- | --- | --- | --- | --- | --- | --- | --- |
|  | 3 | **PANELS** |  | 2026-03-05 | 2026-03-12 |  |  |  |  |  |  |  |  |  |  |  |  |  |
|  | 1 | **REEFER RACK DB - 380V** |  | 2026-03-05 | 2026-03-05 |  |  |  |  |  |  |  |  |  |  |  |  |  |
| PSUAY-LZE-ELE-9360 |  | Execute assembly of Reefer RR3 DB-380V panel in Yard 4 | 1d | 2026-03-05 | 2026-03-05 | PSUAY-LZE-ELE-9330 |  |  |  | 24d | 0d | PSUAY - ELETROMEC - 1T - SEM HE | PROFIS [1981.78 h] | PSUAY-LZE-ELE-9360 | CONCLUSÃO | LUZVILLE | YARD 4 | CNT |
|  | 2 | **REEFER RACK LEVEL DB - FLOOR** |  | 2026-03-06 | 2026-03-12 |  |  |  |  |  |  |  |  |  |  |  |  |  |
| PSUAY-LZE-ELE-9370 |  | Execute assembly of Reefer RR3 DB (Floor) panels in Yard 4 | 5d | 2026-03-06 | 2026-03-12 | PSUAY-LZE-ELE-9360 |  |  |  | 25d | 1d | PSUAY - ELETROMEC - 1T - SEM HE | PROFIS [9908.91 h] | PSUAY-LZE-ELE-9370 | CONCLUSÃO | LUZVILLE | YARD 4 | CNT |
|  | 3 | **REEFER RACK MAIN PANEL - 440V** |  | 2026-03-06 | 2026-03-06 |  |  |  |  |  |  |  |  |  |  |  |  |  |
| PSUAY-LZE-ELE-9380 |  | Execute assembly of Reefer RR3 Main Panel-440V in Yard 4 | 1d | 2026-03-06 | 2026-03-06 | PSUAY-LZE-ELE-9360 |  |  |  | 24d | 0d | PSUAY - ELETROMEC - 1T - SEM HE | PROFIS [1981.78 h] | PSUAY-LZE-ELE-9380 | CONCLUSÃO | LUZVILLE | YARD 4 | CNT |
|  | 4 | **PAINEL SCADA - AUTOMAÇÃO** |  | 2026-03-09 | 2026-03-09 |  |  |  |  |  |  |  |  |  |  |  |  |  |
| PSUAY-LZE-ELE-9390 |  | Execute assembly of Reefer RR3 SCADA panel in Yard 4 | 1d | 2026-03-09 | 2026-03-09 | PSUAY-LZE-ELE-9380 |  |  |  | 24d | 0d | PSUAY - ELETROMEC - 1T - SEM HE | PROFIS [1981.78 h] | PSUAY-LZE-ELE-9390 | CONCLUSÃO | LUZVILLE | YARD 4 | CNT |
|  | 4 | **CABLE PULLING (SE03 X REEFER)** |  | 2025-12-19 | 2026-02-16 |  |  |  |  |  |  |  |  |  |  |  |  |  |
|  | 1 | **POWER CABLES** |  | 2025-12-19 | 2026-02-16 |  |  |  |  |  |  |  |  |  |  |  |  |  |
| PSUAY-LZE-ELE-9400 |  | Execute Power cables pulling in Reefer RR3 in Yard 4 | 5d | 2025-12-19 A | 2025-12-23 A | PSUAY-LZE-ELE-9230 | 100% | 2026-01-26 | 2026-01-30 |  |  | PSUAY - ELETROMEC - 1T - SEM HE | PROFIS [8775.39 h]; CABLE LOW VOLTAGE [2338 m] | PSUAY-LZE-ELE-9400 | CONCLUSÃO | LUZVILLE | YARD 4 | CNT |
| PSUAY-LZE-ELE-9410 |  | Execute Power Cable Preparation in Reefer RR3 in Yard 4 | 3d | 2026-02-06 | 2026-02-10 | PSUAY-LZE-ELE-9400 |  |  |  | 43d | 0d | PSUAY - ELETROMEC - 1T - SEM HE | PROFIS [5945.35 h] | PSUAY-LZE-ELE-9410 | CONCLUSÃO | LUZVILLE | YARD 4 | CNT |
| PSUAY-LZE-ELE-9420 |  | Execute Power Cable Testing in Reefer RR3 in Yard 4 | 2d | 2026-02-11 | 2026-02-12 | PSUAY-LZE-ELE-9410 |  |  |  | 43d | 0d | PSUAY - ELETROMEC - 1T - SEM HE | PROFIS [3963.57 h] | PSUAY-LZE-ELE-9420 | CONCLUSÃO | LUZVILLE | YARD 4 | CNT |
| PSUAY-LZE-ELE-9430 |  | Execute Power Cable Connectorization in Reefer RR3 in YArd 4 | 2d | 2026-02-13 | 2026-02-16 | PSUAY-LZE-ELE-9420 |  |  |  | 43d | 20d | PSUAY - ELETROMEC - 1T - SEM HE | PROFIS [3963.57 h] | PSUAY-LZE-ELE-9430 | CONCLUSÃO | LUZVILLE | YARD 4 | CNT |
|  | 2 | **OPTIC FIBER** |  | 2026-02-06 | 2026-02-10 |  |  |  |  |  |  |  |  |  |  |  |  |  |
| PSUAY-LZE-ELE-9440 |  | Execute Fiber Optic Cable Pulling in Reefer RR3 in Yard 4 | 1d | 2026-02-06 | 2026-02-06 | PSUAY-LZE-ELE-9400 |  |  |  | 47d | 0d | PSUAY - ELETROMEC - 1T - SEM HE | PROFIS [975.88 h]; CABLE FIBER OPTICS [182 m] | PSUAY-LZE-ELE-9440 | CONCLUSÃO | LUZVILLE | YARD 4 | CNT |
| PSUAY-LZE-ELE-9450 |  | Execute Fiber Fusion Splicing in Reefer RR3 in Yard 4 | 1d | 2026-02-09 | 2026-02-09 | PSUAY-LZE-ELE-9440 |  |  |  | 47d | 0d | PSUAY - ELETROMEC - 1T - SEM HE | PROFIS [1981.78 h] | PSUAY-LZE-ELE-9450 | CONCLUSÃO | LUZVILLE | YARD 4 | CNT |
| PSUAY-LZE-ELE-9460 |  | Execute Fiber Connectorization in Reefer RR3 in Yard 4 | 1d | 2026-02-10 | 2026-02-10 | PSUAY-LZE-ELE-9450 |  |  |  | 47d | 24d | PSUAY - ELETROMEC - 1T - SEM HE | PROFIS [1981.78 h] | PSUAY-LZE-ELE-9460 | CONCLUSÃO | LUZVILLE | YARD 4 | CNT |
|  | 5 | **GROUNDING** |  | 2026-03-10 | 2026-03-13 |  |  |  |  |  |  |  |  |  |  |  |  |  |
| PSUAY-LZE-ELE-9470 |  | Execute grounding for Reefer RR3 in Yard 4 | 4d | 2026-03-10 | 2026-03-13 | PSUAY-LZE-ELE-9360, PSUAY-LZE-ELE-9370 FF, PSUAY-LZE-ELE-9380, PSUAY-LZE-ELE-9390 |  |  |  | 24d | 1d | PSUAY - ELETROMEC - 1T - SEM HE | PROFIS [7927.13 h] | PSUAY-LZE-ELE-9470 | CONCLUSÃO | LUZVILLE | YARD 4 | CNT |
|  | 6 | **PRE-COMMISSIONING** |  | 2026-03-17 | 2026-03-18 |  |  |  |  |  |  |  |  |  |  |  |  |  |
| PSUAY-LZE-ELE-9480 |  | Execute pre-commissioning in RR3 in Yard 4 | 2d | 2026-03-17 | 2026-03-18 | PSUAY-LZE-ELE-9470, PSUAY-LZE-ELE-9460, PSUAY-LZE-ELE-9430, PSUAY-LZE-ELE-9350, PSUAY-LZE-ELE-9320 |  |  |  | 23d |  | PSUAY - ELETROMEC - 1T - SEM HE | PROFIS [3963.57 h] | PSUAY-LZE-ELE-9480 | CONCLUSÃO | LUZVILLE | YARD 4 | CNT |
|  | 4 | **REEFER RR-4** |  | 2025-12-08 | 2026-03-18 |  |  |  |  |  |  |  |  |  |  |  |  |  |
|  | 1 | **INFRASTRUCTURE** |  | 2026-02-16 | 2026-02-27 |  |  |  |  |  |  |  |  |  |  |  |  |  |
| PSUAY-LZE-ELE-9490 |  | Execute infrastructure for cables in Reefer RR4 in Yard 4 | 10d | 2026-02-16 | 2026-02-27 | PSUAY-LZE-ELE-9160 |  |  |  | 15d | 0d | PSUAY - ELETROMEC - 1T - SEM HE | PROFIS [19817.8 h] | PSUAY-LZE-ELE-9490 | CONCLUSÃO | LUZVILLE | YARD 4 | CNT |

Notes:
- PSUAY-LZE-ELE-9360: Translate: Executar montagem do painel Reefer RR3 DB-380V no pátio 4
- PSUAY-LZE-ELE-9370: Translate: Executar montagem dos painéis Reefer RR3 DB (Piso) no pátio 4
- PSUAY-LZE-ELE-9380: Translate: Executar montagem do Painel Principal Reefer RR3-440V no Pátio 4
- PSUAY-LZE-ELE-9390: Translate: Executar montagem do painel SCADA Reefer RR3 no pátio 4
- PSUAY-LZE-ELE-9400: Translate: Executar cabos de energia puxando o Reefer RR3 no Pátio 4
- PSUAY-LZE-ELE-9410: Translate: Execute a preparação do cabo de energia no Reefer RR3 no pátio 4
- PSUAY-LZE-ELE-9420: Translate: Execute Teste de Cabo de Energia no Reefer RR3 no Pátio 4
- PSUAY-LZE-ELE-9430: Translate: Executar a conectividade do cabo de energia no Reefer RR3 em YRD 4
- PSUAY-LZE-ELE-9440: Translate: Execute puxagem de cabo de fibra óptica para o reefer RR3 no pátio 4
- PSUAY-LZE-ELE-9450: Translate: Execute emenda por fusão de fibra no Reefer RR3 no pátio 4
- PSUAY-LZE-ELE-9460: Translate: Execute a conectivação de fibra no Reefer RR3 no Pátio 4
- PSUAY-LZE-ELE-9470: Translate: Executar grounding para Reefer RR3 no Yard 4
- PSUAY-LZE-ELE-9480: Translate: Executar pré-comissionamento no RR3 no Pátio 4
- PSUAY-LZE-ELE-9490: Translate: Executar infraestrutura para cabos no Reefer RR4 no pátio 4

| ID | WBS | Activity | Duration | Start | Finish | Predecessors | Complete | Planned start | Planned finish | Total float | Free float | Calendar | Resources | ACTIVITY ID COD. | FASES DE ENTREGA | RESPONSÁVEL | ÁREAS | PHASES - YARD |
| --- | --- | --- | --- | --- | --- | --- | --- | --- | --- | --- | --- | --- | --- | --- | --- | --- | --- | --- |
|  | 2 | **LIGHTING** |  | 2026-02-25 | 2026-03-16 |  |  |  |  |  |  |  |  |  |  |  |  |  |
| PSUAY-LZE-ELE-9500 |  | Execute lightining instalation in Reefer RR4 in Yard 4 | 6d | 2026-02-25 | 2026-03-04 | PSUAY-LZE-ELE-9490 SS+7d, PSUAY-BRF-EST-7260 |  |  |  | 15d | 0d | PSUAY - ELETROMEC - 1T - SEM HE | PROFIS [11890.7 h] | PSUAY-LZE-ELE-9500 | CONCLUSÃO | LUZVILLE | YARD 4 | CNT |
| PSUAY-LZE-ELE-9510 |  | Execute LV lighting cable pulling in Reefer RR4 in Yard 4 | 3d | 2026-03-05 | 2026-03-09 | PSUAY-LZE-ELE-9500 |  |  |  | 23d | 0d | PSUAY - ELETROMEC - 1T - SEM HE | PROFIS [4691.72 h]; CABLE LOW VOLTAGE [1250 m] | PSUAY-LZE-ELE-9510 | CONCLUSÃO | LUZVILLE | YARD 4 | CNT |
| PSUAY-LZE-ELE-9520 |  | Execute preparation, teste and connectorization for lighting cables in Reefer RR4 in Yard 4 | 5d | 2026-03-10 | 2026-03-16 | PSUAY-LZE-ELE-9510 |  |  |  | 23d | 0d | PSUAY - ELETROMEC - 1T - SEM HE | PROFIS [9908.91 h] | PSUAY-LZE-ELE-9520 | CONCLUSÃO | LUZVILLE | YARD 4 | CNT |
|  | 3 | **PANELS** |  | 2026-01-12 | 2026-03-11 |  |  |  |  |  |  |  |  |  |  |  |  |  |
|  | 1 | **REEFER RACK DB - 380V** |  | 2026-01-12 | 2026-01-17 |  |  |  |  |  |  |  |  |  |  |  |  |  |
| PSUAY-LZE-ELE-9530 |  | Execute assembly of Reefer RR4 DB-380V panel in Yard 4 | 1d | 2026-01-12 A | 2026-01-17 A | PSUAY-LZE-ELE-9500 | 100% | 2026-02-26 | 2026-02-26 |  |  | PSUAY - ELETROMEC - 1T - SEM HE | PROFIS [1981.78 h] | PSUAY-LZE-ELE-9530 | CONCLUSÃO | LUZVILLE | YARD 4 | CNT |
|  | 2 | **REEFER RACK LEVEL DB - FLOOR** |  | 2026-03-05 | 2026-03-11 |  |  |  |  |  |  |  |  |  |  |  |  |  |
| PSUAY-LZE-ELE-9540 |  | Execute assembly of Reefer RR4 DB (Floor) panels in Yard 4 | 5d | 2026-03-05 | 2026-03-11 | PSUAY-LZE-ELE-9530 |  |  |  | 26d | 1d | PSUAY - ELETROMEC - 1T - SEM HE | PROFIS [9908.91 h] | PSUAY-LZE-ELE-9540 | CONCLUSÃO | LUZVILLE | YARD 4 | CNT |
|  | 3 | **REEFER RACK MAIN PANEL - 440V** |  | 2026-03-05 | 2026-03-05 |  |  |  |  |  |  |  |  |  |  |  |  |  |
| PSUAY-LZE-ELE-9550 |  | Execute assembly of Reefer RR4 Main Panel-440V in Yard 4 | 1d | 2026-03-05 | 2026-03-05 | PSUAY-LZE-ELE-9530 |  |  |  | 25d | 0d | PSUAY - ELETROMEC - 1T - SEM HE | PROFIS [1981.78 h] | PSUAY-LZE-ELE-9550 | CONCLUSÃO | LUZVILLE | YARD 4 | CNT |
|  | 4 | **PAINEL SCADA - AUTOMAÇÃO** |  | 2026-03-06 | 2026-03-06 |  |  |  |  |  |  |  |  |  |  |  |  |  |
| PSUAY-LZE-ELE-9560 |  | Execute assembly of Reefer RR4 SCADA panel in Yard 4 | 1d | 2026-03-06 | 2026-03-06 | PSUAY-LZE-ELE-9550 |  |  |  | 25d | 0d | PSUAY - ELETROMEC - 1T - SEM HE | PROFIS [1981.78 h] | PSUAY-LZE-ELE-9560 | CONCLUSÃO | LUZVILLE | YARD 4 | CNT |
|  | 4 | **CABLE PULLING (SE03 X REEFER)** |  | 2025-12-08 | 2026-02-16 |  |  |  |  |  |  |  |  |  |  |  |  |  |
|  | 1 | **POWER CABLES** |  | 2025-12-08 | 2026-02-16 |  |  |  |  |  |  |  |  |  |  |  |  |  |
| PSUAY-LZE-ELE-9570 |  | Execute Power cables pulling in Reefer RR4 in Yard 4 | 5d | 2025-12-08 A | 2025-12-19 A | PSUAY-LZE-ELE-9400 FS+1d | 100% | 2026-02-03 | 2026-02-09 |  |  | PSUAY - ELETROMEC - 1T - SEM HE | PROFIS [9616.15 h]; CABLE LOW VOLTAGE [2562 m] | PSUAY-LZE-ELE-9570 | CONCLUSÃO | LUZVILLE | YARD 4 | CNT |
| PSUAY-LZE-ELE-9580 |  | Execute Power Cable Preparation in Reefer RR4 in Yard 4 | 3d | 2026-02-06 | 2026-02-10 | PSUAY-LZE-ELE-9570 |  |  |  | 43d | 0d | PSUAY - ELETROMEC - 1T - SEM HE | PROFIS [5945.35 h] | PSUAY-LZE-ELE-9580 | CONCLUSÃO | LUZVILLE | YARD 4 | CNT |
| PSUAY-LZE-ELE-9590 |  | Execute Power Cable Testing in Reefer RR4 in Yard 4 | 2d | 2026-02-11 | 2026-02-12 | PSUAY-LZE-ELE-9580 |  |  |  | 43d | 0d | PSUAY - ELETROMEC - 1T - SEM HE | PROFIS [3963.57 h] | PSUAY-LZE-ELE-9590 | CONCLUSÃO | LUZVILLE | YARD 4 | CNT |
| PSUAY-LZE-ELE-9600 |  | Execute Power Cable Connectorization in Reefer RR4 in YArd 4 | 2d | 2026-02-13 | 2026-02-16 | PSUAY-LZE-ELE-9590 |  |  |  | 43d | 20d | PSUAY - ELETROMEC - 1T - SEM HE | PROFIS [3963.57 h] | PSUAY-LZE-ELE-9600 | CONCLUSÃO | LUZVILLE | YARD 4 | CNT |
|  | 2 | **OPTIC FIBER** |  | 2026-02-06 | 2026-02-10 |  |  |  |  |  |  |  |  |  |  |  |  |  |
| PSUAY-LZE-ELE-9610 |  | Execute Fiber Optic Cable Pulling in Reefer RR4 in Yard 4 | 1d | 2026-02-06 | 2026-02-06 | PSUAY-LZE-ELE-9570 |  |  |  | 47d | 0d | PSUAY - ELETROMEC - 1T - SEM HE | PROFIS [1077.76 h]; CABLE FIBER OPTICS [201 m] | PSUAY-LZE-ELE-9610 | CONCLUSÃO | LUZVILLE | YARD 4 | CNT |
| PSUAY-LZE-ELE-9620 |  | Execute Fiber Fusion Splicing in Reefer RR4 in Yard 4 | 1d | 2026-02-09 | 2026-02-09 | PSUAY-LZE-ELE-9610 |  |  |  | 47d | 0d | PSUAY - ELETROMEC - 1T - SEM HE | PROFIS [1981.78 h] | PSUAY-LZE-ELE-9620 | CONCLUSÃO | LUZVILLE | YARD 4 | CNT |
| PSUAY-LZE-ELE-9630 |  | Execute Fiber Connectorization in Reefer RR4 in Yard 4 | 1d | 2026-02-10 | 2026-02-10 | PSUAY-LZE-ELE-9620 |  |  |  | 47d | 24d | PSUAY - ELETROMEC - 1T - SEM HE | PROFIS [1981.78 h] | PSUAY-LZE-ELE-9630 | CONCLUSÃO | LUZVILLE | YARD 4 | CNT |
|  | 5 | **GROUNDING** |  | 2026-03-09 | 2026-03-12 |  |  |  |  |  |  |  |  |  |  |  |  |  |
| PSUAY-LZE-ELE-9640 |  | Execute grounding for Reefer RR4 in Yard 4 | 4d | 2026-03-09 | 2026-03-12 | PSUAY-LZE-ELE-9530, PSUAY-LZE-ELE-9540 FF, PSUAY-LZE-ELE-9550, PSUAY-LZE-ELE-9560 |  |  |  | 25d | 2d | PSUAY - ELETROMEC - 1T - SEM HE | PROFIS [7927.13 h] | PSUAY-LZE-ELE-9640 | CONCLUSÃO | LUZVILLE | YARD 4 | CNT |

Notes:
- PSUAY-LZE-ELE-9500: Translate: Execute instalação de relâmpagos no Reefer RR4 no Pátio 4
- PSUAY-LZE-ELE-9510: Translate: Executar puxar cabo de iluminação LV para dentro do Reefer RR4 no Pátio 4
- PSUAY-LZE-ELE-9520: Translate: Executar preparação, teste e conectivação para cabos de iluminação no Reefer RR4 no pátio 4
- PSUAY-LZE-ELE-9530: Translate: Executar montagem do painel Reefer RR4 DB-380V no pátio 4
- PSUAY-LZE-ELE-9540: Translate: Executar montagem dos painéis Reefer RR4 DB (Piso) no pátio 4
- PSUAY-LZE-ELE-9550: Translate: Executar montagem do Quadro Principal Reefer RR4-440V no pátio 4
- PSUAY-LZE-ELE-9560: Translate: Executar montagem do painel SCADA Reefer RR4 no pátio 4
- PSUAY-LZE-ELE-9570: Translate: Executar cabos de energia puxando o Reefer RR4 no Pátio 4
- PSUAY-LZE-ELE-9580: Translate: Executar a preparação do cabo de energia no reefer RR4 no pátio 4
- PSUAY-LZE-ELE-9590: Translate: Execute Testes de Cabo de Energia no Reefer RR4 no Pátio 4
- PSUAY-LZE-ELE-9600: Translate: Executar a conectividade do cabo de energia no Reefer RR4 em YRD 4
- PSUAY-LZE-ELE-9610: Translate: Execute puxagem de cabo de fibra óptica para o reefer RR4 no pátio 4
- PSUAY-LZE-ELE-9620: Translate: Execute emenda por fusão de fibra no Reefer RR4 no Pátio 4
- PSUAY-LZE-ELE-9630: Translate: Execute a conectivação de fibra no Reefer RR4 no pátio 4
- PSUAY-LZE-ELE-9640: Translate: Executar grounding para Reefer RR4 no Yard 4

| ID | WBS | Activity | Duration | Start | Finish | Predecessors | Complete | Planned start | Planned finish | Total float | Free float | Calendar | Resources | ACTIVITY ID COD. | FASES DE ENTREGA | RESPONSÁVEL | ÁREAS | PHASES - YARD |
| --- | --- | --- | --- | --- | --- | --- | --- | --- | --- | --- | --- | --- | --- | --- | --- | --- | --- | --- |
|  | 6 | **PRE-COMMISSIONING** |  | 2026-03-17 | 2026-03-18 |  |  |  |  |  |  |  |  |  |  |  |  |  |
| PSUAY-LZE-ELE-9650 |  | Execute pre-commissioning in RR4 in Yard 4 | 2d | 2026-03-17 | 2026-03-18 | PSUAY-LZE-ELE-9640, PSUAY-LZE-ELE-9630, PSUAY-LZE-ELE-9600, PSUAY-LZE-ELE-9520, PSUAY-LZE-ELE-9490 |  |  |  | 23d |  | PSUAY - ELETROMEC - 1T - SEM HE | PROFIS [3963.57 h] | PSUAY-LZE-ELE-9650 | CONCLUSÃO | LUZVILLE | YARD 4 | CNT |
|  | 5 | **REEFER RR-5** |  | 2025-12-17 | 2026-03-30 |  |  |  |  |  |  |  |  |  |  |  |  |  |
|  | 1 | **INFRASTRUCTURE** |  | 2026-03-05 | 2026-03-18 |  |  |  |  |  |  |  |  |  |  |  |  |  |
| PSUAY-LZE-ELE-9660 |  | Execute infrastructure for cables in Reefer RR5 in Yard 4 | 10d | 2026-03-05 | 2026-03-18 | PSUAY-BRF-EST-7270, PSUAY-LZE-ELE-9330 |  |  |  | 15d | 0d | PSUAY - ELETROMEC - 1T - SEM HE | PROFIS [19817.8 h] | PSUAY-LZE-ELE-9660 | CONCLUSÃO | LUZVILLE | YARD 4 | CNT |
|  | 2 | **LIGHTING** |  | 2026-03-09 | 2026-03-26 |  |  |  |  |  |  |  |  |  |  |  |  |  |
| PSUAY-LZE-ELE-9670 |  | Execute lightining instalation in Reefer RR5 in Yard 4 | 6d | 2026-03-09 | 2026-03-16 | PSUAY-LZE-ELE-9660 SS+2d |  |  |  | 15d | 0d | PSUAY - ELETROMEC - 1T - SEM HE | PROFIS [11890.7 h] | PSUAY-LZE-ELE-9670 | CONCLUSÃO | LUZVILLE | YARD 4 | CNT |
| PSUAY-LZE-ELE-9680 |  | Execute LV lighting cable pulling in Reefer RR5 in Yard 4 | 3d | 2026-03-17 | 2026-03-19 | PSUAY-LZE-ELE-9670 |  |  |  | 15d | 0d | PSUAY - ELETROMEC - 1T - SEM HE | PROFIS [4691.72 h]; CABLE LOW VOLTAGE [1250 m] | PSUAY-LZE-ELE-9680 | CONCLUSÃO | LUZVILLE | YARD 4 | CNT |
| PSUAY-LZE-ELE-9690 |  | Execute preparation, teste and connectorization for lighting cables in Reefer RR5 in Yard 4 | 5d | 2026-03-20 | 2026-03-26 | PSUAY-LZE-ELE-9680 |  |  |  | 15d | 0d | PSUAY - ELETROMEC - 1T - SEM HE | PROFIS [9908.91 h] | PSUAY-LZE-ELE-9690 | CONCLUSÃO | LUZVILLE | YARD 4 | CNT |
|  | 3 | **PANELS** |  | 2026-01-12 | 2026-03-23 |  |  |  |  |  |  |  |  |  |  |  |  |  |
|  | 1 | **REEFER RACK DB - 380V** |  | 2026-01-12 | 2026-01-17 |  |  |  |  |  |  |  |  |  |  |  |  |  |
| PSUAY-LZE-ELE-9700 |  | Execute assembly of Reefer RR5 DB-380V panel in Yard 4 | 1d | 2026-01-12 A | 2026-01-17 A | PSUAY-LZE-ELE-9670 | 100% | 2026-03-17 | 2026-03-17 |  |  | PSUAY - ELETROMEC - 1T - SEM HE | PROFIS [1981.78 h] | PSUAY-LZE-ELE-9700 | CONCLUSÃO | LUZVILLE | YARD 4 | CNT |
|  | 2 | **REEFER RACK LEVEL DB - FLOOR** |  | 2026-03-17 | 2026-03-23 |  |  |  |  |  |  |  |  |  |  |  |  |  |
| PSUAY-LZE-ELE-9710 |  | Execute assembly of Reefer RR5 DB (Floor) panels in Yard 4 | 5d | 2026-03-17 | 2026-03-23 | PSUAY-LZE-ELE-9700 |  |  |  | 18d | 1d | PSUAY - ELETROMEC - 1T - SEM HE | PROFIS [9908.91 h] | PSUAY-LZE-ELE-9710 | CONCLUSÃO | LUZVILLE | YARD 4 | CNT |
|  | 3 | **REEFER RACK MAIN PANEL - 440V** |  | 2026-03-17 | 2026-03-17 |  |  |  |  |  |  |  |  |  |  |  |  |  |
| PSUAY-LZE-ELE-9720 |  | Execute assembly of Reefer RR5 Main Panel-440V in Yard 4 | 1d | 2026-03-17 | 2026-03-17 | PSUAY-LZE-ELE-9700 |  |  |  | 17d | 0d | PSUAY - ELETROMEC - 1T - SEM HE | PROFIS [1981.78 h] | PSUAY-LZE-ELE-9720 | CONCLUSÃO | LUZVILLE | YARD 4 | CNT |
|  | 4 | **PAINEL SCADA - AUTOMAÇÃO** |  | 2026-03-18 | 2026-03-18 |  |  |  |  |  |  |  |  |  |  |  |  |  |
| PSUAY-LZE-ELE-9730 |  | Execute assembly of Reefer RR5 SCADA panel in Yard 4 | 1d | 2026-03-18 | 2026-03-18 | PSUAY-LZE-ELE-9720 |  |  |  | 17d | 0d | PSUAY - ELETROMEC - 1T - SEM HE | PROFIS [1981.78 h] | PSUAY-LZE-ELE-9730 | CONCLUSÃO | LUZVILLE | YARD 4 | CNT |
|  | 4 | **CABLE PULLING (SE03 X REEFER)** |  | 2025-12-17 | 2026-02-16 |  |  |  |  |  |  |  |  |  |  |  |  |  |
|  | 1 | **POWER CABLES** |  | 2025-12-17 | 2026-02-16 |  |  |  |  |  |  |  |  |  |  |  |  |  |
| PSUAY-LZE-ELE-9740 |  | Execute Power cables pulling in Reefer RR5 in Yard 4 | 6d | 2025-12-17 A | 2025-12-19 A | PSUAY-LZE-ELE-9570 | 100% | 2026-02-10 | 2026-02-17 |  |  | PSUAY - ELETROMEC - 1T - SEM HE | PROFIS [10562 h]; CABLE LOW VOLTAGE [2814 m] | PSUAY-LZE-ELE-9740 | CONCLUSÃO | LUZVILLE | YARD 4 | CNT |
| PSUAY-LZE-ELE-9750 |  | Execute Power Cable Preparation in Reefer RR5 in Yard 4 | 3d | 2026-02-06 | 2026-02-10 | PSUAY-LZE-ELE-9740 |  |  |  | 43d | 0d | PSUAY - ELETROMEC - 1T - SEM HE | PROFIS [5945.35 h] | PSUAY-LZE-ELE-9750 | CONCLUSÃO | LUZVILLE | YARD 4 | CNT |
| PSUAY-LZE-ELE-9760 |  | Execute Power Cable Testing in Reefer RR5 in Yard 4 | 2d | 2026-02-11 | 2026-02-12 | PSUAY-LZE-ELE-9750 |  |  |  | 43d | 0d | PSUAY - ELETROMEC - 1T - SEM HE | PROFIS [3963.57 h] | PSUAY-LZE-ELE-9760 | CONCLUSÃO | LUZVILLE | YARD 4 | CNT |
| PSUAY-LZE-ELE-9770 |  | Execute Power Cable Connectorization in Reefer RR5 in YArd 4 | 2d | 2026-02-13 | 2026-02-16 | PSUAY-LZE-ELE-9760 |  |  |  | 43d | 28d | PSUAY - ELETROMEC - 1T - SEM HE | PROFIS [3963.57 h] | PSUAY-LZE-ELE-9770 | CONCLUSÃO | LUZVILLE | YARD 4 | CNT |

Notes:
- PSUAY-LZE-ELE-9650: Translate: Executar pré-comissionamento no RR4 no Pátio 4
- PSUAY-LZE-ELE-9660: Translate: Executar infraestrutura para cabos no Reefer RR5 no pátio 4
- PSUAY-LZE-ELE-9670: Translate: Execute instalação de iluminação no Reefer RR5 no pátio 4
- PSUAY-LZE-ELE-9680: Translate: Execute puxar cabo de iluminação LV para dentro do Reefer RR5 no Pátio 4
- PSUAY-LZE-ELE-9690: Translate: Executar preparação, teste e conectivação para cabos de iluminação no Reefer RR5 no pátio 4
- PSUAY-LZE-ELE-9700: Translate: Executar montagem do painel Reefer RR5 DB-380V no pátio 4
- PSUAY-LZE-ELE-9710: Translate: Executar montagem dos painéis DB (Piso) do Reefer RR5 no pátio 4
- PSUAY-LZE-ELE-9720: Translate: Executar montagem do Quadro Principal Reefer RR5-440V no Pátio 4
- PSUAY-LZE-ELE-9730: Translate: Executar montagem do painel SCADA Reefer RR5 no pátio 4
- PSUAY-LZE-ELE-9740: Translate: Executar cabos de energia puxando o Reefer RR5 no pátio 4
- PSUAY-LZE-ELE-9750: Translate: Execute a preparação do cabo de energia no reefer RR5 no pátio 4
- PSUAY-LZE-ELE-9760: Translate: Execute Testes de Cabo de Energia no Reefer RR5 no Pátio 4
- PSUAY-LZE-ELE-9770: Translate: Executar a conectividade do cabo de energia no Reefer RR5 em YRD4

| ID | WBS | Activity | Duration | Start | Finish | Predecessors | Complete | Planned start | Planned finish | Total float | Free float | Calendar | Resources | ACTIVITY ID COD. | FASES DE ENTREGA | RESPONSÁVEL | ÁREAS | PHASES - YARD |
| --- | --- | --- | --- | --- | --- | --- | --- | --- | --- | --- | --- | --- | --- | --- | --- | --- | --- | --- |
|  | 2 | **OPTIC FIBER** |  | 2026-02-06 | 2026-02-10 |  |  |  |  |  |  |  |  |  |  |  |  |  |
| PSUAY-LZE-ELE-9780 |  | Execute Fiber Optic Cable Pulling in Reefer RR5 in Yard 4 | 1d | 2026-02-06 | 2026-02-06 | PSUAY-LZE-ELE-9740 |  |  |  | 47d | 0d | PSUAY - ELETROMEC - 1T - SEM HE | PROFIS [1163.55 h]; CABLE FIBER OPTICS [217 m] | PSUAY-LZE-ELE-9780 | CONCLUSÃO | LUZVILLE | YARD 4 | CNT |
| PSUAY-LZE-ELE-9790 |  | Execute Fiber Fusion Splicing in Reefer RR5 in Yard 4 | 1d | 2026-02-09 | 2026-02-09 | PSUAY-LZE-ELE-9780 |  |  |  | 47d | 0d | PSUAY - ELETROMEC - 1T - SEM HE | PROFIS [1981.78 h] | PSUAY-LZE-ELE-9790 | CONCLUSÃO | LUZVILLE | YARD 4 | CNT |
| PSUAY-LZE-ELE-9800 |  | Execute Fiber Connectorization in Reefer RR5 in Yard 4 | 1d | 2026-02-10 | 2026-02-10 | PSUAY-LZE-ELE-9790 |  |  |  | 47d | 32d | PSUAY - ELETROMEC - 1T - SEM HE | PROFIS [1981.78 h] | PSUAY-LZE-ELE-9800 | CONCLUSÃO | LUZVILLE | YARD 4 | CNT |
|  | 5 | **GROUNDING** |  | 2026-03-19 | 2026-03-24 |  |  |  |  |  |  |  |  |  |  |  |  |  |
| PSUAY-LZE-ELE-9810 |  | Execute grounding for Reefer RR1 in Yard 4 | 4d | 2026-03-19 | 2026-03-24 | PSUAY-LZE-ELE-9700, PSUAY-LZE-ELE-9710 FF, PSUAY-LZE-ELE-9720, PSUAY-LZE-ELE-9730 |  |  |  | 17d | 2d | PSUAY - ELETROMEC - 1T - SEM HE | PROFIS [9908.91 h] | PSUAY-LZE-ELE-9810 | CONCLUSÃO | LUZVILLE | YARD 4 | CNT |
|  | 6 | **PRE-COMMISSIONING** |  | 2026-03-27 | 2026-03-30 |  |  |  |  |  |  |  |  |  |  |  |  |  |
| PSUAY-LZE-ELE-9820 |  | Execute pre-commissioning in RR5 in Yard 4 | 2d | 2026-03-27 | 2026-03-30 | PSUAY-LZE-ELE-9810, PSUAY-LZE-ELE-9800, PSUAY-LZE-ELE-9770, PSUAY-LZE-ELE-9690, PSUAY-LZE-ELE-9660 |  |  |  | 15d |  | PSUAY - ELETROMEC - 1T - SEM HE | PROFIS [1981.78 h] | PSUAY-LZE-ELE-9820 | CONCLUSÃO | LUZVILLE | YARD 4 | CNT |
|  | 6 | **REEFER RR-6** |  | 2025-12-15 | 2026-03-30 |  |  |  |  |  |  |  |  |  |  |  |  |  |
|  | 1 | **INFRASTRUCTURE** |  | 2026-03-05 | 2026-03-18 |  |  |  |  |  |  |  |  |  |  |  |  |  |
| PSUAY-LZE-ELE-9830 |  | Execute infrastructure for cables in Reefer RR6 in Yard 4 | 10d | 2026-03-05 | 2026-03-18 | PSUAY-BRF-EST-7280, PSUAY-LZE-ELE-9500 |  |  |  | 15d | 0d | PSUAY - ELETROMEC - 1T - SEM HE | PROFIS [19817.8 h] | PSUAY-LZE-ELE-9830 | CONCLUSÃO | LUZVILLE | YARD 4 | CNT |
|  | 2 | **LIGHTING** |  | 2026-03-09 | 2026-03-26 |  |  |  |  |  |  |  |  |  |  |  |  |  |
| PSUAY-LZE-ELE-9840 |  | Execute lightining instalation in Reefer RR6 in Yard 4 | 6d | 2026-03-09 | 2026-03-16 | PSUAY-LZE-ELE-9830 SS+2d |  |  |  | 15d | 0d | PSUAY - ELETROMEC - 1T - SEM HE | PROFIS [11890.7 h] | PSUAY-LZE-ELE-9840 | CONCLUSÃO | LUZVILLE | YARD 4 | CNT |
| PSUAY-LZE-ELE-9850 |  | Execute LV lighting cable pulling in Reefer RR6 in Yard 4 | 3d | 2026-03-17 | 2026-03-19 | PSUAY-LZE-ELE-9840 |  |  |  | 15d | 0d | PSUAY - ELETROMEC - 1T - SEM HE | PROFIS [4691.72 h]; CABLE LOW VOLTAGE [1250 m] | PSUAY-LZE-ELE-9850 | CONCLUSÃO | LUZVILLE | YARD 4 | CNT |
| PSUAY-LZE-ELE-9860 |  | Execute preparation, teste and connectorization for lighting cables in Reefer RR6 in Yard 4 | 5d | 2026-03-20 | 2026-03-26 | PSUAY-LZE-ELE-9850 |  |  |  | 15d | 0d | PSUAY - ELETROMEC - 1T - SEM HE | PROFIS [9908.91 h] | PSUAY-LZE-ELE-9860 | CONCLUSÃO | LUZVILLE | YARD 4 | CNT |
|  | 3 | **PANELS** |  | 2026-01-12 | 2026-03-23 |  |  |  |  |  |  |  |  |  |  |  |  |  |
|  | 1 | **REEFER RACK DB - 380V** |  | 2026-01-12 | 2026-01-17 |  |  |  |  |  |  |  |  |  |  |  |  |  |
| PSUAY-LZE-ELE-9870 |  | Execute assembly of Reefer RR6 DB-380V panel in Yard 4 | 1d | 2026-01-12 A | 2026-01-17 A | PSUAY-LZE-ELE-9840 | 100% | 2026-03-17 | 2026-03-17 |  |  | PSUAY - ELETROMEC - 1T - SEM HE | PROFIS [1981.78 h] | PSUAY-LZE-ELE-9870 | CONCLUSÃO | LUZVILLE | YARD 4 | CNT |
|  | 2 | **REEFER RACK LEVEL DB - FLOOR** |  | 2026-03-17 | 2026-03-23 |  |  |  |  |  |  |  |  |  |  |  |  |  |
| PSUAY-LZE-ELE-9880 |  | Execute assembly of Reefer RR6 DB (Floor) panels in Yard 4 | 5d | 2026-03-17 | 2026-03-23 | PSUAY-LZE-ELE-9870 |  |  |  | 18d | 1d | PSUAY - ELETROMEC - 1T - SEM HE | PROFIS [9908.91 h] | PSUAY-LZE-ELE-9880 | CONCLUSÃO | LUZVILLE | YARD 4 | CNT |
|  | 3 | **REEFER RACK MAIN PANEL - 440V** |  | 2026-03-17 | 2026-03-17 |  |  |  |  |  |  |  |  |  |  |  |  |  |
| PSUAY-LZE-ELE-9890 |  | Execute assembly of Reefer RR6 Main Panel-440V in Yard 4 | 1d | 2026-03-17 | 2026-03-17 | PSUAY-LZE-ELE-9870 |  |  |  | 17d | 0d | PSUAY - ELETROMEC - 1T - SEM HE | PROFIS [1981.78 h] | PSUAY-LZE-ELE-9890 | CONCLUSÃO | LUZVILLE | YARD 4 | CNT |
|  | 4 | **PAINEL SCADA - AUTOMAÇÃO** |  | 2026-03-18 | 2026-03-18 |  |  |  |  |  |  |  |  |  |  |  |  |  |
| PSUAY-LZE-ELE-9900 |  | Execute assembly of Reefer RR6 SCADA panel in Yard 4 | 1d | 2026-03-18 | 2026-03-18 | PSUAY-LZE-ELE-9890 |  |  |  | 17d | 0d | PSUAY - ELETROMEC - 1T - SEM HE | PROFIS [1981.78 h] | PSUAY-LZE-ELE-9900 | CONCLUSÃO | LUZVILLE | YARD 4 | CNT |

Notes:
- PSUAY-LZE-ELE-9780: Translate: Execute puxagem de cabo de fibra óptica para dentro do reefer RR5 no pátio 4
- PSUAY-LZE-ELE-9790: Translate: Execute emenda por fusão de fibra no Reefer RR5 no pátio 4
- PSUAY-LZE-ELE-9800: Translate: Execute a conectivação de fibra no Reefer RR5 no pátio 4
- PSUAY-LZE-ELE-9810: Translate: Executar grounding para Reefer RR1 no Yard 4
- PSUAY-LZE-ELE-9820: Translate: Executar pré-comissionamento no RR5 no Pátio 4
- PSUAY-LZE-ELE-9830: Translate: Executar infraestrutura para cabos no Reefer RR6 no pátio 4
- PSUAY-LZE-ELE-9840: Translate: Execute instalação de relâmpago no Reefer RR6 no pátio 4
- PSUAY-LZE-ELE-9850: Translate: Executar puxar cabo de iluminação LV para dentro do Reefer RR6 no pátio 4
- PSUAY-LZE-ELE-9860: Translate: Execute preparação, teste e conectividade para cabos de iluminação no Reefer RR6 no pátio 4
- PSUAY-LZE-ELE-9870: Translate: Executar montagem do painel Reefer RR6 DB-380V no pátio 4
- PSUAY-LZE-ELE-9880: Translate: Executar montagem de painéis Reefer RR6 DB (Piso) no pátio 4
- PSUAY-LZE-ELE-9890: Translate: Executar montagem do Quadro Principal Reefer RR6-440V no Pátio 4
- PSUAY-LZE-ELE-9900: Translate: Executar montagem do painel SCADA do Reefer RR6 no pátio 4

| ID | WBS | Activity | Duration | Start | Finish | Predecessors | Complete | Planned start | Planned finish | Total float | Free float | Calendar | Resources | ACTIVITY ID COD. | FASES DE ENTREGA | RESPONSÁVEL | ÁREAS | PHASES - YARD |
| --- | --- | --- | --- | --- | --- | --- | --- | --- | --- | --- | --- | --- | --- | --- | --- | --- | --- | --- |
|  | 4 | **CABLE PULLING (SE03 X REEFER)** |  | 2025-12-15 | 2026-02-16 |  |  |  |  |  |  |  |  |  |  |  |  |  |
|  | 1 | **POWER CABLES** |  | 2025-12-15 | 2026-02-16 |  |  |  |  |  |  |  |  |  |  |  |  |  |
| PSUAY-LZE-ELE-9910 |  | Execute Power cables pulling in Reefer RR6 in Yard 4 | 6d | 2025-12-15 A | 2025-12-19 A | PSUAY-LZE-ELE-9740 | 100% | 2026-02-18 | 2026-02-25 |  |  | PSUAY - ELETROMEC - 1T - SEM HE | PROFIS [11350.2 h]; CABLE LOW VOLTAGE [3024 m] | PSUAY-LZE-ELE-9910 | CONCLUSÃO | LUZVILLE | YARD 4 | CNT |
| PSUAY-LZE-ELE-9920 |  | Execute Power Cable Preparation in Reefer RR6 in Yard 4 | 3d | 2026-02-06 | 2026-02-10 | PSUAY-LZE-ELE-9910 |  |  |  | 43d | 0d | PSUAY - ELETROMEC - 1T - SEM HE | PROFIS [5945.35 h] | PSUAY-LZE-ELE-9920 | CONCLUSÃO | LUZVILLE | YARD 4 | CNT |
| PSUAY-LZE-ELE-9930 |  | Execute Power Cable Testing in Reefer RR6 in Yard 4 | 2d | 2026-02-11 | 2026-02-12 | PSUAY-LZE-ELE-9920 |  |  |  | 43d | 0d | PSUAY - ELETROMEC - 1T - SEM HE | PROFIS [3963.57 h] | PSUAY-LZE-ELE-9930 | CONCLUSÃO | LUZVILLE | YARD 4 | CNT |
| PSUAY-LZE-ELE-9940 |  | Execute Power Cable Connectorization in Reefer RR6 in YArd 4 | 2d | 2026-02-13 | 2026-02-16 | PSUAY-LZE-ELE-9930 |  |  |  | 43d | 28d | PSUAY - ELETROMEC - 1T - SEM HE | PROFIS [3963.57 h] | PSUAY-LZE-ELE-9940 | CONCLUSÃO | LUZVILLE | YARD 4 | CNT |
|  | 2 | **OPTIC FIBER** |  | 2026-02-06 | 2026-02-10 |  |  |  |  |  |  |  |  |  |  |  |  |  |
| PSUAY-LZE-ELE-9950 |  | Execute Fiber Optic Cable Pulling in Reefer RR6 in Yard 4 | 1d | 2026-02-06 | 2026-02-06 | PSUAY-LZE-ELE-9910 |  |  |  | 47d | 0d | PSUAY - ELETROMEC - 1T - SEM HE | PROFIS [1249.34 h]; CABLE FIBER OPTICS [233 m] | PSUAY-LZE-ELE-9950 | CONCLUSÃO | LUZVILLE | YARD 4 | CNT |
| PSUAY-LZE-ELE-9960 |  | Execute Fiber Fusion Splicing in Reefer RR6 in Yard 4 | 1d | 2026-02-09 | 2026-02-09 | PSUAY-LZE-ELE-9950 |  |  |  | 47d | 0d | PSUAY - ELETROMEC - 1T - SEM HE | PROFIS [1981.78 h] | PSUAY-LZE-ELE-9960 | CONCLUSÃO | LUZVILLE | YARD 4 | CNT |
| PSUAY-LZE-ELE-9970 |  | Execute Fiber Connectorization in Reefer RR6 in Yard 4 | 1d | 2026-02-10 | 2026-02-10 | PSUAY-LZE-ELE-9960 |  |  |  | 47d | 32d | PSUAY - ELETROMEC - 1T - SEM HE | PROFIS [1981.78 h] | PSUAY-LZE-ELE-9970 | CONCLUSÃO | LUZVILLE | YARD 4 | CNT |
|  | 5 | **GROUNDING** |  | 2026-03-19 | 2026-03-24 |  |  |  |  |  |  |  |  |  |  |  |  |  |
| PSUAY-LZE-ELE-9980 |  | Execute grounding for Reefer RR6 in Yard 4 | 4d | 2026-03-19 | 2026-03-24 | PSUAY-LZE-ELE-9870, PSUAY-LZE-ELE-9880 FF, PSUAY-LZE-ELE-9890, PSUAY-LZE-ELE-9900 |  |  |  | 17d | 2d | PSUAY - ELETROMEC - 1T - SEM HE | PROFIS [7927.13 h] | PSUAY-LZE-ELE-9980 | CONCLUSÃO | LUZVILLE | YARD 4 | CNT |
|  | 6 | **PRE-COMMISSIONING** |  | 2026-03-27 | 2026-03-30 |  |  |  |  |  |  |  |  |  |  |  |  |  |
| PSUAY-LZE-ELE-9990 |  | Execute pre-commissioning in RR6 in Yard 4 | 2d | 2026-03-27 | 2026-03-30 | PSUAY-LZE-ELE-9980, PSUAY-LZE-ELE-9970, PSUAY-LZE-ELE-9940, PSUAY-LZE-ELE-9860, PSUAY-LZE-ELE-9830 |  |  |  | 15d |  | PSUAY - ELETROMEC - 1T - SEM HE | PROFIS [3963.57 h] | PSUAY-LZE-ELE-9990 | CONCLUSÃO | LUZVILLE | YARD 4 | CNT |
|  | 8 | **REEFER RR-7** |  | 2025-12-08 | 2026-03-30 |  |  |  |  |  |  |  |  |  |  |  |  |  |
|  | 1 | **INFRASTRUCTURE** |  | 2026-03-05 | 2026-03-18 |  |  |  |  |  |  |  |  |  |  |  |  |  |
| PSUAY-LZE-ELE-10000 |  | Execute infrastructure for cables in Reefer RR7 in Yard 4 | 10d | 2026-03-05 | 2026-03-18 | PSUAY-BRF-EST-7290, PSUAY-LZE-ELE-9830 SS |  |  |  | 15d | 0d | PSUAY - ELETROMEC - 1T - SEM HE | PROFIS [19817.8 h] | PSUAY-LZE-ELE-10000 | CONCLUSÃO | LUZVILLE | YARD 4 | CNT |
|  | 2 | **LIGHTING** |  | 2026-03-09 | 2026-03-26 |  |  |  |  |  |  |  |  |  |  |  |  |  |
| PSUAY-LZE-ELE-10010 |  | Execute lightining instalation in Reefer RR7 in Yard 4 | 6d | 2026-03-09 | 2026-03-16 | PSUAY-LZE-ELE-10000 SS+2d |  |  |  | 15d | 0d | PSUAY - ELETROMEC - 1T - SEM HE | PROFIS [11890.7 h] | PSUAY-LZE-ELE-10010 | CONCLUSÃO | LUZVILLE | YARD 4 | CNT |
| PSUAY-LZE-ELE-10020 |  | Execute LV lighting cable pulling in Reefer RR7 in Yard 4 | 3d | 2026-03-17 | 2026-03-19 | PSUAY-LZE-ELE-10010 |  |  |  | 15d | 0d | PSUAY - ELETROMEC - 1T - SEM HE | PROFIS [4691.72 h]; CABLE LOW VOLTAGE [1250 m] | PSUAY-LZE-ELE-10020 | CONCLUSÃO | LUZVILLE | YARD 4 | CNT |
| PSUAY-LZE-ELE-10030 |  | Execute preparation, teste and connectorization for lighting cables in Reefer RR7 in Yard 4 | 5d | 2026-03-20 | 2026-03-26 | PSUAY-LZE-ELE-10020 |  |  |  | 15d | 0d | PSUAY - ELETROMEC - 1T - SEM HE | PROFIS [9908.91 h] | PSUAY-LZE-ELE-10030 | CONCLUSÃO | LUZVILLE | YARD 4 | CNT |
|  | 3 | **PANELS** |  | 2026-03-17 | 2026-03-24 |  |  |  |  |  |  |  |  |  |  |  |  |  |
|  | 1 | **REEFER RACK DB - 380V** |  | 2026-03-17 | 2026-03-17 |  |  |  |  |  |  |  |  |  |  |  |  |  |
| PSUAY-LZE-ELE-10040 |  | Execute assembly of Reefer RR7 DB-380V panel in Yard 4 | 1d | 2026-03-17 | 2026-03-17 | PSUAY-LZE-ELE-10010 |  |  |  | 16d | 0d | PSUAY - ELETROMEC - 1T - SEM HE | PROFIS [1981.78 h] | PSUAY-LZE-ELE-10040 | CONCLUSÃO | LUZVILLE | YARD 4 | CNT |

Notes:
- PSUAY-LZE-ELE-9910: Translate: Executar cabos de energia puxando o Reefer RR6 no pátio 4
- PSUAY-LZE-ELE-9920: Translate: Execute a preparação do cabo de energia no Reefer RR6 no pátio 4
- PSUAY-LZE-ELE-9930: Translate: Execute Testes de Cabo de Energia no Reefer RR6 no Pátio 4
- PSUAY-LZE-ELE-9940: Translate: Executar a conectividade do cabo de energia no Reefer RR6 em YRD4
- PSUAY-LZE-ELE-9950: Translate: Execute puxagem de cabo de fibra óptica para o reefer RR6 no pátio 4
- PSUAY-LZE-ELE-9960: Translate: Execute emenda por fusão de fibra no Reefer RR6 no Pátio 4
- PSUAY-LZE-ELE-9970: Translate: Execute a Conectivação de Fibra no Reefer RR6 no Pátio 4
- PSUAY-LZE-ELE-9980: Translate: Executar aterramento para Reefer RR6 no Yard 4
- PSUAY-LZE-ELE-9990: Translate: Executar a pré-comissionamento no RR6 no pátio 4
- PSUAY-LZE-ELE-10000: Translate: Executar infraestrutura para cabos no Reefer RR7 no pátio 4
- PSUAY-LZE-ELE-10010: Translate: Execute instalação de relâmpago no Reefer RR7 no pátio 4
- PSUAY-LZE-ELE-10020: Translate: Executar puxar cabo de iluminação LV Reefer RR7 no Pátio 4
- PSUAY-LZE-ELE-10030: Translate: Executar preparação, teste e conectivação para cabos de iluminação no Reefer RR7 no pátio 4
- PSUAY-LZE-ELE-10040: Translate: Executar montagem do painel Reefer RR7 DB-380V no pátio 4

| ID | WBS | Activity | Duration | Start | Finish | Predecessors | Complete | Planned start | Planned finish | Total float | Free float | Calendar | Resources | ACTIVITY ID COD. | FASES DE ENTREGA | RESPONSÁVEL | ÁREAS | PHASES - YARD |
| --- | --- | --- | --- | --- | --- | --- | --- | --- | --- | --- | --- | --- | --- | --- | --- | --- | --- | --- |
|  | 2 | **REEFER RACK LEVEL DB - FLOOR** |  | 2026-03-18 | 2026-03-24 |  |  |  |  |  |  |  |  |  |  |  |  |  |
| PSUAY-LZE-ELE-10050 |  | Execute assembly of Reefer RR7 DB (Floor) panels in Yard 4 | 5d | 2026-03-18 | 2026-03-24 | PSUAY-LZE-ELE-10040 |  |  |  | 17d | 1d | PSUAY - ELETROMEC - 1T - SEM HE | PROFIS [9908.91 h] | PSUAY-LZE-ELE-10050 | CONCLUSÃO | LUZVILLE | YARD 4 | CNT |
|  | 3 | **REEFER RACK MAIN PANEL - 440V** |  | 2026-03-18 | 2026-03-18 |  |  |  |  |  |  |  |  |  |  |  |  |  |
| PSUAY-LZE-ELE-10060 |  | Execute assembly of Reefer RR7 Main Panel-440V in Yard 4 | 1d | 2026-03-18 | 2026-03-18 | PSUAY-LZE-ELE-10040 |  |  |  | 16d | 0d | PSUAY - ELETROMEC - 1T - SEM HE | PROFIS [1981.78 h] | PSUAY-LZE-ELE-10060 | CONCLUSÃO | LUZVILLE | YARD 4 | CNT |
|  | 4 | **PAINEL SCADA - AUTOMAÇÃO** |  | 2026-03-19 | 2026-03-19 |  |  |  |  |  |  |  |  |  |  |  |  |  |
| PSUAY-LZE-ELE-10070 |  | Execute assembly of Reefer RR7 SCADA panel in Yard 4 | 1d | 2026-03-19 | 2026-03-19 | PSUAY-LZE-ELE-10060 |  |  |  | 16d | 0d | PSUAY - ELETROMEC - 1T - SEM HE | PROFIS [1981.78 h] | PSUAY-LZE-ELE-10070 | CONCLUSÃO | LUZVILLE | YARD 4 | CNT |
|  | 4 | **CABLE PULLING (SE03 X REEFER)** |  | 2025-12-08 | 2026-03-20 |  |  |  |  |  |  |  |  |  |  |  |  |  |
|  | 1 | **POWER CABLES** |  | 2025-12-08 | 2026-03-18 |  |  |  |  |  |  |  |  |  |  |  |  |  |
| PSUAY-LZE-ELE-10080 |  | Execute Power cables pulling in Reefer RR7 in Yard 4 | 7d | 2025-12-08 A | 2025-12-19 A | PSUAY-LZE-ELE-10010 FS+1d, PSUAY-LZE-ELE-9910 | 100% | 2026-03-06 | 2026-03-16 |  |  | PSUAY - ELETROMEC - 1T - SEM HE | PROFIS [12191 h]; CABLE LOW VOLTAGE [3248 m] | PSUAY-LZE-ELE-10080 | CONCLUSÃO | LUZVILLE | YARD 4 | CNT |
| PSUAY-LZE-ELE-10090 |  | Execute Power Cable Preparation in Reefer RR7 in Yard 4 | 3d | 2026-03-13 | 2026-03-17 | PSUAY-LZE-ELE-10080 FF |  |  |  | 21d | 0d | PSUAY - ELETROMEC - 1T - SEM HE | PROFIS [5945.35 h] | PSUAY-LZE-ELE-10090 | CONCLUSÃO | LUZVILLE | YARD 4 | CNT |
| PSUAY-LZE-ELE-10100 |  | Execute Power Cable Testing in Reefer RR7 in Yard 4 | 2d | 2026-03-16 | 2026-03-17 | PSUAY-LZE-ELE-10090 FF |  |  |  | 21d | 0d | PSUAY - ELETROMEC - 1T - SEM HE | PROFIS [3963.57 h] | PSUAY-LZE-ELE-10100 | CONCLUSÃO | LUZVILLE | YARD 4 | CNT |
| PSUAY-LZE-ELE-10110 |  | Execute Power Cable Connectorization in Reefer RR7 in YArd 4 | 2d | 2026-03-17 | 2026-03-18 | PSUAY-LZE-ELE-10100 FF+1d |  |  |  | 21d | 6d | PSUAY - ELETROMEC - 1T - SEM HE | PROFIS [3963.57 h] | PSUAY-LZE-ELE-10110 | CONCLUSÃO | LUZVILLE | YARD 4 | CNT |
|  | 2 | **OPTIC FIBER** |  | 2026-03-18 | 2026-03-20 |  |  |  |  |  |  |  |  |  |  |  |  |  |
| PSUAY-LZE-ELE-10120 |  | Execute Fiber Optic Cable Pulling in Reefer RR7 in Yard 4 | 1d | 2026-03-18 | 2026-03-18 | PSUAY-LZE-ELE-10080 |  |  |  | 19d | 0d | PSUAY - ELETROMEC - 1T - SEM HE | PROFIS [1329.77 h]; CABLE FIBER OPTICS [248 m] | PSUAY-LZE-ELE-10120 | CONCLUSÃO | LUZVILLE | YARD 4 | CNT |
| PSUAY-LZE-ELE-10130 |  | Execute Fiber Fusion Splicing in Reefer RR7 in Yard 4 | 1d | 2026-03-19 | 2026-03-19 | PSUAY-LZE-ELE-10120 |  |  |  | 19d | 0d | PSUAY - ELETROMEC - 1T - SEM HE | PROFIS [1981.78 h] | PSUAY-LZE-ELE-10130 | CONCLUSÃO | LUZVILLE | YARD 4 | CNT |
| PSUAY-LZE-ELE-10140 |  | Execute Fiber Connectorization in Reefer RR7 in Yard 4 | 1d | 2026-03-20 | 2026-03-20 | PSUAY-LZE-ELE-10130 |  |  |  | 19d | 4d | PSUAY - ELETROMEC - 1T - SEM HE | PROFIS [1981.78 h] | PSUAY-LZE-ELE-10140 | CONCLUSÃO | LUZVILLE | YARD 4 | CNT |
|  | 5 | **GROUNDING** |  | 2026-03-20 | 2026-03-25 |  |  |  |  |  |  |  |  |  |  |  |  |  |
| PSUAY-LZE-ELE-10150 |  | Execute grounding for Reefer RR7 in Yard 4 | 4d | 2026-03-20 | 2026-03-25 | PSUAY-LZE-ELE-10000, PSUAY-LZE-ELE-10040, PSUAY-LZE-ELE-10050 FF, PSUAY-LZE-ELE-10060, PSUAY-LZE-ELE-10070 |  |  |  | 16d | 1d | PSUAY - ELETROMEC - 1T - SEM HE | PROFIS [7927.13 h] | PSUAY-LZE-ELE-10150 | CONCLUSÃO | LUZVILLE | YARD 4 | CNT |
|  | 6 | **PRE-COMMISSIONING** |  | 2026-03-27 | 2026-03-30 |  |  |  |  |  |  |  |  |  |  |  |  |  |
| PSUAY-LZE-ELE-10160 |  | Execute pre-commissioning in RR7 in Yard 4 | 2d | 2026-03-27 | 2026-03-30 | PSUAY-LZE-ELE-10150, PSUAY-LZE-ELE-10140, PSUAY-LZE-ELE-10110, PSUAY-LZE-ELE-10030 |  |  |  | 15d |  | PSUAY - ELETROMEC - 1T - SEM HE | PROFIS [3963.57 h] | PSUAY-LZE-ELE-10160 | CONCLUSÃO | LUZVILLE | YARD 4 | CNT |
|  | 4 | **OPTIC FIBER** |  | 2026-03-16 | 2026-03-31 |  |  |  |  |  |  |  |  |  |  |  |  |  |
|  | 1 | **LOOP 7** |  | 2026-03-16 | 2026-03-25 |  |  |  |  |  |  |  |  |  |  |  |  |  |
| PSUAY-LZE-ELE-10170 |  | Execute Fiber Optic Cable Pulling, Fusion, and Connectorization (Loop 7) in Yard 4 | 7d | 2026-03-16 | 2026-03-25 | PSUAY-LZE-ELE-8610 |  |  |  | 14.5d | 0d | PSUAY - ELETROMEC - 1T - SEM HE | PROFIS [12182.4 h]; CABLE FIBER OPTICS [2272 m] | PSUAY-LZE-ELE-10170 | CONCLUSÃO | LUZVILLE | YARD 4 | CNT |
|  | 2 | **LOOP 2** |  | 2026-03-25 | 2026-03-31 |  |  |  |  |  |  |  |  |  |  |  |  |  |
| PSUAY-LZE-ELE-10180 |  | Execute Fiber Optic Cable Pulling, Fusion, and Connectorization (Loop 2) in Yard 4 | 4d | 2026-03-25 | 2026-03-31 | PSUAY-LZE-ELE-10170 |  |  |  | 14.5d | 0d | PSUAY - ELETROMEC - 1T - SEM HE | PROFIS [7249.38 h]; CABLE FIBER OPTICS [1352 m] | PSUAY-LZE-ELE-10180 | CONCLUSÃO | LUZVILLE | YARD 4 | CNT |

Notes:
- PSUAY-LZE-ELE-10050: Translate: Executar montagem dos painéis Reefer RR7 DB (Floor) no pátio 4
- PSUAY-LZE-ELE-10060: Translate: Executar montagem do Quadro Principal Reefer RR7-440V no Pátio 4
- PSUAY-LZE-ELE-10070: Translate: Executar montagem do painel SCADA Reefer RR7 no pátio 4
- PSUAY-LZE-ELE-10080: Translate: Executar cabos de energia puxando o Reefer RR7 no Pátio 4
- PSUAY-LZE-ELE-10090: Translate: Execute a preparação do cabo de energia no reefer RR7 no pátio 4
- PSUAY-LZE-ELE-10100: Translate: Execute Teste de Cabo de Energia no Reefer RR7 no Pátio 4
- PSUAY-LZE-ELE-10110: Translate: Executar a conectividade do cabo de energia no Reefer RR7 em YRD 4
- PSUAY-LZE-ELE-10120: Translate: Execute puxagem de cabo de fibra óptica para o reefer RR7 no pátio 4
- PSUAY-LZE-ELE-10130: Translate: Execute emenda por fusão de fibra no Reefer RR7 no Pátio 4
- PSUAY-LZE-ELE-10140: Translate: Execute a conectivação de fibra no Reefer RR7 no pátio 4
- PSUAY-LZE-ELE-10150: Translate: Executar grounding para Reefer RR7 no Jarda 4
- PSUAY-LZE-ELE-10160: Translate: Executar pré-comissionamento no RR7 no Pátio 4
- PSUAY-LZE-ELE-10170: Translate: Execute puxação, fusão e conectivação de cabos de fibra óptica (Loop 7) no pátio 4
- PSUAY-LZE-ELE-10180: Translate: Execute puxação, fusão e conectividade de cabos de fibra óptica (Loop 2) no pátio 4

| ID | WBS | Activity | Duration | Start | Finish | Predecessors | Complete | Remaining | Planned start | Planned finish | Total float | Free float | Calendar | Resources | ACTIVITY ID COD. | FASES DE ENTREGA | RESPONSÁVEL | ÁREAS | PHASES - YARD | Check Pred | SERVIÇOS |
| --- | --- | --- | --- | --- | --- | --- | --- | --- | --- | --- | --- | --- | --- | --- | --- | --- | --- | --- | --- | --- | --- |
|  | 3 | **SCADA - AUTOMATION LOOP 1&2** |  | 2026-03-30 | 2026-03-31 |  |  |  |  |  |  |  |  |  |  |  |  |  |  |  |  |
| PSUAY-LZE-ELE-10190 |  | Execute Fiber Optic Cable Pulling, Fusion, and Connectorization (SCADA) in Yard 4 | 1d | 2026-03-30 | 2026-03-31 | PSUAY-LZE-ELE-10180 FF |  |  |  |  | 14.5d | 0d | PSUAY - ELETROMEC - 1T - SEM HE | PROFIS [1806.98 h]; CABLE FIBER OPTICS [337 m] | PSUAY-LZE-ELE-10190 | CONCLUSÃO | LUZVILLE | YARD 4 | CNT |  |  |
|  | 4 | **FEC-ISP-02** |  | 2026-03-18 | 2026-03-31 |  |  |  |  |  |  |  |  |  |  |  |  |  |  |  |  |
| PSUAY-LZE-ELE-10200 |  | Execute Fiber Optic Cable Pulling, Fusion, and Connectorization (FEC-ISP-02) in Yard 4 | 9d | 2026-03-18 | 2026-03-31 | PSUAY-LZE-ELE-10190 FF |  |  |  |  | 14.5d |  | PSUAY - ELETROMEC - 1T - SEM HE | PROFIS [15876.8 h]; CABLE FIBER OPTICS [2961 m] | PSUAY-LZE-ELE-10200 | CONCLUSÃO | LUZVILLE | YARD 4 | CNT |  |  |
|  | 3 | **SCANNER** |  | 2026-01-19 | 2026-04-20 |  |  |  |  |  |  |  |  |  |  |  |  |  |  |  |  |
|  | 1 | **PAVEMENT** |  | 2026-01-19 | 2026-04-20 |  |  |  |  |  |  |  |  |  |  |  |  |  |  |  |  |
|  | 3 | **PAVEMENT TYPE 05B (CONCRETE SLABS)** |  | 2026-01-19 | 2026-01-28 |  |  |  |  |  |  |  |  |  |  |  |  |  |  |  |  |
|  | 1 | **SUBGRADE** |  | 2026-01-19 | 2026-01-26 |  |  |  |  |  |  |  |  |  |  |  |  |  |  |  |  |
| PSUAY-CAG-INF-10210 |  | Execute subgrade of pavement type 05 in Scanner | 1d | 2026-01-19 A | 2026-01-26 | PSUAY-CAG-INF-6730 | 50% | 1d | 2026-01-19 | 2026-01-19 | 0d |  |  | PROFIS [1238.61 h] | PSUAY-CAG-INF-10210 | CONCLUSÃO | CONSAG | SCANNER | CNT | UDF_G1 |  |
|  | 2 | **BGTC/BGS** |  | 2026-01-27 | 2026-01-27 |  |  |  |  |  |  |  |  |  |  |  |  |  |  |  |  |
| PSUAY-CAG-INF-10220 |  | Execute BGTC of pavement type 05 in Scanner | 1d | 2026-01-27 | 2026-01-27 | PSUAY-CAG-INF-10210 |  |  |  |  | 0d |  |  | PROFIS [151.01 h]; CEMENT SOIL (BGTC) [27.5 m³] | PSUAY-CAG-INF-10220 | CONCLUSÃO | CONSAG | SCANNER | CNT | UDF_G1 | PAV-BGTC/BGS |
|  | 3 | **CONCRETE** |  | 2026-01-28 | 2026-01-28 |  |  |  |  |  |  |  |  |  |  |  |  |  |  |  |  |
| PSUAY-CAG-INF-10230 |  | Execute concrete of pavement type 05 in Scanner | 1d | 2026-01-28 | 2026-01-28 | PSUAY-CAG-INF-10220 |  |  |  |  | 0d |  |  | PROFIS [126.38 h]; CONCRETE-PAVEMENT [19.25 m³] | PSUAY-CAG-INF-10230 | CONCLUSÃO | CONSAG | SCANNER | CNT | UDF_G1 | PAV-CONC |
|  | 4 | **PAVEMENT TYPE 07 (PEDESTRIAN BLOCK)** |  | 2026-03-18 | 2026-04-20 |  |  |  |  |  |  |  |  |  |  |  |  |  |  |  |  |
|  | 3 | **SUBGRADE** |  | 2026-03-18 | 2026-03-23 |  |  |  |  |  |  |  |  |  |  |  |  |  |  |  |  |
| PSUAY-CAG-INF-10240 |  | Execute subgrade of pavement type 07 in Scanner | 4d | 2026-03-18 | 2026-03-23 | PSUAY-CAG-CIV-10500 SS |  |  |  |  | 0d |  |  | PROFIS [6756.08 h] | PSUAY-CAG-INF-10240 | CONCLUSÃO | CONSAG | SCANNER | CNT | UDF_G1 |  |
|  | 1 | **BGTC/BGS** |  | 2026-03-24 | 2026-03-27 |  |  |  |  |  |  |  |  |  |  |  |  |  |  |  |  |
| PSUAY-CAG-INF-10250 |  | Execute sub-base of pavement type 07 in Scanner | 4d | 2026-03-24 | 2026-03-27 | PSUAY-CAG-INF-10240 |  |  |  |  | 0d |  |  | PROFIS [6756.08 h] | PSUAY-CAG-INF-10250 | CONCLUSÃO | CONSAG | SCANNER | CNT | UDF_G1 | PAV-BGTC/BGS |
|  | 4 | **SAND BEDDING (PREMACIL)** |  | 2026-03-30 | 2026-04-08 |  |  |  |  |  |  |  |  |  |  |  |  |  |  |  |  |
| PSUAY-PMC-INF-10260 |  | Execute sand bedding of pavement type 07 in Scanner | 8d | 2026-03-30 | 2026-04-08 | PSUAY-CAG-INF-10250 |  |  |  |  | 0d |  |  | PROFIS [27024.3 h] | PSUAY-PMC-INF-10260 | CONCLUSÃO | PREMACIL | SCANNER | CNT | UDF_G1 | PAV-SAND |
|  | 2 | **PAVER (PREMACIL)** |  | 2026-04-09 | 2026-04-20 |  |  |  |  |  |  |  |  |  |  |  |  |  |  |  |  |
| PSUAY-PMC-INF-10270 |  | Execute paver of pavement type 07 in Scanner | 8d | 2026-04-09 | 2026-04-20 | PSUAY-PMC-INF-10260 |  |  |  |  | 0d |  |  | PSUAY - PAVIMENTO (BLOCK PAVER - M2) [300 m²]; PROFIS [1486.34 h] | PSUAY-PMC-INF-10270 | CONCLUSÃO | PREMACIL | SCANNER | CNT | UDF_G1 | PAV-PAVER |
|  | 2 | **PAVEMENT TYPE 08 (LANDSCAPING)** |  | 2026-03-24 | 2026-04-16 |  |  |  |  |  |  |  |  |  |  |  |  |  |  |  |  |
|  | 1 | **SUBGRADE** |  | 2026-03-24 | 2026-03-26 |  |  |  |  |  |  |  |  |  |  |  |  |  |  |  |  |
| PSUAY-CAG-INF-10280 |  | Execute subgrade layer of type 08 pavement in Scanner | 3d | 2026-03-24 | 2026-03-26 | PSUAY-CAG-INF-10240 |  |  |  |  | 2d | 0d |  | PROFIS [23195.9 h] | PSUAY-CAG-INF-10280 | CONCLUSÃO | CONSAG | SCANNER | CNT | UDF_G1 |  |

Notes:
- PSUAY-LZE-ELE-10190: Translate: Execute puxação, fusão e conectividade de cabos de fibra óptica (SCADA) no pátio 4
- PSUAY-LZE-ELE-10200: Translate: Execute puxação, fusão e conectividade de cabos de fibra óptica (FEC-ISP-02) no pátio 4
- PSUAY-CAG-INF-10210: Translate: Executar o sub-sapo do tipo 05 no Scanner
- PSUAY-CAG-INF-10220: Translate: Execute o BGTC do tipo de pavimento 05 no Scanner
- PSUAY-CAG-INF-10230: Translate: Executar concreto do tipo 05 no Scanner
- PSUAY-CAG-INF-10240: Translate: Executar o subnível do tipo 07 no Scanner
- PSUAY-CAG-INF-10250: Translate: Executar sub-base do tipo de pavimento 07 no Scanner
- PSUAY-PMC-INF-10260: Translate: Executar a camada de areia do tipo 07 no Scanner
- PSUAY-PMC-INF-10270: Translate: Executar pavimentação do tipo 07 no Scanner
- PSUAY-CAG-INF-10280: Translate: Executar a camada de subsolo do pavimento tipo 08 no Scanner

| ID | WBS | Activity | Duration | Start | Finish | Predecessors | Total float | Free float | Resources | ACTIVITY ID COD. | FASES DE ENTREGA | RESPONSÁVEL | ÁREAS | PHASES - YARD |
| --- | --- | --- | --- | --- | --- | --- | --- | --- | --- | --- | --- | --- | --- | --- |
|  | 2 | **TOPSOIL** |  | 2026-03-27 | 2026-03-31 |  |  |  |  |  |  |  |  |  |
| PSUAY-CAG-INF-10290 |  | Execute topsoil layer of type 08 pavement in Scanner | 3d | 2026-03-27 | 2026-03-31 | PSUAY-CAG-INF-10280 | 2d | 0d | PROFIS [23195.9 h] | PSUAY-CAG-INF-10290 | CONCLUSÃO | CONSAG | SCANNER | CNT |
|  | 3 | **GRASS/VEGETATION** |  | 2026-04-01 | 2026-04-16 |  |  |  |  |  |  |  |  |  |
| PSUAY-CAG-INF-10300 |  | Execute grass/vegetation of type 08 pavement in Scanner | 12d | 2026-04-01 | 2026-04-16 | PSUAY-CAG-INF-10290 | 2d |  | PROFIS [92783.5 h] | PSUAY-CAG-INF-10300 | CONCLUSÃO | CONSAG | SCANNER | CNT |
|  | 2 | **STRUCTURE** |  | 2026-01-29 | 2026-04-13 |  |  |  |  |  |  |  |  |  |
|  | 6 | **PAVEMENT NUTECH** |  | 2026-01-29 | 2026-02-13 |  |  |  |  |  |  |  |  |  |
|  | 1 | **STEEL** |  | 2026-01-29 | 2026-02-06 |  |  |  |  |  |  |  |  |  |
| PSUAY-CAG-CIV-10310 |  | Execute steel for Nutech pavement in Scanner | 7d | 2026-01-29 | 2026-02-06 | PSUAY-CAG-INF-10230 | 0d |  | PROFIS [65915.1 h] | PSUAY-CAG-CIV-10310 | CONCLUSÃO | CONSAG | SCANNER | CNT |
|  | 2 | **FORMWORK** |  | 2026-02-02 | 2026-02-11 |  |  |  |  |  |  |  |  |  |
| PSUAY-CAG-CIV-10320 |  | Execute formwork for Nutech pavement in Scanner | 8d | 2026-02-02 | 2026-02-11 | PSUAY-CAG-CIV-10310 FF+3d | 7d | 0d | PROFIS [75668.1 h] | PSUAY-CAG-CIV-10320 | CONCLUSÃO | CONSAG | SCANNER | CNT |
|  | 3 | **CONCRETE** |  | 2026-02-12 | 2026-02-13 |  |  |  |  |  |  |  |  |  |
| PSUAY-CAG-CIV-10330 |  | Execute concrete for Nutech pavement in Scanner | 2d | 2026-02-12 | 2026-02-13 | PSUAY-CAG-CIV-10320 | 7d |  | PROFIS [604 h]; CONCRETE-PAVEMENT [92 m³] | PSUAY-CAG-CIV-10330 | CONCLUSÃO | CONSAG | SCANNER | CNT |
|  | 2 | **WALL NUTECH** |  | 2026-02-09 | 2026-03-05 |  |  |  |  |  |  |  |  |  |
|  | 1 | **STEEL** |  | 2026-02-09 | 2026-02-19 |  |  |  |  |  |  |  |  |  |
| PSUAY-CAG-CIV-10340 |  | Execute steel for Nutech Wall in Scanner | 9d | 2026-02-09 | 2026-02-19 | PSUAY-CAG-CIV-10310 | 0d |  | PROFIS [86269.9 h] | PSUAY-CAG-CIV-10340 | CONCLUSÃO | CONSAG | SCANNER | CNT |
|  | 2 | **FORMWORK** |  | 2026-02-11 | 2026-02-24 |  |  |  |  |  |  |  |  |  |
| PSUAY-CAG-CIV-10350 |  | Execute formwork for Nutech Wall in Scanner | 10d | 2026-02-11 | 2026-02-24 | PSUAY-CAG-CIV-10340 FF+3d | 0d |  | PROFIS [97125.4 h] | PSUAY-CAG-CIV-10350 | CONCLUSÃO | CONSAG | SCANNER | CNT |
|  | 3 | **CONCRETE** |  | 2026-02-25 | 2026-02-27 |  |  |  |  |  |  |  |  |  |
| PSUAY-CAG-CIV-10360 |  | Execute concrete for Nutech Wall in Scanner | 3d | 2026-02-25 | 2026-02-27 | PSUAY-CAG-CIV-10350, PSUAY-CAG-CIV-10330 | 0d |  | PROFIS [768 h]; CONCRETE-STRUCTURE [116.98 m³] | PSUAY-CAG-CIV-10360 | CONCLUSÃO | CONSAG | SCANNER | CNT |
|  | 4 | **GUIDING BAR** |  | 2026-03-02 | 2026-03-05 |  |  |  |  |  |  |  |  |  |
| PSUAY-CAG-CIV-10370 |  | Execute Guiding Bar in Scanner | 4d | 2026-03-02 | 2026-03-05 | PSUAY-CAG-CIV-10360 | 31d | 0d | PROFIS [6305.67 h] | PSUAY-CAG-CIV-10370 | CONCLUSÃO | CONSAG | SCANNER | CNT |
|  | 3 | **SCANNER CANOPY** |  | 2026-03-02 | 2026-04-13 |  |  |  |  |  |  |  |  |  |
|  | 1 | **BASE FOUNDATION** |  | 2026-03-02 | 2026-03-09 |  |  |  |  |  |  |  |  |  |
| PSUAY-CAG-CIV-10380 |  | Execute base foudation for Scanner Canopy | 6d | 2026-03-02 | 2026-03-09 | PSUAY-CAG-CIV-10330, PSUAY-CAG-CIV-10360 | 0d |  | PROFIS [45040.5 h] | PSUAY-CAG-CIV-10380 | CONCLUSÃO | CONSAG | SCANNER | CNT |

Notes:
- PSUAY-CAG-INF-10290: Translate: Executar a camada superficial do solo do pavimento tipo 08 no Scanner
- PSUAY-CAG-INF-10300: Translate: Executar grama/vegetação do tipo 08 no Scanner
- PSUAY-CAG-CIV-10310: Translate: Executar aço para pavimentação Nutech no Scanner
- PSUAY-CAG-CIV-10320: Translate: Executar cofragem para pavimentação Nutech no Scanner
- PSUAY-CAG-CIV-10330: Translate: Execute concreto para pavimento Nutech no Scanner
- PSUAY-CAG-CIV-10340: Translate: Executar aço para a Nutech Wall no Scanner
- PSUAY-CAG-CIV-10350: Translate: Executar cofragem para Nutech Wall no Scanner
- PSUAY-CAG-CIV-10360: Translate: Aplicar concreto para muro Nutech no scanner
- PSUAY-CAG-CIV-10370: Translate: Executar a Barra de Guiamento no Scanner
- PSUAY-CAG-CIV-10380: Translate: Executar base fundação para Scanner Canopy

| ID | WBS | Activity | Duration | Start | Finish | Predecessors | Total float | Free float | Resources | ACTIVITY ID COD. | FASES DE ENTREGA | RESPONSÁVEL | ÁREAS | PHASES - YARD | Check Pred |
| --- | --- | --- | --- | --- | --- | --- | --- | --- | --- | --- | --- | --- | --- | --- | --- |
|  | 2 | **METAL SCTRUCTURE** |  | 2026-03-10 | 2026-03-19 |  |  |  |  |  |  |  |  |  |  |
| PSUAY-BRF-EST-10390 |  | Execute metal structure for Scanner Canopy | 8d | 2026-03-10 | 2026-03-19 | PSUAY-CAG-CIV-10380, PSUAY-MIL-GER-1330 | 5d | 0d | PROFIS [78820.9 h]; PSUAY-STE-STRUC [7 T] | PSUAY-BRF-EST-10390 | CONCLUSÃO | BRAFER | SCANNER | CNT |  |
|  | 3 | **ROOF STRUCTURE** |  | 2026-03-20 | 2026-04-13 |  |  |  |  |  |  |  |  |  |  |
| PSUAY-BRF-EST-10400 |  | Execute roof structure for Scanner Canopy | 17d | 2026-03-20 | 2026-04-13 | PSUAY-BRF-EST-10390 | 5d |  | PROFIS [95860.6 h] | PSUAY-BRF-EST-10400 | CONCLUSÃO | BRAFER | SCANNER | CNT |  |
|  | 4 | **SCANNER CONTROL CENTER** |  | 2026-03-10 | 2026-03-24 |  |  |  |  |  |  |  |  |  |  |
|  | 1 | **BASE FOUNDATION** |  | 2026-03-10 | 2026-03-10 |  |  |  |  |  |  |  |  |  |  |
| PSUAY-CAG-CIV-10410 |  | Execute base foundation for Scanner Control Center | 1d | 2026-03-10 | 2026-03-10 | PSUAY-CAG-CIV-10380 | 0d |  | PROFIS [5630.06 h] | PSUAY-CAG-CIV-10410 | CONCLUSÃO | CONSAG | SCANNER | CNT |  |
|  | 2 | **LIFTING (PRÉ-MOLDADA? ESTRUT. METÁLICA?)** |  | 2026-03-11 | 2026-03-17 |  |  |  |  |  |  |  |  |  |  |
| PSUAY-BRF-EST-10420 |  | Execute lifting structure of Scanner Control Center | 5d | 2026-03-11 | 2026-03-17 | PSUAY-CAG-CIV-10410 | 19d | 0d | PROFIS [90.08 h] | PSUAY-BRF-EST-10420 | CONCLUSÃO | CONSAG | SCANNER | CNT |  |
|  | 3 | **ASSEMBLY** |  | 2026-03-18 | 2026-03-24 |  |  |  |  |  |  |  |  |  |  |
| PSUAY-CAG-MEC-10430 |  | Execute assembly of Scanner Control Center | 5d | 2026-03-18 | 2026-03-24 | PSUAY-BRF-EST-10420 | 19d |  | PROFIS [992.08 h] | PSUAY-CAG-MEC-10430 | CONCLUSÃO | CONSAG | SCANNER | CNT |  |
|  | 5 | **GENERATION ROOM** |  | 2026-03-11 | 2026-03-25 |  |  |  |  |  |  |  |  |  |  |
|  | 1 | **BASE FOUNDATION** |  | 2026-03-11 | 2026-03-11 |  |  |  |  |  |  |  |  |  |  |
| PSUAY-CAG-CIV-10440 |  | Execute base foundation for Generation Room in Scanner | 1d | 2026-03-11 | 2026-03-11 | PSUAY-CAG-CIV-10410 | 0d |  | PROFIS [5630.06 h] | PSUAY-CAG-CIV-10440 | CONCLUSÃO | CONSAG | SCANNER | CNT |  |
|  | 2 | **LIFTING (PRÉ-MOLDADA? ESTRUT. METÁLICA?)** |  | 2026-03-12 | 2026-03-18 |  |  |  |  |  |  |  |  |  |  |
| PSUAY-BRF-EST-10450 |  | Execute lifting structure of Generation Room in Scanner | 5d | 2026-03-12 | 2026-03-18 | PSUAY-CAG-CIV-10440 | 18d | 0d | PROFIS [90.08 h] | PSUAY-BRF-EST-10450 | CONCLUSÃO | CONSAG | SCANNER | CNT |  |
|  | 3 | **ASSEMBLY** |  | 2026-03-19 | 2026-03-25 |  |  |  |  |  |  |  |  |  |  |
| PSUAY-CAG-MEC-10460 |  | Execute assembly of Generation Room in Scanner | 5d | 2026-03-19 | 2026-03-25 | PSUAY-BRF-EST-10450 | 18d |  | PROFIS [992.08 h] | PSUAY-CAG-MEC-10460 | CONCLUSÃO | CONSAG | SCANNER | CNT |  |
|  | 1 | **TOILED BLOCK** |  | 2026-03-12 | 2026-03-25 |  |  |  |  |  |  |  |  |  |  |
|  | 6 | **BASE (FOUNDATION)** |  | 2026-03-12 | 2026-03-18 |  |  |  |  |  |  |  |  |  |  |
| PSUAY-CAG-CIV-10470 |  | Execute excavation and sepctic tank instalation of toilet block in Scanner | 1d | 2026-03-12 | 2026-03-12 | PSUAY-CAG-CIV-10440 | 0d |  | PROFIS [722 h] | PSUAY-CAG-CIV-10470 | CONCLUSÃO | CONSAG | SCANNER | CNT |  |
| PSUAY-CAG-CIV-10480 |  | Execute steel base foundation of Toilet Block in Scanner Area | 1d | 2026-03-13 | 2026-03-13 | PSUAY-CAG-CIV-10470 | 0d |  | PROFIS [2446.91 h] | PSUAY-CAG-CIV-10480 | CONCLUSÃO | CONSAG | SCANNER | CNT | UDF_G1 |
| PSUAY-CAG-CIV-10490 |  | Execute the formwork for the civil foundation of Toilet Block in Scanner Area | 2d | 2026-03-16 | 2026-03-17 | PSUAY-CAG-CIV-10480 | 0d |  | PROFIS [3295.16 h] | PSUAY-CAG-CIV-10490 | CONCLUSÃO | CONSAG | SCANNER | CNT |  |
| PSUAY-CAG-CIV-10500 |  | Execute concrete foundation of Toilet Block in Scanner Area | 1d | 2026-03-18 | 2026-03-18 | PSUAY-CAG-CIV-10490 | 0d |  | PROFIS [191.42 h]; CONCRETE-STRUCTURE [9.35 m³] | PSUAY-CAG-CIV-10500 | CONCLUSÃO | CONSAG | SCANNER | CNT |  |

Notes:
- PSUAY-BRF-EST-10390: Translate: Executar estrutura metálica para o Canopy do Scanner
- PSUAY-BRF-EST-10400: Translate: Executar estrutura de telhado para Canopy-Toldo de Scanner
- PSUAY-CAG-CIV-10410: Translate: Executar a base para o Centro de Controle de Scanners
- PSUAY-BRF-EST-10420: Translate: Estrutura de elevação de execução do Centro de Controle de Scanners
- PSUAY-CAG-MEC-10430: Translate: Executar montagem do Centro de Controle do Scanner
- PSUAY-CAG-CIV-10440: Translate: Executar a base para a Geração Room no Scanner
- PSUAY-BRF-EST-10450: Translate: Executar a estrutura de elevação da Sala de Geração no Scanner
- PSUAY-CAG-MEC-10460: Translate: Executar a montagem da Sala de Geração no Scanner
- PSUAY-CAG-CIV-10470: Translate: Executar escavação e instalação de tanque séptico do bloco sanitário no scanner
- PSUAY-CAG-CIV-10480: Translate: Executar a fundação de base de aço do Bloco de Banheiros na Área do Scanner
- PSUAY-CAG-CIV-10490: Translate: Executar a formagem para a fundação civil do Bloco de Banheiros na Área de Scanner
- PSUAY-CAG-CIV-10500: Translate: Executar fundação de concreto do Bloco de Banheiros na Área do Scanner

| ID | WBS | Activity | Duration | Start | Finish | Predecessors | Complete | Remaining | Planned start | Planned finish | Total float | Free float | Calendar | Resources | ACTIVITY ID COD. | FASES DE ENTREGA | RESPONSÁVEL | ÁREAS | PHASES - YARD | Check Pred | Atualização |
| --- | --- | --- | --- | --- | --- | --- | --- | --- | --- | --- | --- | --- | --- | --- | --- | --- | --- | --- | --- | --- | --- |
|  | 4 | **ASSEMBLY (METALBOX)** |  | 2026-03-19 | 2026-03-25 |  |  |  |  |  |  |  |  |  |  |  |  |  |  |  |  |
| PSUAY-CAG-MEC-10510 |  | Execute toilet box assembly in Scanner Area | 5d | 2026-03-19 | 2026-03-25 | PSUAY-CAG-CIV-10500 |  |  |  |  | 18d | 0d |  | PROFIS [992.08 h] | PSUAY-CAG-MEC-10510 | CONCLUSÃO | METALBOX | SCANNER | CNT |  |  |
|  | 3 | **EQUIPAMENTS** |  | 2026-03-02 | 2026-04-01 |  |  |  |  |  |  |  |  |  |  |  |  |  |  |  |  |
| PSUAY-CAG-MEC-10520 |  | Execute Equipment Scanner Installation | 23d | 2026-03-02 | 2026-04-01 | PSUAY-CAG-CIV-10360 |  |  |  |  | 13d |  |  | PROFIS [225.2 h] | PSUAY-CAG-MEC-10520 | CONCLUSÃO | CONSAG | SCANNER | CNT |  |  |
|  | 5 | **SIGNS** |  | 2026-03-06 | 2026-03-06 |  |  |  |  |  |  |  |  |  |  |  |  |  |  |  |  |
|  | 1 | **TRAFFIC SIGNS** |  | 2026-03-06 | 2026-03-06 |  |  |  |  |  |  |  |  |  |  |  |  |  |  |  |  |
| PSUAY-CAG-INF-10530 |  | Execute installation of Traffic Signs in Scanner Area | 1d | 2026-03-06 | 2026-03-06 | PSUAY-CAG-CIV-10370 |  |  |  |  | 31d |  |  | PROFIS [1803.87 h] | PSUAY-CAG-INF-10530 | CONCLUSÃO | CONSAG | SCANNER | CNT |  |  |
|  | 7 | **ELECTRICAL (LUZVILLE)** |  | 2026-03-03 | 2026-03-30 |  |  |  |  |  |  |  |  |  |  |  |  |  |  |  |  |
|  | 1 | **CABLE PULLING** |  | 2026-03-03 | 2026-03-30 |  |  |  |  |  |  |  |  |  |  |  |  |  |  |  |  |
|  | 4 | **SCANNER AND TOILET BLOCK** |  | 2026-03-03 | 2026-03-30 |  |  |  |  |  |  |  |  |  |  |  |  |  |  |  |  |
|  | 1 | **BT CABLES** |  | 2026-03-03 | 2026-03-18 |  |  |  |  |  |  |  |  |  |  |  |  |  |  |  |  |
| PSUAY-LZE-ELE-10540 |  | Execute LV Cable Pulling in Scanner and toilet block Yard 4 | 8d | 2026-03-03 | 2026-03-12 | PSUAY-LZE-ELE-8890, PSUAY-CAG-CIV-10360 |  |  |  |  | 15d | 0d | PSUAY - ELETROMEC - 1T - SEM HE | PROFIS [13981.3 h]; CABLE LOW VOLTAGE [3725 m] | PSUAY-LZE-ELE-10540 | CONCLUSÃO | LUZVILLE | SCANNER | CNT |  |  |
| PSUAY-LZE-ELE-10550 |  | Execute Cable Preparation and Termination in Scanner and toilet block Yard 4 | 2d | 2026-03-13 | 2026-03-16 | PSUAY-LZE-ELE-10540 |  |  |  |  | 23d | 0d | PSUAY - ELETROMEC - 1T - SEM HE | PROFIS [3963.57 h] | PSUAY-LZE-ELE-10550 | CONCLUSÃO | LUZVILLE | SCANNER | CNT |  |  |
| PSUAY-LZE-ELE-10560 |  | Execute Testing and Connection in Scanner and toilet block Yard 4 | 2d | 2026-03-17 | 2026-03-18 | PSUAY-LZE-ELE-10550 |  |  |  |  | 23d | 0d | PSUAY - ELETROMEC - 1T - SEM HE | PROFIS [3963.57 h] | PSUAY-LZE-ELE-10560 | CONCLUSÃO | LUZVILLE | SCANNER | CNT |  |  |
|  | 2 | **OPTIC FIBER - BUILDINGS-LOOP-FIB** |  | 2026-03-13 | 2026-03-30 |  |  |  |  |  |  |  |  |  |  |  |  |  |  |  |  |
| PSUAY-LZE-ELE-10570 |  | Execute Fiber Optic Cable Pulling in Scanner Yard 4 | 4d | 2026-03-13 | 2026-03-18 | PSUAY-LZE-ELE-10540 |  |  |  |  | 15d | 0d | PSUAY - ELETROMEC - 1T - SEM HE | PROFIS [6798.97 h]; CABLE FIBER OPTICS [1268 m] | PSUAY-LZE-ELE-10570 | CONCLUSÃO | LUZVILLE | SCANNER | CNT |  |  |
| PSUAY-LZE-ELE-10580 |  | Execute Fiber Optic Fusions in Scanner Yard 4 | 5d | 2026-03-19 | 2026-03-25 | PSUAY-LZE-ELE-10570 |  |  |  |  | 15d | 0d | PSUAY - ELETROMEC - 1T - SEM HE | PROFIS [9908.91 h] | PSUAY-LZE-ELE-10580 | CONCLUSÃO | LUZVILLE | SCANNER | CNT |  |  |
| PSUAY-LZE-ELE-10590 |  | Execute Fiber Optic Connectorizations in Scanner Yard 4 | 3d | 2026-03-26 | 2026-03-30 | PSUAY-LZE-ELE-10580 |  |  |  |  | 15d |  | PSUAY - ELETROMEC - 1T - SEM HE | PROFIS [5945.35 h] | PSUAY-LZE-ELE-10590 | CONCLUSÃO | LUZVILLE | SCANNER | CNT |  |  |
|  | 5 | **YARD 4 ACCESS** |  | 2025-11-24 | 2026-03-31 |  |  |  |  |  |  |  |  |  |  |  |  |  |  |  |  |
|  | 1 | **PAVEMENT** |  | 2025-11-24 | 2026-03-13 |  |  |  |  |  |  |  |  |  |  |  |  |  |  |  |  |
|  | 4 | **PAVEMENT TYPE 03B** |  | 2025-11-24 | 2026-03-03 |  |  |  |  |  |  |  |  |  |  |  |  |  |  |  |  |
|  | 1 | **SUBGRADE** |  | 2025-11-24 | 2026-01-29 |  |  |  |  |  |  |  |  |  |  |  |  |  |  |  |  |
| PSUAY-ECM-INF-10600 |  | Execute subgrade of pavement 03B in Yard 4 Access - Area 1 | 13d | 2025-11-24 A | 2026-01-29 | PSUAY-MIL-GER-1450 FS+10d | 90% | 4d | 2025-12-08 | 2025-12-24 | 26d | 0d |  | PROFIS [27699.9 h] | PSUAY-ECM-INF-10600 | CONCLUSÃO | CONSAG | YARD 4 ACCESS | CNT | UDF_G1 |  |
| PSUAY-ECM-INF-10620 |  | Execute subgrade of pavement 03B in Yard 4 Access - Area 3 | 8d | 2025-12-12 A | 2026-01-10 A | PSUAY-ECM-INF-10600 SS | 100% |  | 2025-12-29 | 2026-01-09 |  |  |  | PROFIS [37631.3 h] | PSUAY-ECM-INF-10620 | CONCLUSÃO | CONSAG | YARD 4 ACCESS | CNT |  | OK |
| PSUAY-ECM-INF-10610 |  | Execute subgrade of pavement 03B in Yard 4 Access - Area 2 | 12d | 2026-01-05 A | 2026-01-23 A | PSUAY-ECM-INF-10620 | 100% |  | 2026-02-04 | 2026-02-19 |  |  |  | PROFIS [27699.9 h] | PSUAY-ECM-INF-10610 | CONCLUSÃO | CONSAG | YARD 4 ACCESS | CNT |  | OK |

Notes:
- PSUAY-CAG-MEC-10510: Translate: Executar montagem da caixa de vaso sanitário na Área do Scanner
- PSUAY-CAG-MEC-10520: Translate: Executar Instalação de Scanner de Equipamentos
- PSUAY-CAG-INF-10530: Translate: Executar a instalação de placas de trânsito na área do scanner
- PSUAY-LZE-ELE-10540: Translate: Executar Cabo LV puxando o scanner e bloco de banheiros Pátio 4
- PSUAY-LZE-ELE-10550: Translate: Executar a preparação e terminação dos cabos no scanner e bloco de banheiros do pátio 4
- PSUAY-LZE-ELE-10560: Translate: Executar Testes e Conexão no Scanner e bloco de banheiros Pátio 4
- PSUAY-LZE-ELE-10570: Translate: Executar puxagem de cabo de fibra óptica no pátio do scanner 4
- PSUAY-LZE-ELE-10580: Translate: Execute fusões de fibra óptica no pátio de scanners 4
- PSUAY-LZE-ELE-10590: Translate: Execute Conectividades de Fibra Óptica no Pátio de Scanner 4
- PSUAY-ECM-INF-10600: Translate: Executar o subnível do pavimento 03B no Acesso ao Pátio 4 - Área 1
- PSUAY-ECM-INF-10620: Translate: Executar o subnível do pavimento 03B no Acesso ao Pátio 4 - Área 3
- PSUAY-ECM-INF-10610: Translate: Executar o subnível do pavimento 03B no Pátio 4 Acesso - Área 2

| ID | WBS | Activity | Duration | Start | Finish | Predecessors | Complete | Remaining | Planned start | Planned finish | Total float | Free float | Resources | ACTIVITY ID COD. | FASES DE ENTREGA | RESPONSÁVEL | ÁREAS | SERVIÇOS | PHASES - YARD | Atualização | Check Pred |
| --- | --- | --- | --- | --- | --- | --- | --- | --- | --- | --- | --- | --- | --- | --- | --- | --- | --- | --- | --- | --- | --- |
|  | 4 | **BGTC/BGS** |  | 2025-12-12 | 2026-02-03 |  |  |  |  |  |  |  |  |  |  |  |  |  |  |  |  |
| PSUAY-ECM-INF-10650 |  | Execute BGTC/BGS pavement type 03B in Yard 4 Access - Area 3 | 4d | 2025-12-12 A | 2026-01-29 | PSUAY-ECM-INF-10620 | 90% | 4d | 2026-01-12 | 2026-01-15 | 29d | 0d | PROFIS [6882.11 h]; CEMENT SOIL (BGTC) [1253.25 m³] | PSUAY-ECM-INF-10650 | CONCLUSÃO | CONSAG | YARD 4 ACCESS | PAV-BGTC/BGS | CNT |  |  |
| PSUAY-ECM-INF-10640 |  | Execute BGTC/BGS pavement type 03B in Yard 4 Access - Area 2 | 3d | 2026-01-19 A | 2026-01-28 | PSUAY-ECM-INF-10610 | 90% | 3d | 2026-02-27 | 2026-03-03 | 32d | 0d | PROFIS [5065.82 h]; CEMENT SOIL (BGTC) [922.5 m³] | PSUAY-ECM-INF-10640 | CONCLUSÃO | CONSAG | YARD 4 ACCESS | PAV-BGTC/BGS | CNT | OK |  |
| PSUAY-ECM-INF-10630 |  | Execute BGTC/BGS pavement type 03B in Yard 4 Access - Area 1 | 3d | 2026-01-30 | 2026-02-03 | PSUAY-ECM-INF-10600 |  |  |  |  | 42d | 0d | PROFIS [5065.82 h]; CEMENT SOIL (BGTC) [922.5 m³] | PSUAY-ECM-INF-10630 | CONCLUSÃO | CONSAG | YARD 4 ACCESS | PAV-BGTC/BGS | CNT |  |  |
|  | 2 | **CONCRETE** |  | 2025-12-22 | 2026-02-27 |  |  |  |  |  |  |  |  |  |  |  |  |  |  |  |  |
| PSUAY-ECM-INF-10680 |  | Execute concrete of pavement 03B in Yard 4 Access - Area 3 | 16d | 2025-12-22 A | 2026-02-27 | PSUAY-ECM-INF-10650 FS+5d | 90% | 16d | 2026-01-23 | 2026-02-13 | 29d | 0d | PROFIS [30168.9 h]; CONCRETE-PAVEMENT [4595.25 m³] | PSUAY-ECM-INF-10680 | CONCLUSÃO | CONSAG | YARD 4 ACCESS | PAV-CONC | CNT | OK |  |
| PSUAY-ECM-INF-10670 |  | Execute concrete of pavement 03B in Yard 4 Access - Area 2 | 10d | 2026-01-29 | 2026-02-11 | PSUAY-ECM-INF-10640 |  |  |  |  | 32d | 0d | PROFIS [22206.9 h]; CONCRETE-PAVEMENT [3382.5 m³] | PSUAY-ECM-INF-10670 | CONCLUSÃO | CONSAG | YARD 4 ACCESS | PAV-CONC | CNT |  |  |
| PSUAY-ECM-INF-10660 |  | Execute concrete of pavement 03B in Yard 4 Access - Area 1 | 10d | 2026-02-04 | 2026-02-17 | PSUAY-ECM-INF-10630 |  |  |  |  | 42d | 0d | PROFIS [22206.9 h]; CONCRETE-PAVEMENT [3382.5 m³] | PSUAY-ECM-INF-10660 | CONCLUSÃO | CONSAG | YARD 4 ACCESS | PAV-CONC | CNT |  | UDF_G1 |
|  | 3 | **ASPHALT** |  | 2026-02-12 | 2026-03-03 |  |  |  |  |  |  |  |  |  |  |  |  |  |  |  |  |
| PSUAY-ECM-INF-10700 |  | Execute asphalt of pavement 03B in Yard 4 Access - Area 2 | 2d | 2026-02-12 | 2026-02-13 | PSUAY-ECM-INF-10670 |  |  |  |  | 46d |  | PROFIS [2663.45 h]; ASPHALT [922.5 m³] | PSUAY-ECM-INF-10700 | CONCLUSÃO | CONSAG | YARD 4 ACCESS | PAV-ASPHA | CNT |  |  |
| PSUAY-ECM-INF-10690 |  | Execute asphalt of pavement 03B in Yard 4 Access - Area 1 | 2d | 2026-02-18 | 2026-02-19 | PSUAY-ECM-INF-10660 |  |  |  |  | 42d | 0d | PROFIS [2663.45 h]; ASPHALT [922.5 m³] | PSUAY-ECM-INF-10690 | CONCLUSÃO | CONSAG | YARD 4 ACCESS | PAV-ASPHA | CNT |  | UDF_G1 |
| PSUAY-ECM-INF-10710 |  | Execute asphalt of pavement 03B in Yard 4 Access - Area 3 | 2d | 2026-03-02 | 2026-03-03 | PSUAY-ECM-INF-10680 |  |  |  |  | 29d | 0d | PROFIS [3618.4 h]; ASPHALT [1253.25 m³] | PSUAY-ECM-INF-10710 | CONCLUSÃO | CONSAG | YARD 4 ACCESS | PAV-ASPHA | CNT |  |  |
|  | 2 | **PAVEMENT TYPE 08 (LANDSCAPING)** |  | 2026-01-26 | 2026-03-13 |  |  |  |  |  |  |  |  |  |  |  |  |  |  |  |  |
|  | 1 | **SUBGRADE** |  | 2026-01-26 | 2026-02-06 |  |  |  |  |  |  |  |  |  |  |  |  |  |  |  |  |
| PSUAY-CAG-INF-10720 |  | Execute sub-grade layer of type 08 pavement in Yard 4 Access | 10d | 2026-01-26 | 2026-02-06 | PSUAY-ECM-INF-10610 |  |  |  |  | 26d | 0d | PROFIS [98098.2 h] | PSUAY-CAG-INF-10720 | CONCLUSÃO | CONSAG | YARD 4 ACCESS |  | CNT |  | UDF_G1 |
|  | 2 | **TOPSOIL** |  | 2026-02-09 | 2026-02-20 |  |  |  |  |  |  |  |  |  |  |  |  |  |  |  |  |
| PSUAY-CAG-INF-10730 |  | Execute topsoil layer of type 08 pavement in Yard 4 Access | 10d | 2026-02-09 | 2026-02-20 | PSUAY-CAG-INF-10720 |  |  |  |  | 26d | 0d | PROFIS [98098.2 h] | PSUAY-CAG-INF-10730 | CONCLUSÃO | CONSAG | YARD 4 ACCESS |  | CNT |  |  |
|  | 3 | **GRASS/VEGETATION** |  | 2026-02-23 | 2026-03-13 |  |  |  |  |  |  |  |  |  |  |  |  |  |  |  |  |
| PSUAY-CAG-INF-10740 |  | Execute grass/vegetation of type 08 pavement in Yard 4 Access | 15d | 2026-02-23 | 2026-03-13 | PSUAY-CAG-INF-10730 SS+10d |  |  |  |  | 26d | 0d | PROFIS [392393 h] | PSUAY-CAG-INF-10740 | CONCLUSÃO | CONSAG | YARD 4 ACCESS |  | CNT |  |  |
|  | 1 | **PAVEMENT TYPE 09 (GRAVEL)** |  | 2026-01-19 | 2026-03-13 |  |  |  |  |  |  |  |  |  |  |  |  |  |  |  |  |
| PSUAY-CAG-INF-10750 |  | Execute gravel layer of type 09 pavement in Yard 4 Access | 17d | 2026-01-19 A | 2026-03-13 | PSUAY-CAG-INF-10740 FF | 80% | 17d | 2026-03-25 | 2026-04-16 | 26d |  | PROFIS [373764 h] | PSUAY-CAG-INF-10750 | CONCLUSÃO | CONSAG | YARD 4 ACCESS |  | CNT | OK | UDF_G1 |
|  | 5 | **KERB** |  | 2026-01-19 | 2026-03-06 |  |  |  |  |  |  |  |  |  |  |  |  |  |  |  |  |
| PSUAY-ECM-INF-10760 |  | Execute medium duty concrete kerb | 3d | 2026-01-19 A | 2026-03-06 | PSUAY-CAG-INF-10730 FF, PSUAY-ECM-INF-10710 | 10% | 3d | 2026-03-24 | 2026-03-26 | 29d | 0d | PROFIS [5147.49 h] | PSUAY-ECM-INF-10760 | CONCLUSÃO | CONSAG | YARD 4 ACCESS |  | CNT | OK |  |
|  | 2 | **BOXES** |  | 2025-11-24 | 2026-02-02 |  |  |  |  |  |  |  |  |  |  |  |  |  |  |  |  |
|  | 1 | **LV BOXES - LOW VOLTAGE** |  | 2025-11-24 | 2026-02-02 |  |  |  |  |  |  |  |  |  |  |  |  |  |  |  |  |
| PSUAY-CAG-INF-10780 |  | Execute Yard 4 Access LV-K12-01 box | 2d | 2025-11-24 A | 2026-01-27 | PSUAY-CAG-INF-10770 SS | 84% | 2d | 2025-12-16 | 2025-12-17 | 49d | 0d | PROFIS [7889.66 h] | PSUAY-CAG-INF-10780 | CONCLUSÃO | CONSAG | YARD 4 ACCESS |  | CNT |  |  |
| PSUAY-CAG-INF-10790 |  | Execute Yard 4 Access LV-K12-02 box | 2d | 2025-12-01 A | 2026-01-29 | PSUAY-CAG-INF-10780 | 84% | 2d | 2025-12-24 | 2025-12-29 | 49d | 0d | PROFIS [7889.66 h] | PSUAY-CAG-INF-10790 | CONCLUSÃO | CONSAG | YARD 4 ACCESS |  | CNT |  |  |
| PSUAY-CAG-INF-10800 |  | Execute Yard 4 Access LV-L13-01 box | 2d | 2025-12-01 A | 2026-02-02 | PSUAY-CAG-INF-10790 | 84% | 2d | 2025-12-22 | 2025-12-23 | 49d | 0d | PROFIS [7889.66 h] | PSUAY-CAG-INF-10800 | CONCLUSÃO | CONSAG | YARD 4 ACCESS |  | CNT |  |  |
| PSUAY-CAG-INF-10770 |  | Execute Yard 4 Access LV-N07-01 box | 2d | 2025-12-29 A | 2026-01-27 | PSUAY-ECM-INF-10620 SS | 84% | 2d | 2025-12-29 | 2025-12-30 | 49d | 0d | PROFIS [6516.46 h] | PSUAY-CAG-INF-10770 | CONCLUSÃO | CONSAG | YARD 4 ACCESS |  | CNT |  | UDF_G1 |

Notes:
- PSUAY-ECM-INF-10650: Translate: Executar pavimento BGTC/BGS tipo 03B no Pátio 4 Acesso - Área 3
- PSUAY-ECM-INF-10640: Translate: Executar o tipo de pavimento BGTC/BGS 03B no Acesso ao Pátio 4 - Área 2
- PSUAY-ECM-INF-10630: Translate: Executar o tipo de pavimento BGTC/BGS 03B no Acesso ao Pátio 4 - Área 1
- PSUAY-ECM-INF-10680: Translate: Executar concreto do pavimento 03B no Pátio 4 Acesso - Área 3
- PSUAY-ECM-INF-10670: Translate: Execução de concreto do pavimento 03B no Pátio 4 Acesso - Área 2
- PSUAY-ECM-INF-10660: Translate: Executar concreto do pavimento 03B no Pátio 4 Acesso - Área 1
- PSUAY-ECM-INF-10700: Translate: Instalar asfalto do pavimento 03B no Pátio 4 Acesso - Área 2
- PSUAY-ECM-INF-10690: Translate: Executar asfalto do pavimento 03B no Pátio 4 Acesso - Área 1
- PSUAY-ECM-INF-10710: Translate: Executar asfalto do pavimento 03B no Pátio 4 Acesso - Área 3
- PSUAY-CAG-INF-10720: Translate: Executar uma camada subterrânea do pavimento tipo 08 no Acesso ao Pátio 4
- PSUAY-CAG-INF-10730: Translate: Aplicar a camada superficial de solo do pavimento tipo 08 no Acesso ao Pátio 4
- PSUAY-CAG-INF-10740: Translate: Executar grama/vegetação do tipo 08 no Acesso ao Pátio 4
- PSUAY-CAG-INF-10750: Translate: Executar camada de cascalho do tipo 09 no Acesso ao Pátio 4
- PSUAY-ECM-INF-10760: Translate: Executar meio-fio de concreto
- PSUAY-CAG-INF-10780: Translate: Caixa elétrica - LV-K12-01
- PSUAY-CAG-INF-10790: Translate: Caixa elétrica - LV-K12-02
- PSUAY-CAG-INF-10800: Translate: Caixa elétrica - LV-L13-01
- PSUAY-CAG-INF-10770: Translate: Caixa elétrica - LV-N07-01

| ID | WBS | Activity | Duration | Start | Finish | Predecessors | Complete | Planned start | Planned finish | Resources | Check Pred | ACTIVITY ID COD. | FASES DE ENTREGA | RESPONSÁVEL | ÁREAS | PHASES - YARD | Atualização |
| --- | --- | --- | --- | --- | --- | --- | --- | --- | --- | --- | --- | --- | --- | --- | --- | --- | --- |
|  | 2 | **GP BOXES - SURFACE DRAINAGE** |  | 2025-11-24 | 2025-12-06 |  |  |  |  |  |  |  |  |  |  |  |  |
| PSUAY-CAG-INF-10810 |  | Execute Yard 4 Access GP-L13-01 box | 1d | 2025-11-24 A | 2025-11-26 A | PSUAY-CAG-INF-10960 | 100% | 2025-12-29 | 2025-12-29 | PROFIS [76.86 h] | UDF_G1 | PSUAY-CAG-INF-10810 | CONCLUSÃO | CONSAG | YARD 4 ACCESS | CNT |  |
| PSUAY-CAG-INF-10820 |  | Execute Yard 4 Access GP-K13-01 box | 1d | 2025-11-24 A | 2025-11-26 A | PSUAY-CAG-INF-10810 | 100% | 2025-12-30 | 2025-12-30 | PROFIS [76.86 h] |  | PSUAY-CAG-INF-10820 | CONCLUSÃO | CONSAG | YARD 4 ACCESS | CNT |  |
| PSUAY-CAG-INF-10830 |  | Execute Yard 4 Access GP-K13-02 box | 1d | 2025-12-01 A | 2025-12-06 A | PSUAY-CAG-INF-10820 | 100% | 2026-01-06 | 2026-01-06 | PROFIS [76.86 h] |  | PSUAY-CAG-INF-10830 | CONCLUSÃO | CONSAG | YARD 4 ACCESS | CNT |  |
| PSUAY-CAG-INF-10840 |  | Execute Yard 4 Access GP-K14-01 box | 1d | 2025-12-01 A | 2025-12-06 A | PSUAY-CAG-INF-10830 | 100% | 2026-01-07 | 2026-01-07 | PROFIS [76.86 h] |  | PSUAY-CAG-INF-10840 | CONCLUSÃO | CONSAG | YARD 4 ACCESS | CNT |  |
| PSUAY-CAG-INF-10850 |  | Execute Yard 4 Access GP-J14-01 box | 1d | 2025-12-01 A | 2025-12-06 A | PSUAY-CAG-INF-10840 | 100% | 2026-01-08 | 2026-01-08 | PROFIS [76.86 h] |  | PSUAY-CAG-INF-10850 | CONCLUSÃO | CONSAG | YARD 4 ACCESS | CNT |  |
| PSUAY-CAG-INF-10860 |  | Execute Yard 4 Access GP-J14-02 box | 1d | 2025-12-01 A | 2025-12-06 A | PSUAY-CAG-INF-10850 | 100% | 2026-01-09 | 2026-01-09 | PROFIS [76.86 h] |  | PSUAY-CAG-INF-10860 | CONCLUSÃO | CONSAG | YARD 4 ACCESS | CNT |  |
| PSUAY-CAG-INF-10870 |  | Execute Yard 4 Access GP-J14-03 box | 1d | 2025-12-01 A | 2025-12-06 A | PSUAY-CAG-INF-10860 | 100% | 2026-01-12 | 2026-01-12 | PROFIS [76.86 h] |  | PSUAY-CAG-INF-10870 | CONCLUSÃO | CONSAG | YARD 4 ACCESS | CNT |  |
| PSUAY-CAG-INF-10880 |  | Execute Yard 4 Access GP-H14-01 box | 1d | 2025-12-01 A | 2025-12-06 A | PSUAY-CAG-INF-10870 | 100% | 2026-01-13 | 2026-01-13 | PROFIS [76.86 h] |  | PSUAY-CAG-INF-10880 | CONCLUSÃO | CONSAG | YARD 4 ACCESS | CNT |  |
| PSUAY-CAG-INF-10890 |  | Execute Yard 4 Access GP-H14-02 box | 1d | 2025-12-01 A | 2025-12-06 A | PSUAY-CAG-INF-10880 | 100% | 2026-01-14 | 2026-01-14 | PROFIS [76.86 h] |  | PSUAY-CAG-INF-10890 | CONCLUSÃO | CONSAG | YARD 4 ACCESS | CNT |  |
| PSUAY-CAG-INF-10900 |  | Execute Yard 4 Access GP-H15-01 box | 1d | 2025-12-01 A | 2025-12-06 A | PSUAY-CAG-INF-10890 | 100% | 2026-01-15 | 2026-01-15 | PROFIS [76.86 h] |  | PSUAY-CAG-INF-10900 | CONCLUSÃO | CONSAG | YARD 4 ACCESS | CNT |  |
| PSUAY-CAG-INF-10910 |  | Execute Yard 4 Access GP-G15-01 box | 1d | 2025-12-01 A | 2025-12-06 A | PSUAY-CAG-INF-10900 | 100% | 2026-01-16 | 2026-01-16 | PROFIS [76.86 h] |  | PSUAY-CAG-INF-10910 | CONCLUSÃO | CONSAG | YARD 4 ACCESS | CNT |  |
| PSUAY-CAG-INF-10920 |  | Execute Yard 4 Access GP-G15-02 box | 1d | 2025-12-01 A | 2025-12-06 A | PSUAY-CAG-INF-10910 | 100% | 2026-01-19 | 2026-01-19 | PROFIS [76.86 h] |  | PSUAY-CAG-INF-10920 | CONCLUSÃO | CONSAG | YARD 4 ACCESS | CNT |  |
| PSUAY-CAG-INF-10930 |  | Execute Yard 4 Access GP-G15-03 box | 1d | 2025-12-01 A | 2025-12-06 A | PSUAY-CAG-INF-10920 | 100% | 2026-01-20 | 2026-01-20 | PROFIS [76.86 h] |  | PSUAY-CAG-INF-10930 | CONCLUSÃO | CONSAG | YARD 4 ACCESS | CNT |  |
| PSUAY-CAG-INF-10940 |  | Execute Yard 4 Access GP-F15-01 box | 1d | 2025-12-01 A | 2025-12-06 A | PSUAY-CAG-INF-10930 | 100% | 2026-01-21 | 2026-01-21 | PROFIS [76.86 h] |  | PSUAY-CAG-INF-10940 | CONCLUSÃO | CONSAG | YARD 4 ACCESS | CNT |  |
| PSUAY-CAG-INF-10950 |  | Execute Yard 4 Access GP-F15-02 box | 1d | 2025-12-01 A | 2025-12-06 A | PSUAY-CAG-INF-10940 | 100% | 2026-01-22 | 2026-01-22 | PROFIS [76.86 h] |  | PSUAY-CAG-INF-10950 | CONCLUSÃO | CONSAG | YARD 4 ACCESS | CNT |  |
|  | 3 | **DC BOXES - DRAINAGE CONTROL** |  | 2025-12-15 | 2025-12-23 |  |  |  |  |  |  |  |  |  |  |  |  |
| PSUAY-CAG-INF-10960 |  | Execute Yard 4 Access DC-G15-01 box | 1d | 2025-12-15 A | 2025-12-23 A | PSUAY-CAG-INF-10800 | 100% | 2026-01-08 | 2026-01-08 | PROFIS [76.86 h] | UDF_G1 | PSUAY-CAG-INF-10960 | CONCLUSÃO | CONSAG | YARD 4 ACCESS | CNT |  |
|  | 3 | **INFRAESTRUCTURE** |  | 2025-12-01 | 2026-02-19 |  |  |  |  |  |  |  |  |  |  |  |  |
|  | 4 | **SURFACE DRAIN (ECAM)** |  | 2026-01-05 | 2026-01-23 |  |  |  |  |  |  |  |  |  |  |  |  |
| PSUAY-ECM-CIV-10970 |  | Execute surface drain in Yard 4 Access | 14d | 2026-01-05 A | 2026-01-23 A | PSUAY-ECM-INF-10690 | 100% | 2026-01-30 | 2026-02-18 | PROFIS [26273.6 h]; SURFACE DRAIN [700 m] | UDF_G1 | PSUAY-ECM-CIV-10970 | CONCLUSÃO | CONSAG | YARD 4 ACCESS | CNT |  |
|  | 1 | **INFRA LV - LOW VOLTAGE** |  | 2025-12-01 | 2026-01-23 |  |  |  |  |  |  |  |  |  |  |  |  |
| PSUAY-CAG-INF-10980 |  | Execute infra LV from box LV-J01-01 to LV-J01-02 of Yard 4 Access | 2d | 2025-12-01 A | 2025-12-19 A | PSUAY-CAG-INF-10770, PSUAY-CAG-INF-10800 | 100% | 2026-01-05 | 2026-01-06 | PROFIS [4504.05 h] | UDF_G1 | PSUAY-CAG-INF-10980 | CONCLUSÃO | CONSAG | YARD 4 ACCESS | CNT |  |
| PSUAY-CAG-INF-10990 |  | Execute infra LV from box LV-J01-02 to LV-K01-01 of Yard 4 Access | 2d | 2025-12-01 A | 2026-01-23 A | PSUAY-CAG-INF-10980 | 100% | 2026-01-07 | 2026-01-08 | PROFIS [7206.48 h] |  | PSUAY-CAG-INF-10990 | CONCLUSÃO | CONSAG | YARD 4 ACCESS | CNT | OK |
| PSUAY-CAG-INF-11000 |  | Execute infra LV from box LV-J01-02 to LMT of Yard 4 Access | 1d | 2025-12-01 A | 2025-12-06 A | PSUAY-CAG-INF-10990 | 100% | 2026-01-09 | 2026-01-09 | PROFIS [3873.48 h] |  | PSUAY-CAG-INF-11000 | CONCLUSÃO | CONSAG | YARD 4 ACCESS | CNT |  |
| PSUAY-CAG-INF-11030 |  | Execute infra LV from box LV-M02-01 to LV-N03-01 of Yard 4 Access | 3d | 2025-12-01 A | 2025-12-06 A | PSUAY-CAG-INF-11020 | 100% | 2026-01-16 | 2026-01-20 | PROFIS [9728.75 h] |  | PSUAY-CAG-INF-11030 | CONCLUSÃO | CONSAG | YARD 4 ACCESS | CNT | OK |
| PSUAY-CAG-INF-11050 |  | Execute infra LV from box LV-N04-01 to LV-N06-01 of Yard 4 Access | 2d | 2025-12-01 A | 2025-12-06 A | PSUAY-CAG-INF-11040 | 100% | 2026-01-23 | 2026-01-26 | PROFIS [7206.48 h] |  | PSUAY-CAG-INF-11050 | CONCLUSÃO | CONSAG | YARD 4 ACCESS | CNT |  |
| PSUAY-CAG-INF-11080 |  | Execute infra LV from box LV-N09-01 to LV-N10-01 of Yard 4 Access | 3d | 2025-12-01 A | 2026-01-23 A | PSUAY-CAG-INF-11070 | 100% | 2026-02-02 | 2026-02-04 | PROFIS [9908.91 h] |  | PSUAY-CAG-INF-11080 | CONCLUSÃO | CONSAG | YARD 4 ACCESS | CNT |  |
| PSUAY-CAG-INF-11090 |  | Execute infra LV from box LV-N10-01 to LV-N11-01 of Yard 4 Access | 2d | 2025-12-01 A | 2025-12-06 A | PSUAY-CAG-INF-11080 | 100% | 2026-02-05 | 2026-02-06 | PROFIS [7206.48 h] |  | PSUAY-CAG-INF-11090 | CONCLUSÃO | CONSAG | YARD 4 ACCESS | CNT | OK |
| PSUAY-CAG-INF-11100 |  | Execute infra LV from box LV-N11-01 to LV-N11-02 of Yard 4 Access | 2d | 2025-12-01 A | 2025-12-06 A | PSUAY-CAG-INF-11090 | 100% | 2026-02-09 | 2026-02-10 | PROFIS [5945.35 h] |  | PSUAY-CAG-INF-11100 | CONCLUSÃO | CONSAG | YARD 4 ACCESS | CNT |  |
| PSUAY-CAG-INF-11110 |  | Execute infra LV from box LV-N11-02 to LV-N12-01 of Yard 4 Access | 2d | 2025-12-01 A | 2025-12-06 A | PSUAY-CAG-INF-11100 | 100% | 2026-02-11 | 2026-02-12 | PROFIS [7206.48 h] |  | PSUAY-CAG-INF-11110 | CONCLUSÃO | CONSAG | YARD 4 ACCESS | CNT |  |
| PSUAY-CAG-INF-11120 |  | Execute infra LV from box LV-N12-01 to LV-M12-01 of Yard 4 Access | 2d | 2025-12-01 A | 2025-12-06 A | PSUAY-CAG-INF-11110 | 100% | 2026-02-13 | 2026-02-16 | PROFIS [7206.48 h] |  | PSUAY-CAG-INF-11120 | CONCLUSÃO | CONSAG | YARD 4 ACCESS | CNT |  |
| PSUAY-CAG-INF-11130 |  | Execute infra LV from box LV-M12-01 to LV-M13-01 of Yard 4 Access | 2d | 2025-12-01 A | 2025-12-06 A | PSUAY-CAG-INF-11120 | 100% | 2026-02-17 | 2026-02-18 | PROFIS [7206.48 h] |  | PSUAY-CAG-INF-11130 | CONCLUSÃO | CONSAG | YARD 4 ACCESS | CNT |  |
| PSUAY-CAG-INF-11140 |  | Execute infra LV from box LV-M13-01 to LV-L13-02 of Yard 4 Access | 1d | 2025-12-01 A | 2025-12-06 A | PSUAY-CAG-INF-11130 | 100% | 2026-02-19 | 2026-02-19 | PROFIS [3603.24 h] |  | PSUAY-CAG-INF-11140 | CONCLUSÃO | CONSAG | YARD 4 ACCESS | CNT |  |
| PSUAY-CAG-INF-11150 |  | Execute infra LV from box LV-K11-01 to LV-K12-02 of Yard 4 Access | 2d | 2025-12-01 A | 2025-12-06 A | PSUAY-CAG-INF-11140 | 100% | 2026-02-20 | 2026-02-23 | PROFIS [4504.05 h] |  | PSUAY-CAG-INF-11150 | CONCLUSÃO | CONSAG | YARD 4 ACCESS | CNT |  |
| PSUAY-CAG-INF-11010 |  | Execute infra LV from box LV-K01-01 to LV-L02-01 of Yard 4 Access | 2d | 2025-12-18 A | 2025-12-23 A | PSUAY-CAG-INF-11000 | 100% | 2026-01-19 | 2026-01-20 | PROFIS [7206.48 h] |  | PSUAY-CAG-INF-11010 | CONCLUSÃO | CONSAG | YARD 4 ACCESS | CNT |  |
| PSUAY-CAG-INF-11040 |  | Execute infra LV from box LV-N03-01 to LV-N04-01 of Yard 4 Access | 2d | 2025-12-19 A | 2025-12-23 A | PSUAY-CAG-INF-11030 | 100% | 2026-01-23 | 2026-01-26 | PROFIS [7206.48 h] |  | PSUAY-CAG-INF-11040 | CONCLUSÃO | CONSAG | YARD 4 ACCESS | CNT |  |
| PSUAY-CAG-INF-11060 |  | Execute infra LV from box LV-N06-01 to LV-N07-01 of Yard 4 Access | 2d | 2025-12-19 A | 2025-12-23 A | PSUAY-CAG-INF-11050 | 100% | 2026-01-27 | 2026-01-28 | PROFIS [7206.48 h] |  | PSUAY-CAG-INF-11060 | CONCLUSÃO | CONSAG | YARD 4 ACCESS | CNT |  |
| PSUAY-CAG-INF-11070 |  | Execute infra LV from box LV-N07-01 to LV-N08-01 of Yard 4 Access | 2d | 2025-12-19 A | 2025-12-23 A | PSUAY-CAG-INF-11060 | 100% | 2026-01-29 | 2026-01-30 | PROFIS [7206.48 h] |  | PSUAY-CAG-INF-11070 | CONCLUSÃO | CONSAG | YARD 4 ACCESS | CNT |  |
| PSUAY-CAG-INF-11020 |  | Execute infra LV from box LV-L02-01 to LV-M02-01 of Yard 4 Access | 2d | 2026-01-05 A | 2026-01-23 A | PSUAY-CAG-INF-11010 | 100% | 2026-01-15 | 2026-01-16 | PROFIS [7206.48 h] |  | PSUAY-CAG-INF-11020 | CONCLUSÃO | CONSAG | YARD 4 ACCESS | CNT |  |

Notes:
- PSUAY-CAG-INF-10810: Translate: Caixa Ralo - GP-L13-01
- PSUAY-CAG-INF-10820: Translate: Caixa Ralo - GP-K13-01
- PSUAY-CAG-INF-10830: Translate: Caixa Ralo - GP-K13-02
- PSUAY-CAG-INF-10840: Translate: Caixa Ralo - GP-K14-01
- PSUAY-CAG-INF-10850: Translate: Caixa Ralo - GP-J14-01
- PSUAY-CAG-INF-10860: Translate: Caixa Ralo - GP-J14-02
- PSUAY-CAG-INF-10870: Translate: Caixa Ralo - GP-J14-03
- PSUAY-CAG-INF-10880: Translate: Caixa Ralo - GP-H14-01
- PSUAY-CAG-INF-10890: Translate: Caixa Ralo - GP-H14-02
- PSUAY-CAG-INF-10900: Translate: Caixa Ralo - GP-H15-01
- PSUAY-CAG-INF-10910: Translate: Caixa Ralo - GP-G15-01
- PSUAY-CAG-INF-10920: Translate: Caixa Ralo - GP-G15-02
- PSUAY-CAG-INF-10930: Translate: Caixa Ralo - GP-G15-03
- PSUAY-CAG-INF-10940: Translate: Caixa Ralo - GP-F15-01
- PSUAY-CAG-INF-10950: Translate: Caixa Ralo - GP-F15-02
- PSUAY-CAG-INF-10960: Translate: Caixa de Controle de Vazão - DC-G15-01
- PSUAY-ECM-CIV-10970: Translate: Executar drenagem superficial no Acesso ao Pátio 4
- PSUAY-CAG-INF-10980: Translate: Trincheira da caixa elétrica - LV-J01-01 para LV-J01-02
- PSUAY-CAG-INF-10990: Translate: Trincheira da caixa elétrica - LV-J01-02 para LV-K01-01
- PSUAY-CAG-INF-11000: Translate: Trincheira da caixa elétrica - LV-J01-02 para Limite de Bateria
- PSUAY-CAG-INF-11030: Translate: Trincheira entre caixas elétricas - LV-M02-01 para LV-N03-01
- PSUAY-CAG-INF-11050: Translate: Trincheira entre caixas elétricas - LV-N04-01 para LV-N06-01
- PSUAY-CAG-INF-11080: Translate: Trincheira entre caixas elétricas - LV-N09-01 para LV-N10-01
- PSUAY-CAG-INF-11090: Translate: Trincheira entre caixas elétricas - LV-N10-01 para LV-N11-01
- PSUAY-CAG-INF-11100: Translate: Trincheira entre caixas elétricas - LV-N11-02 para LV-N11-02
- PSUAY-CAG-INF-11110: Translate: Trincheira entre caixas elétricas - LV-N12-02 para LV-N12-01
- PSUAY-CAG-INF-11120: Translate: Trincheira entre caixas elétricas - LV-N12-01 para LV-M12-01
- PSUAY-CAG-INF-11130: Translate: Trincheira entre caixas elétricas - LV-M12-01 para LV-M13-01
- PSUAY-CAG-INF-11140: Translate: Trincheira entre caixas elétricas - LV-M13-01 para LV-L13-02
- PSUAY-CAG-INF-11150: Translate: Trincheira entre caixas elétricas - LV-K11-01 para LV-K12-02
- PSUAY-CAG-INF-11010: Translate: Trincheira entre caixas elétricas - LV-K01-01 para LV-L02-01
- PSUAY-CAG-INF-11040: Translate: Trincheira entre caixas elétricas - LV-N03-01 para LV-N04-01
- PSUAY-CAG-INF-11060: Translate: Trincheira entre caixas elétricas - LV-N06-01 para LV-N07-01
- PSUAY-CAG-INF-11070: Translate: Trincheira entre caixas elétricas - LV-N07-01 para LV-N08-01
- PSUAY-CAG-INF-11020: Translate: Trincheira entre caixas elétricas - LV-L02-01 para LV-M02-01

| ID | WBS | Activity | Duration | Start | Finish | Predecessors | Complete | Planned start | Planned finish | Total float | Free float | Resources | Check Pred | ACTIVITY ID COD. | FASES DE ENTREGA | RESPONSÁVEL | ÁREAS | PHASES - YARD | Atualização |
| --- | --- | --- | --- | --- | --- | --- | --- | --- | --- | --- | --- | --- | --- | --- | --- | --- | --- | --- | --- |
|  | 2 | **INFRA GP - DRAINAGE CONTROL** |  | 2025-12-15 | 2026-02-19 |  |  |  |  |  |  |  |  |  |  |  |  |  |  |
| PSUAY-CAG-INF-11160 |  | Execute GP infrastructure from box GP-L13-01 to GP-K13-01 of Yard 4 -Access | 3d | 2025-12-15 A | 2026-01-10 A | PSUAY-CAG-INF-10810, PSUAY-CAG-INF-10960, PSUAY-CAG-INF-11310 FS+6d | 100% | 2026-02-13 | 2026-02-17 |  |  | PROFIS [4504.05 h] | UDF_G1 | PSUAY-CAG-INF-11160 | CONCLUSÃO | CONSAG | YARD 4 ACCESS | CNT |  |
| PSUAY-CAG-INF-11170 |  | Execute GP infrastructure from box GP-K13-01 to GP-K13-02 of Yard 4 -Access | 3d | 2025-12-15 A | 2026-01-10 A | PSUAY-CAG-INF-11160 | 100% | 2026-02-18 | 2026-02-20 |  |  | PROFIS [4504.05 h] |  | PSUAY-CAG-INF-11170 | CONCLUSÃO | CONSAG | YARD 4 ACCESS | CNT |  |
| PSUAY-CAG-INF-11180 |  | Execute GP infrastructure from box GP-K13-02 to GP-K14-01 of Yard 4 -Access | 3d | 2025-12-15 A | 2026-01-17 A | PSUAY-CAG-INF-11170 | 100% | 2026-02-23 | 2026-02-25 |  |  | PROFIS [4504.05 h] |  | PSUAY-CAG-INF-11180 | CONCLUSÃO | CONSAG | YARD 4 ACCESS | CNT |  |
| PSUAY-CAG-INF-11200 |  | Execute GP infrastructure from box GP-J14-01 to GP-J14-02 of Yard 4 -Access | 3d | 2025-12-15 A | 2026-02-19 A | PSUAY-CAG-INF-11190 | 100% | 2026-03-03 | 2026-03-05 |  |  | PROFIS [4504.05 h] |  | PSUAY-CAG-INF-11200 | CONCLUSÃO | CONSAG | YARD 4 ACCESS | CNT |  |
| PSUAY-CAG-INF-11210 |  | Execute GP infrastructure from box GP-J14-02 to GP-J14-03 of Yard 4 -Access | 3d | 2025-12-15 A | 2026-01-17 A | PSUAY-CAG-INF-11200 | 100% | 2026-03-06 | 2026-03-10 |  |  | PROFIS [4504.05 h] |  | PSUAY-CAG-INF-11210 | CONCLUSÃO | CONSAG | YARD 4 ACCESS | CNT |  |
| PSUAY-CAG-INF-11220 |  | Execute GP infrastructure from box GP-H14-01 to GP-H14-02 of Yard 4 -Access | 2d | 2025-12-15 A | 2026-01-17 A | PSUAY-CAG-INF-11210 | 100% | 2026-03-11 | 2026-03-12 |  |  | PROFIS [2522.27 h] |  | PSUAY-CAG-INF-11220 | CONCLUSÃO | CONSAG | YARD 4 ACCESS | CNT |  |
| PSUAY-CAG-INF-11230 |  | Execute GP infrastructure from box GP-H14-02 to GP-H15-01 of Yard 4 -Access | 2d | 2026-01-05 A | 2026-01-17 A | PSUAY-CAG-INF-11220 | 100% | 2026-03-13 | 2026-03-16 |  |  | PROFIS [3693.32 h] |  | PSUAY-CAG-INF-11230 | CONCLUSÃO | CONSAG | YARD 4 ACCESS | CNT |  |
| PSUAY-CAG-INF-11240 |  | Execute GP infrastructure from box GP-H15-01 to GP-G15-01 of Yard 4 -Access | 3d | 2026-01-05 A | 2026-01-17 A | PSUAY-CAG-INF-11230 | 100% | 2026-03-17 | 2026-03-19 |  |  | PROFIS [4504.05 h] |  | PSUAY-CAG-INF-11240 | CONCLUSÃO | CONSAG | YARD 4 ACCESS | CNT |  |
| PSUAY-CAG-INF-11250 |  | Execute GP infrastructure from box GP-G15-01 to GP-G15-02 of Yard 4 -Access | 3d | 2026-01-05 A | 2026-01-17 A | PSUAY-CAG-INF-11240 | 100% | 2026-03-20 | 2026-03-24 |  |  | PROFIS [4504.05 h] |  | PSUAY-CAG-INF-11250 | CONCLUSÃO | CONSAG | YARD 4 ACCESS | CNT |  |
| PSUAY-CAG-INF-11190 |  | Execute GP infrastructure from box GP-K13-02 to GP-J14-01 of Yard 4 -Access | 3d | 2026-01-12 A | 2026-01-17 A | PSUAY-CAG-INF-11180 | 100% | 2026-02-26 | 2026-03-02 |  |  | PROFIS [4504.05 h] |  | PSUAY-CAG-INF-11190 | CONCLUSÃO | CONSAG | YARD 4 ACCESS | CNT |  |
| PSUAY-CAG-INF-11260 |  | Execute GP infrastructure from box GP-G15-02 to GP-G15-03 of Yard 4 -Access | 3d | 2026-01-19 A | 2026-01-23 A | PSUAY-CAG-INF-11250 FF | 100% | 2026-02-04 | 2026-02-06 |  |  | PROFIS [4504.05 h] |  | PSUAY-CAG-INF-11260 | CONCLUSÃO | CONSAG | YARD 4 ACCESS | CNT | OK |
| PSUAY-CAG-INF-11270 |  | Execute GP infrastructure from box GP-G15-03 to GP-F15-01 of Yard 4 -Access | 3d | 2026-01-19 A | 2026-01-23 A | PSUAY-CAG-INF-11260 FF | 100% | 2026-02-04 | 2026-02-06 |  |  | PROFIS [4504.05 h] |  | PSUAY-CAG-INF-11270 | CONCLUSÃO | CONSAG | YARD 4 ACCESS | CNT | OK |
| PSUAY-CAG-INF-11280 |  | Execute GP infrastructure from box GP-F15-01 to GP-F15-02 of Yard 4 -Access | 3d | 2026-01-19 A | 2026-01-23 A | PSUAY-CAG-INF-11270 FF | 100% | 2026-02-04 | 2026-02-06 |  |  | PROFIS [4504.05 h] |  | PSUAY-CAG-INF-11280 | CONCLUSÃO | CONSAG | YARD 4 ACCESS | CNT | OK |
|  | 3 | **INFRA SW - STORMWATER** |  | 2025-12-19 | 2026-01-23 |  |  |  |  |  |  |  |  |  |  |  |  |  |  |
| PSUAY-CAG-INF-11300 |  | Execute the SW infrastructure from the box DC-K14-01 to LTM of Yard 4 -Access | 3d | 2025-12-19 A | 2025-12-23 A | PSUAY-CAG-INF-11290 | 100% | 2026-02-05 | 2026-02-09 |  |  | PROFIS [4053.65 h] |  | PSUAY-CAG-INF-11300 | CONCLUSÃO | CONSAG | YARD 4 ACCESS | CNT |  |
| PSUAY-CAG-INF-11290 |  | Execute the SW infrastructure from the box DC-K14-01 to DC-G15-01 of Yard 4 -Access | 14d | 2026-01-05 A | 2026-01-10 A | PSUAY-CAG-INF-10960 | 100% | 2026-01-13 | 2026-01-30 |  |  | PROFIS [27024.3 h] | UDF_G1 | PSUAY-CAG-INF-11290 | CONCLUSÃO | CONSAG | YARD 4 ACCESS | CNT |  |
| PSUAY-CAG-INF-11310 |  | Execute the SW infrastructure from the box DC-G15-01 to LTM of Yard 4 -Access | 3d | 2026-01-19 A | 2026-01-23 A | PSUAY-CAG-INF-11300 | 100% | 2026-01-27 | 2026-01-29 |  |  | PROFIS [4053.65 h] |  | PSUAY-CAG-INF-11310 | CONCLUSÃO | CONSAG | YARD 4 ACCESS | CNT | OK |
|  | 4 | **STRUCTURE** |  | 2026-01-26 | 2026-03-06 |  |  |  |  |  |  |  |  |  |  |  |  |  |  |
|  | 2 | **CABLE RACK** |  | 2026-01-26 | 2026-03-06 |  |  |  |  |  |  |  |  |  |  |  |  |  |  |
|  | 1 | **BASE FOUNDATION** |  | 2026-01-26 | 2026-02-27 |  |  |  |  |  |  |  |  |  |  |  |  |  |  |
| PSUAY-CAG-CIV-11320 |  | Execute base foundation for cable rack in Yard 4 Access | 25d | 2026-01-26 | 2026-02-27 | PSUAY-MIL-GER-1450 FS+30d |  |  |  | 29d | 0d | PROFIS [49544.6 h] |  | PSUAY-CAG-CIV-11320 | CONCLUSÃO | CONSAG | YARD 4 ACCESS | CNT |  |
|  | 2 | **METAL STRUCTURE** |  | 2026-01-26 | 2026-03-06 |  |  |  |  |  |  |  |  |  |  |  |  |  |  |
| PSUAY-CAG-INF-11330 |  | Execute metal sctructure for cable rack in Yard 4 Access | 30d | 2026-01-26 | 2026-03-06 | PSUAY-CAG-CIV-11320 FF+5d |  |  |  | 29d | 0d | PROFIS [59453.5 h] |  | PSUAY-CAG-INF-11330 | CONCLUSÃO | CONSAG | YARD 4 ACCESS | CNT |  |

Notes:
- PSUAY-CAG-INF-11160: Translate: Trincheira entre caixas de drenagem - GP-L13-01 para GP-K13-01
- PSUAY-CAG-INF-11170: Translate: Trincheira entre caixas de drenagem - GP-K13-01 para GP-K13-02
- PSUAY-CAG-INF-11180: Translate: Trincheira entre caixas de drenagem - GP-K13-02 para GP-K14-01
- PSUAY-CAG-INF-11200: Translate: Trincheira entre caixas de drenagem - GP-J14-01 para GP-J14-02
- PSUAY-CAG-INF-11210: Translate: Trincheira entre caixas de drenagem - GP-J14-02 para GP-J14-03
- PSUAY-CAG-INF-11220: Translate: Trincheira entre caixas de drenagem - GP-H14-01 para GP-H14-02
- PSUAY-CAG-INF-11230: Translate: Trincheira entre caixas de drenagem - GP-H14-02 para GP-H15-01
- PSUAY-CAG-INF-11240: Translate: Trincheira entre caixas de drenagem - GP-H15-0 para GP-G15-0
- PSUAY-CAG-INF-11250: Translate: Trincheira entre caixas de drenagem - GP-G15-0 para GP-G15-0
- PSUAY-CAG-INF-11190: Translate: Trincheira entre caixas de drenagem - GP-K13-02 para GP-J14-01
- PSUAY-CAG-INF-11260: Translate: Trincheira entre caixas de drenagem - GP-G15-0 para GP-G15-0
- PSUAY-CAG-INF-11270: Translate: Trincheira entre caixas de drenagem - GP-G15-0 para GP-F15-0
- PSUAY-CAG-INF-11280: Translate: Trincheira entre caixas de drenagem - GP-F15-0 para GP-F15-0
- PSUAY-CAG-INF-11300: Translate: Execute a infraestrutura SW da caixa DC-K14-01 até o LTM do Pátio 4 - Acesso
- PSUAY-CAG-INF-11290: Translate: Execute a infraestrutura SW da caixa DC-K14-01 até DC-G15-01 do pátio 4 - Acesso
- PSUAY-CAG-INF-11310: Translate: Execute a infraestrutura de software do quadro DC-G15-01 até o LTM do Pátio 4 - Acesso
- PSUAY-CAG-CIV-11320: Translate: Execute a fundação base para o rack de cabos no Pátio 4 Acesso
- PSUAY-CAG-INF-11330: Translate: Executar estrutura metálica para suporte de cabos no Pátio 4 Acesso

| ID | WBS | Activity | Duration | Start | Finish | Predecessors | Complete | Remaining | Planned start | Planned finish | Total float | Free float | Calendar | Resources | Atualização | Translate | Check Pred | ACTIVITY ID COD. | FASES DE ENTREGA | RESPONSÁVEL | ÁREAS | PHASES - YARD |
| --- | --- | --- | --- | --- | --- | --- | --- | --- | --- | --- | --- | --- | --- | --- | --- | --- | --- | --- | --- | --- | --- | --- |
|  | 5 | **TOWERS** |  | 2026-01-19 | 2026-03-31 |  |  |  |  |  |  |  |  |  |  |  |  |  |  |  |  |  |
|  | 1 | **STREET LIGHT** |  | 2026-01-19 | 2026-03-31 |  |  |  |  |  |  |  |  |  |  |  |  |  |  |  |  |  |
|  | 1 | **BASE FOUNDATION** |  | 2026-01-19 | 2026-02-20 |  |  |  |  |  |  |  |  |  |  |  |  |  |  |  |  |  |
| PSUAY-CAG-CIV-11340 |  | Execute base foundation for SL post in Yard 4 Access | 27d | 2026-01-19 A | 2026-02-20 | PSUAY-MIL-GER-1450 FS+10d | 40% | 20d | 2026-01-19 | 2026-02-24 | 27d | 13d |  | PROFIS [236463 h] | OK | Executar a fundação das bases dos postes de Iluminação | UDF_G1 | PSUAY-CAG-CIV-11340 | CONCLUSÃO | CONSAG | YARD 4 ACCESS | CNT |
|  | 2 | **ASSEMBLY** |  | 2026-02-12 | 2026-03-30 |  |  |  |  |  |  |  |  |  |  |  |  |  |  |  |  |  |
| PSUAY-LZE-ELE-11350 |  | SL-J01-01 - CCTV - POST | 1d | 2026-02-12 | 2026-02-12 | PSUAY-CAG-CIV-11340 SS, PSUAY-LZE-ELE-7090 |  |  |  |  | 14d | 0d | PSUAY - ELETROMEC - 1T - SEM HE | PROFIS [9908.91 h]; POST STREET LIGHTING [42 un] |  | Executar a montagem dos postes de iluminação | UDF_G1 | PSUAY-LZE-ELE-11350 | ALFANDEGAMENTO | LUZVILLE | YARD 4 ACCESS | CNT |
| PSUAY-LZE-ELE-11360 |  | SL-J01-01 - CCTV - PANEL | 1d | 2026-02-12 | 2026-02-12 | PSUAY-LZE-ELE-11350 SS |  |  |  |  | 14d | 0d | PSUAY - ELETROMEC - 1T - SEM HE | PROFIS [9908.91 h] |  | Executar a montagem dos painéis dos postes de iluminação |  | PSUAY-LZE-ELE-11360 | ALFANDEGAMENTO | LUZVILLE | YARD 4 ACCESS | CNT |
| PSUAY-LZE-GER-9000 |  | SL-J14-01 - CCTV - POST | 1d | 2026-02-13 | 2026-02-13 | PSUAY-LZE-ELE-11360 |  |  |  |  | 34d | 0d |  |  |  |  |  |  | ALFANDEGAMENTO | LUZVILLE |  | CNT |
| PSUAY-LZE-GER-9010 |  | SL-J14-01 - CCTV - PANEL | 1d | 2026-02-13 | 2026-02-13 | PSUAY-LZE-GER-9000 SS |  |  |  |  | 34d | 0d |  |  |  |  |  |  | ALFANDEGAMENTO | LUZVILLE |  | CNT |
| PSUAY-LZE-GER-9020 |  | SL-K01-01 - CCTV - POST | 1d | 2026-02-16 | 2026-02-16 | PSUAY-LZE-GER-9010 |  |  |  |  | 34d | 0d |  |  |  |  |  |  | ALFANDEGAMENTO | LUZVILLE |  | CNT |
| PSUAY-LZE-GER-9030 |  | SL-K01-01 - CCTV - PANEL | 1d | 2026-02-16 | 2026-02-16 | PSUAY-LZE-GER-9020 SS |  |  |  |  | 34d | 0d |  |  |  |  |  |  | ALFANDEGAMENTO | LUZVILLE |  | CNT |
| PSUAY-LZE-GER-9040 |  | SL-K13-01 - CCTV - POST | 1d | 2026-02-17 | 2026-02-17 | PSUAY-LZE-GER-9030 |  |  |  |  | 34d | 0d |  |  |  |  |  |  | ALFANDEGAMENTO | LUZVILLE |  | CNT |
| PSUAY-LZE-GER-9050 |  | SL-K13-01 - CCTV - PANEL | 1d | 2026-02-17 | 2026-02-17 | PSUAY-LZE-GER-9040 SS |  |  |  |  | 34d | 0d |  |  |  |  |  |  | ALFANDEGAMENTO | LUZVILLE |  | CNT |
| PSUAY-LZE-GER-9060 |  | SL-L13-04 - CCTV - POST | 1d | 2026-02-18 | 2026-02-18 | PSUAY-LZE-GER-9050 |  |  |  |  | 34d | 0d |  |  |  |  |  |  | ALFANDEGAMENTO | LUZVILLE |  | CNT |
| PSUAY-LZE-GER-9070 |  | SL-L13-04 - CCTV - PANEL | 1d | 2026-02-18 | 2026-02-18 | PSUAY-LZE-GER-9060 SS |  |  |  |  | 34d | 0d |  |  |  |  |  |  | ALFANDEGAMENTO | LUZVILLE |  | CNT |
| PSUAY-LZE-GER-9080 |  | SL-M02-01 - CCTV - POST | 1d | 2026-02-19 | 2026-02-19 | PSUAY-LZE-GER-9070 |  |  |  |  | 34d | 0d |  |  |  |  |  |  | ALFANDEGAMENTO | LUZVILLE |  | CNT |
| PSUAY-LZE-GER-9090 |  | SL-M02-01 - CCTV - PANEL | 1d | 2026-02-19 | 2026-02-19 | PSUAY-LZE-GER-9080 SS |  |  |  |  | 34d | 0d |  |  |  |  |  |  | ALFANDEGAMENTO | LUZVILLE |  | CNT |
| PSUAY-LZE-GER-9100 |  | SL-M12-01 - CCTV - POST | 1d | 2026-02-20 | 2026-02-20 | PSUAY-LZE-GER-9090 |  |  |  |  | 34d | 0d |  |  |  |  |  |  | ALFANDEGAMENTO | LUZVILLE |  | CNT |
| PSUAY-LZE-GER-9120 |  | SL-M12-01 - CCTV - PANEL | 1d | 2026-02-20 | 2026-02-20 | PSUAY-LZE-GER-9100 SS |  |  |  |  | 34d | 0d |  |  |  |  |  |  | ALFANDEGAMENTO | LUZVILLE |  | CNT |
| PSUAY-LZE-GER-9130 |  | SL-N03-01 - CCTV - POST | 1d | 2026-02-23 | 2026-02-23 | PSUAY-LZE-GER-9120 |  |  |  |  | 34d | 0d |  |  |  |  |  |  | ALFANDEGAMENTO | LUZVILLE |  | CNT |
| PSUAY-LZE-GER-9140 |  | SL-N03-01 - CCTV - PANEL | 1d | 2026-02-23 | 2026-02-23 | PSUAY-LZE-GER-9130 SS |  |  |  |  | 34d | 0d |  |  |  |  |  |  | ALFANDEGAMENTO | LUZVILLE |  | CNT |
| PSUAY-LZE-GER-9150 |  | SL-N06-01 - CCTV - POST | 1d | 2026-02-24 | 2026-02-24 | PSUAY-LZE-GER-9140 |  |  |  |  | 34d | 0d |  |  |  |  |  |  | ALFANDEGAMENTO | LUZVILLE |  | CNT |
| PSUAY-LZE-GER-9160 |  | SL-N06-01 - CCTV - PANEL | 1d | 2026-02-24 | 2026-02-24 | PSUAY-LZE-GER-9150 SS |  |  |  |  | 34d | 0d |  |  |  |  |  |  | ALFANDEGAMENTO | LUZVILLE |  | CNT |
| PSUAY-LZE-GER-9170 |  | SL-N07-01 - CCTV - POST | 1d | 2026-02-25 | 2026-02-25 | PSUAY-LZE-GER-9160 |  |  |  |  | 34d | 0d |  |  |  |  |  |  | ALFANDEGAMENTO | LUZVILLE |  | CNT |
| PSUAY-LZE-GER-9180 |  | SL-N07-01 - CCTV - PANEL | 1d | 2026-02-25 | 2026-02-25 | PSUAY-LZE-GER-9170 SS |  |  |  |  | 34d | 0d |  |  |  |  |  |  | ALFANDEGAMENTO | LUZVILLE |  | CNT |
| PSUAY-LZE-GER-9190 |  | SL-N09-01 - CCTV - POST | 1d | 2026-02-26 | 2026-02-26 | PSUAY-LZE-GER-9180 |  |  |  |  | 34d | 0d |  |  |  |  |  |  | ALFANDEGAMENTO | LUZVILLE |  | CNT |
| PSUAY-LZE-GER-9200 |  | SL-N09-01 - CCTV - PANEL | 1d | 2026-02-26 | 2026-02-26 | PSUAY-LZE-GER-9190 SS |  |  |  |  | 34d | 0d |  |  |  |  |  |  | ALFANDEGAMENTO | LUZVILLE |  | CNT |
| PSUAY-LZE-GER-9210 |  | SL-N10-01 - CCTV - POST | 1d | 2026-02-27 | 2026-02-27 | PSUAY-LZE-GER-9200 |  |  |  |  | 34d | 0d |  |  |  |  |  |  | ALFANDEGAMENTO | LUZVILLE |  | CNT |
| PSUAY-LZE-GER-9220 |  | SL-N10-01 - CCTV - PANEL | 1d | 2026-02-27 | 2026-02-27 | PSUAY-LZE-GER-9210 SS |  |  |  |  | 34d | 0d |  |  |  |  |  |  | ALFANDEGAMENTO | LUZVILLE |  | CNT |
| PSUAY-LZE-GER-9330 |  | SL-N04-01 - CCTV - POST | 1d | 2026-03-02 | 2026-03-02 | PSUAY-LZE-GER-9340 SS |  |  |  |  | 34d | 0d |  |  |  |  |  |  | ALFANDEGAMENTO | LUZVILLE |  | CNT |
| PSUAY-LZE-GER-9340 |  | SL-N04-01 - PANEL | 1d | 2026-03-02 | 2026-03-02 | PSUAY-LZE-GER-9220 |  |  |  |  | 34d | 0d |  |  |  |  |  |  | CONCLUSÃO | LUZVILLE |  | CNT |
| PSUAY-LZE-GER-9310 |  | SL-L02-01 - CCTV - POST | 1d | 2026-03-03 | 2026-03-03 | PSUAY-LZE-GER-9320 SS |  |  |  |  | 34d | 0d |  |  |  |  |  |  | ALFANDEGAMENTO | LUZVILLE |  | CNT |
| PSUAY-LZE-GER-9320 |  | SL-L02-01 - PANEL | 1d | 2026-03-03 | 2026-03-03 | PSUAY-LZE-GER-9330 |  |  |  |  | 34d | 0d |  |  |  |  |  |  | CONCLUSÃO | LUZVILLE |  | CNT |
| PSUAY-LZE-GER-9290 |  | SL-K12-01 - CCTV - POST | 1d | 2026-03-04 | 2026-03-04 | PSUAY-LZE-GER-9300 SS |  |  |  |  | 34d | 0d |  |  |  |  |  |  | ALFANDEGAMENTO | LUZVILLE |  | CNT |
| PSUAY-LZE-GER-9300 |  | SL-K12-01 - PANEL | 1d | 2026-03-04 | 2026-03-04 | PSUAY-LZE-GER-9310 |  |  |  |  | 34d | 0d |  |  |  |  |  |  | CONCLUSÃO | LUZVILLE |  | CNT |
| PSUAY-LZE-GER-9270 |  | SL-K11-01 - CCTV - POST | 1d | 2026-03-05 | 2026-03-05 | PSUAY-LZE-GER-9280 SS |  |  |  |  | 34d | 0d |  |  |  |  |  |  | ALFANDEGAMENTO | LUZVILLE |  | CNT |
| PSUAY-LZE-GER-9280 |  | SL-K11-01 - PANEL | 1d | 2026-03-05 | 2026-03-05 | PSUAY-LZE-GER-9290 |  |  |  |  | 34d | 0d |  |  |  |  |  |  | CONCLUSÃO | LUZVILLE |  | CNT |
| PSUAY-LZE-GER-9250 |  | SL-J11-01 - CCTV - POST | 1d | 2026-03-06 | 2026-03-06 | PSUAY-LZE-GER-9260 SS |  |  |  |  | 34d | 0d |  |  |  |  |  |  | ALFANDEGAMENTO | LUZVILLE |  | CNT |
| PSUAY-LZE-GER-9260 |  | SL-J11-01 - PANEL | 1d | 2026-03-06 | 2026-03-06 | PSUAY-LZE-GER-9270 |  |  |  |  | 34d | 0d |  |  |  |  |  |  | CONCLUSÃO | LUZVILLE |  | CNT |
| PSUAY-LZE-GER-9240 |  | SL-J10-03 - PANEL | 1d | 2026-03-09 | 2026-03-09 | PSUAY-LZE-GER-9250 |  |  |  |  | 34d | 0d |  |  |  |  |  |  | CONCLUSÃO | LUZVILLE |  | CNT |
| PSUAY-LZE-GER-9230 |  | SL-J10-03 - CCTV - POST | 1d | 2026-03-10 | 2026-03-10 | PSUAY-LZE-GER-9240 |  |  |  |  | 34d | 0d |  |  |  |  |  |  | ALFANDEGAMENTO | LUZVILLE |  | CNT |
| PSUAY-LZE-GER-9490 |  | SL-G15-03 - POST | 1d | 2026-03-11 | 2026-03-11 | PSUAY-LZE-GER-9230 |  |  |  |  | 34d | 0d |  |  |  |  |  |  | CONCLUSÃO | LUZVILLE |  | CNT |
| PSUAY-LZE-GER-9480 |  | SL-G15-02 - POST | 1d | 2026-03-12 | 2026-03-12 | PSUAY-LZE-GER-9490 |  |  |  |  | 34d | 0d |  |  |  |  |  |  | CONCLUSÃO | LUZVILLE |  | CNT |
| PSUAY-LZE-GER-9470 |  | SL-G15-01 - POST | 1d | 2026-03-13 | 2026-03-13 | PSUAY-LZE-GER-9480 |  |  |  |  | 34d | 0d |  |  |  |  |  |  | CONCLUSÃO | LUZVILLE |  | CNT |
| PSUAY-LZE-GER-9460 |  | SL-F15-01 - POST | 1d | 2026-03-16 | 2026-03-16 | PSUAY-LZE-GER-9470 |  |  |  |  | 34d | 0d |  |  |  |  |  |  | CONCLUSÃO | LUZVILLE |  | CNT |
| PSUAY-LZE-GER-9450 |  | SL-J14-02 - CCTV - POST | 1d | 2026-03-17 | 2026-03-17 | PSUAY-LZE-GER-9460 |  |  |  |  | 34d | 0d |  |  |  |  |  |  | ALFANDEGAMENTO | LUZVILLE |  | CNT |
| PSUAY-LZE-GER-9440 |  | SL-J11-02 - CCTV - POST | 1d | 2026-03-18 | 2026-03-18 | PSUAY-LZE-GER-9450 |  |  |  |  | 34d | 0d |  |  |  |  |  |  | ALFANDEGAMENTO | LUZVILLE |  | CNT |
| PSUAY-LZE-GER-9430 |  | SL-J10-02 - CCTV - POST | 1d | 2026-03-19 | 2026-03-19 | PSUAY-LZE-GER-9440 |  |  |  |  | 34d | 0d |  |  |  |  |  |  | ALFANDEGAMENTO | LUZVILLE |  | CNT |
| PSUAY-LZE-GER-9420 |  | SL-CT-H10-01 - PANEL | 1d | 2026-03-20 | 2026-03-20 | PSUAY-LZE-GER-9430 |  |  |  |  | 34d | 0d |  |  |  |  |  |  | CONCLUSÃO | LUZVILLE |  | CNT |
| PSUAY-LZE-GER-9350 |  | SL-N08-01 - CCTV - POST | 1d | 2026-03-23 | 2026-03-23 | PSUAY-LZE-GER-9360 SS |  |  |  |  | 34d | 0d |  |  |  |  |  |  | ALFANDEGAMENTO | LUZVILLE |  | CNT |
| PSUAY-LZE-GER-9360 |  | SL-N08-01 - PANEL | 1d | 2026-03-23 | 2026-03-23 | PSUAY-LZE-GER-9370 SS |  |  |  |  | 34d | 0d |  |  |  |  |  |  | CONCLUSÃO | LUZVILLE |  | CNT |
| PSUAY-LZE-GER-9370 |  | SL-N11-01 - CCTV - POST | 1d | 2026-03-23 | 2026-03-23 | PSUAY-LZE-GER-9380 SS |  |  |  |  | 34d | 0d |  |  |  |  |  |  | ALFANDEGAMENTO | LUZVILLE |  | CNT |
| PSUAY-LZE-GER-9380 |  | SL-N11-01 - CCTV - PANEL | 1d | 2026-03-23 | 2026-03-23 | PSUAY-LZE-GER-9390 SS |  |  |  |  | 34d | 0d |  |  |  |  |  |  | ALFANDEGAMENTO | LUZVILLE |  | CNT |
| PSUAY-LZE-GER-9390 |  | SL-J14-03 - CCTV - POST | 1d | 2026-03-23 | 2026-03-23 | PSUAY-LZE-GER-9400 SS |  |  |  |  | 34d | 0d |  |  |  |  |  |  | ALFANDEGAMENTO | LUZVILLE |  | CNT |
| PSUAY-LZE-GER-9400 |  | SL-J14-03 - PANEL | 1d | 2026-03-23 | 2026-03-23 | PSUAY-LZE-GER-9410 SS |  |  |  |  | 34d | 0d |  |  |  |  |  |  | CONCLUSÃO | LUZVILLE |  | CNT |
| PSUAY-LZE-GER-9410 |  | SL-N10-02 - PANEL | 1d | 2026-03-23 | 2026-03-23 | PSUAY-LZE-GER-9420 |  |  |  |  | 34d | 0d |  |  |  |  |  |  | CONCLUSÃO | LUZVILLE |  | CNT |
| PSUAY-LZE-GER-9590 |  | SL-L13-02 - POST | 1d | 2026-03-23 | 2026-03-23 | PSUAY-LZE-GER-9600 SS |  |  |  |  | 34d | 0d |  |  |  |  |  |  | CONCLUSÃO | LUZVILLE |  | CNT |
| PSUAY-LZE-GER-9600 |  | SL-L13-03 - POST | 1d | 2026-03-23 | 2026-03-23 | PSUAY-LZE-GER-9610 SS |  |  |  |  | 34d | 0d |  |  |  |  |  |  | CONCLUSÃO | LUZVILLE |  | CNT |
| PSUAY-LZE-GER-9610 |  | SL-M13-01 - POST | 1d | 2026-03-23 | 2026-03-23 | PSUAY-LZE-GER-9620 SS |  |  |  |  | 34d | 0d |  |  |  |  |  |  | CONCLUSÃO | LUZVILLE |  | CNT |
| PSUAY-LZE-GER-9620 |  | SL-N04-01 - POST | 1d | 2026-03-23 | 2026-03-23 | PSUAY-LZE-GER-9640 SS |  |  |  |  | 34d | 0d |  |  |  |  |  |  | CONCLUSÃO | LUZVILLE |  | CNT |
| PSUAY-LZE-GER-9630 |  | SL-N11-02 - POST | 1d | 2026-03-23 | 2026-03-23 | PSUAY-LZE-GER-9350 SS |  |  |  |  | 34d | 0d |  |  |  |  |  |  | CONCLUSÃO | LUZVILLE |  | CNT |
| PSUAY-LZE-GER-9640 |  | SL-N12-01 - POST | 1d | 2026-03-23 | 2026-03-23 | PSUAY-LZE-GER-9630 SS |  |  |  |  | 34d | 0d |  |  |  |  |  |  | CONCLUSÃO | LUZVILLE |  | CNT |
| PSUAY-LZE-GER-9570 |  | SL-L12-01 - POST | 1d | 2026-03-24 | 2026-03-24 | PSUAY-LZE-GER-9580 SS |  |  |  |  | 34d | 0d |  |  |  |  |  |  | CONCLUSÃO | LUZVILLE |  | CNT |
| PSUAY-LZE-GER-9580 |  | SL-L13-01 - POST | 1d | 2026-03-24 | 2026-03-24 | PSUAY-LZE-GER-9590 |  |  |  |  | 34d | 0d |  |  |  |  |  |  | CONCLUSÃO | LUZVILLE |  | CNT |
| PSUAY-LZE-GER-9550 |  | SL-K14-01 - POST | 1d | 2026-03-25 | 2026-03-25 | PSUAY-LZE-GER-9560 SS |  |  |  |  | 34d | 0d |  |  |  |  |  |  | CONCLUSÃO | LUZVILLE |  | CNT |
| PSUAY-LZE-GER-9560 |  | SL-K14-02 - POST | 1d | 2026-03-25 | 2026-03-25 | PSUAY-LZE-GER-9570 |  |  |  |  | 34d | 0d |  |  |  |  |  |  | CONCLUSÃO | LUZVILLE |  | CNT |
| PSUAY-LZE-GER-9530 |  | SL-H15-02 - POST | 1d | 2026-03-26 | 2026-03-26 | PSUAY-LZE-GER-9540 SS |  |  |  |  | 34d | 0d |  |  |  |  |  |  | CONCLUSÃO | LUZVILLE |  | CNT |
| PSUAY-LZE-GER-9540 |  | SL-J10-01 - POST | 1d | 2026-03-26 | 2026-03-26 | PSUAY-LZE-GER-9550 |  |  |  |  | 34d | 0d |  |  |  |  |  |  | CONCLUSÃO | LUZVILLE |  | CNT |
| PSUAY-LZE-GER-9510 |  | SL-H14-02 - POST | 1d | 2026-03-27 | 2026-03-27 | PSUAY-LZE-GER-9520 SS |  |  |  |  | 34d | 0d |  |  |  |  |  |  | CONCLUSÃO | LUZVILLE |  | CNT |
| PSUAY-LZE-GER-9520 |  | SL-H15-01 - POST | 1d | 2026-03-27 | 2026-03-27 | PSUAY-LZE-GER-9530 |  |  |  |  | 34d | 0d |  |  |  |  |  |  | CONCLUSÃO | LUZVILLE |  | CNT |

| ID | WBS | Activity | Duration | Start | Finish | Predecessors | Total float | Free float | Calendar | Resources | FASES DE ENTREGA | RESPONSÁVEL | PHASES - YARD | ACTIVITY ID COD. | ÁREAS | Check Pred | SERVIÇOS |
| --- | --- | --- | --- | --- | --- | --- | --- | --- | --- | --- | --- | --- | --- | --- | --- | --- | --- |
| PSUAY-LZE-GER-9500 |  | SL-H14-01 - POST | 1d | 2026-03-30 | 2026-03-30 | PSUAY-LZE-GER-9510 | 34d |  |  |  | CONCLUSÃO | LUZVILLE | CNT |  |  |  |  |
|  | 3 | **CABLE PULLING** |  | 2026-02-17 | 2026-03-31 |  |  |  |  |  |  |  |  |  |  |  |  |
| PSUAY-LZE-ELE-11370 |  | Execute BT Cable Pulling for SL posts in Yard 4 Access | 29d | 2026-02-17 | 2026-03-27 | PSUAY-LZE-ELE-11360 SS+3d, PSUAY-CAG-INF-11330 FF | 14d | 0d | PSUAY - ELETROMEC - 1T - SEM HE | PROFIS [56086.7 h]; CABLE LOW VOLTAGE [14943 m] | CONCLUSÃO | LUZVILLE | CNT | PSUAY-LZE-ELE-11370 | YARD 4 ACCESS |  |  |
| PSUAY-LZE-ELE-11380 |  | Execute Cable Preparation and Termination | 5d | 2026-03-24 | 2026-03-30 | PSUAY-LZE-ELE-11370 FF+1d, PSUAY-CAG-INF-11150 FF | 14d | 0d | PSUAY - ELETROMEC - 1T - SEM HE | PROFIS [9908.91 h] | CONCLUSÃO | LUZVILLE | CNT | PSUAY-LZE-ELE-11380 | YARD 4 ACCESS |  |  |
| PSUAY-LZE-ELE-11390 |  | Execute Cable Connectorization | 5d | 2026-03-25 | 2026-03-31 | PSUAY-LZE-ELE-11380 FF+1d | 14d |  | PSUAY - ELETROMEC - 1T - SEM HE | PROFIS [9908.91 h] | CONCLUSÃO | LUZVILLE | CNT | PSUAY-LZE-ELE-11390 | YARD 4 ACCESS |  |  |
|  | 4 | **OPTIC FIBER - SL/CCTV-FEC** |  | 2026-02-27 | 2026-03-30 |  |  |  |  |  |  |  |  |  |  |  |  |
| PSUAY-LZE-ELE-11400 |  | Execute Fiber Optic Cable Pulling, Fusion, and Connectorization (loop 1) in Yard 4 Access | 9d | 2026-02-27 | 2026-03-11 | PSUAY-LZE-ELE-11370 SS+8d | 15d | 0d |  | PROFIS [15909 h]; CABLE FIBER OPTICS [2967 m] | CONCLUSÃO | LUZVILLE | CNT | PSUAY-LZE-ELE-11400 | YARD 4 ACCESS |  |  |
| PSUAY-LZE-ELE-11410 |  | Execute Fiber Optic Cable Pulling, Fusion, and Connectorization (loop 2) in Yard 4 Access | 5d | 2026-03-04 | 2026-03-10 | PSUAY-LZE-ELE-11400 SS+3d | 15d | 0d |  | PROFIS [9388.8 h]; CABLE FIBER OPTICS [1751 m] | CONCLUSÃO | LUZVILLE | CNT | PSUAY-LZE-ELE-11410 | YARD 4 ACCESS |  |  |
| PSUAY-LZE-ELE-11420 |  | Execute Fiber Optic Cable Pulling, Fusion, and Connectorization (loop 3) in Yard 4 Access | 7d | 2026-03-09 | 2026-03-17 | PSUAY-LZE-ELE-11410 SS+3d | 15d | 0d |  | PROFIS [12123.4 h]; CABLE FIBER OPTICS [2261 m] | CONCLUSÃO | LUZVILLE | CNT | PSUAY-LZE-ELE-11420 | YARD 4 ACCESS |  |  |
| PSUAY-LZE-ELE-11430 |  | Execute Fiber Optic Cable Pulling, Fusion, and Connectorization (loop 4) in Yard 4 Access | 6d | 2026-03-12 | 2026-03-19 | PSUAY-LZE-ELE-11420 SS+3d | 15d | 0d |  | PROFIS [11506.8 h]; CABLE FIBER OPTICS [2146 m] | CONCLUSÃO | LUZVILLE | CNT | PSUAY-LZE-ELE-11430 | YARD 4 ACCESS |  |  |
| PSUAY-LZE-ELE-11440 |  | Execute Fiber Optic Cable Pulling, Fusion, and Connectorization (loop 5) in Yard 4 Access | 10d | 2026-03-17 | 2026-03-30 | PSUAY-LZE-ELE-11430 SS+3d | 15d |  |  | PROFIS [18713.3 h]; CABLE FIBER OPTICS [3490 m] | CONCLUSÃO | LUZVILLE | CNT | PSUAY-LZE-ELE-11440 | YARD 4 ACCESS |  |  |
|  | 6 | **SIGNS** |  | 2026-03-09 | 2026-03-10 |  |  |  |  |  |  |  |  |  |  |  |  |
|  | 1 | **TRAFFIC SIGNS** |  | 2026-03-09 | 2026-03-10 |  |  |  |  |  |  |  |  |  |  |  |  |
| PSUAY-CAG-CIV-11450 |  | Execute traffic sings in Yard 4 Access | 2d | 2026-03-09 | 2026-03-10 | PSUAY-ECM-INF-10760, PSUAY-CAG-INF-11330 | 29d |  |  | PROFIS [2806.02 h] | CONCLUSÃO | CONSAG | CNT | PSUAY-CAG-CIV-11450 | YARD 4 ACCESS | UDF_G1 |  |
|  | 8 | **YARD 5** |  | 2026-01-19 | 2026-04-20 |  |  |  |  |  |  |  |  |  |  |  |  |
|  | 2 | **PAVEMENT** |  | 2026-01-26 | 2026-04-20 |  |  |  |  |  |  |  |  |  |  |  |  |
|  | 5 | **PAVEMENT TYPE 04B (LIGHT DUST ASPHALT)** |  | 2026-02-03 | 2026-02-24 |  |  |  |  |  |  |  |  |  |  |  |  |
|  | 1 | **BGTC/BGS** |  | 2026-02-03 | 2026-02-06 |  |  |  |  |  |  |  |  |  |  |  |  |
| PSUAY-CAG-INF-11460 |  | Execute sub-base of pavement type 04B in Yard 5 | 4d | 2026-02-03 | 2026-02-06 | PSUAY-CAG-INF-11510 | 0d |  |  | PROFIS [13360.1 h]; CEMENT SOIL (BGTC) [2432.91 m³] | CONCLUSÃO | CONSAG | CNT | PSUAY-CAG-INF-11460 | YARD 5 |  |  |
|  | 2 | **CONCRETE** |  | 2026-02-09 | 2026-02-13 |  |  |  |  |  |  |  |  |  |  |  |  |
| PSUAY-CAG-INF-11470 |  | Execute concrete of pavement type 04B in Yard 5 | 5d | 2026-02-09 | 2026-02-13 | PSUAY-CAG-INF-11460 | 0d |  |  | PROFIS [8712.35 h]; CONCRETE-PAVEMENT [1327.04 m³] | CONCLUSÃO | CONSAG | CNT | PSUAY-CAG-INF-11470 | YARD 5 |  | PAV-CONC |
|  | 3 | **ASPHALT** |  | 2026-02-16 | 2026-02-24 |  |  |  |  |  |  |  |  |  |  |  |  |
| PSUAY-CAG-INF-11480 |  | Execute asphalt of pavement type 04B in Yard 5 | 7d | 2026-02-16 | 2026-02-24 | PSUAY-CAG-INF-11470 | 0d |  |  | PROFIS [12771.5 h]; ASPHALT [4423.48 m³] | CONCLUSÃO | LIDERMAC | CNT | PSUAY-CAG-INF-11480 | YARD 5 | UDF_G1 | PAV-ASPHA |
|  | 3 | **PAVEMENT TYPE 05B (CONCRETE SLABS)** |  | 2026-01-26 | 2026-02-02 |  |  |  |  |  |  |  |  |  |  |  |  |
|  | 1 | **SUBGRADE** |  | 2026-01-26 | 2026-01-29 |  |  |  |  |  |  |  |  |  |  |  |  |
| PSUAY-CAG-INF-11490 |  | Execute subgrade of pavement type 05 in Yard 5 | 4d | 2026-01-26 | 2026-01-29 | PSUAY-MIL-GER-1360 | 0d |  |  | PROFIS [18632.4 h] | CONCLUSÃO | CONSAG | CNT | PSUAY-CAG-INF-11490 | YARD 5 | UDF_G1 |  |

Notes:
- PSUAY-LZE-ELE-11370: Translate: Lançamento de de cabos de Baixa Tensão dos postes de iluminação
- PSUAY-LZE-ELE-11380: Translate: Preparação dos cabos e terminações
- PSUAY-LZE-ELE-11390: Translate: Conectorização de Cabos
- PSUAY-LZE-ELE-11400: Translate: Execute puxação, fusão e conectividade de cabos de fibra óptica (loop 1) no acesso ao pátio 4
- PSUAY-LZE-ELE-11410: Translate: Execute puxação, fusão e conectividade de cabos de fibra óptica (loop 2) no acesso do pátio 4
- PSUAY-LZE-ELE-11420: Translate: Execute puxação, fusão e conectividade de cabos de fibra óptica (loop 3) no Acesso ao Pátio 4
- PSUAY-LZE-ELE-11430: Translate: Execute puxação, fusão e conectividade de cabos de fibra óptica (loop 4) no Acesso ao Pátio 4
- PSUAY-LZE-ELE-11440: Translate: Execute puxação, fusão e conectividade de cabos de fibra óptica (loop 5) no Acesso ao Pátio 4
- PSUAY-CAG-CIV-11450: Translate: Sinalização de tráfico do pátio 4
- PSUAY-CAG-INF-11460: Translate: Execução sub-base do tipo de pavimento 04B no pátio 5
- PSUAY-CAG-INF-11470: Translate: Execução de concreto do tipo pavimento 04B no Pátio 5
- PSUAY-CAG-INF-11480: Translate: Executar asfalto do pavimento tipo 04B da SS1
- PSUAY-CAG-INF-11490: Translate: Executar o subnível do pavimento tipo 05 no pátio 5

| ID | WBS | Activity | Duration | Start | Finish | Predecessors | Total float | Resources | Translate | Check Pred | ACTIVITY ID COD. | FASES DE ENTREGA | RESPONSÁVEL | ÁREAS | SERVIÇOS | PHASES - YARD |
| --- | --- | --- | --- | --- | --- | --- | --- | --- | --- | --- | --- | --- | --- | --- | --- | --- |
|  | 2 | **BGTC/BGS** |  | 2026-01-30 | 2026-01-30 |  |  |  |  |  |  |  |  |  |  |  |
| PSUAY-CAG-INF-11500 |  | Execute BGTC of pavement type 05 in Yard 5 | 1d | 2026-01-30 | 2026-01-30 | PSUAY-CAG-INF-11490 | 0d | PROFIS [2271.69 h]; CEMENT SOIL (BGTC) [413.68 m³] | Executar o BGTC do tipo de pavimento 05 no pátio 5 | UDF_G1 | PSUAY-CAG-INF-11500 | CONCLUSÃO | CONSAG | YARD 5 | PAV-BGTC/BGS | CNT |
|  | 3 | **CONCRETE** |  | 2026-02-02 | 2026-02-02 |  |  |  |  |  |  |  |  |  |  |  |
| PSUAY-CAG-INF-11510 |  | Execute concrete of pavement type 05 in Yard 5 | 1d | 2026-02-02 | 2026-02-02 | PSUAY-CAG-INF-11500 | 0d | PROFIS [1901.13 h]; CONCRETE-PAVEMENT [289.58 m³] | Executar concreto do tipo de pavimento 05 no pátio 5 | UDF_G1 | PSUAY-CAG-INF-11510 | CONCLUSÃO | CONSAG | YARD 5 | PAV-CONC | CNT |
|  | 4 | **PAVEMENT TYPE 07** |  | 2026-04-07 | 2026-04-09 |  |  |  |  |  |  |  |  |  |  |  |
|  | 1 | **BGTC/BGS** |  | 2026-04-07 | 2026-04-07 |  |  |  |  |  |  |  |  |  |  |  |
| PSUAY-CAG-INF-11520 |  | Execute sub-base of pavement type 07 in Yard 5 | 1d | 2026-04-07 | 2026-04-07 | PSUAY-PMC-INF-11620 | 0d | PROFIS [379.11 h] | Execução da subbase do tipo de pavimento 07 no pátio 5 | UDF_G1 | PSUAY-CAG-INF-11520 | CONCLUSÃO | CONSAG | YARD 5 | PAV-BGTC/BGS | CNT |
|  | 4 | **SAND BEDDING (PREMACIL)** |  | 2026-04-08 | 2026-04-08 |  |  |  |  |  |  |  |  |  |  |  |
| PSUAY-PMC-INF-11530 |  | Execute sand bedding of pavement type 07 in Yard 5 | 1d | 2026-04-08 | 2026-04-08 | PSUAY-CAG-INF-11520 | 0d | PROFIS [829.2 h] | Executar o revestimento de areia do tipo 07 no pátio 5 | UDF_G1 | PSUAY-PMC-INF-11530 | CONCLUSÃO | PREMACIL | YARD 5 | PAV-SAND | CNT |
|  | 2 | **PAVER (PREMACIL)** |  | 2026-04-09 | 2026-04-09 |  |  |  |  |  |  |  |  |  |  |  |
| PSUAY-PMC-INF-11540 |  | Execute paver of pavement type 07 in Yard 5 | 1d | 2026-04-09 | 2026-04-09 | PSUAY-PMC-INF-11530 | 0d | PSUAY - PAVIMENTO (BLOCK PAVER - M2) [460.25 m²]; PROFIS [2280.29 h] | Executar pavimentação do tipo 07 no pátio 5 | UDF_G1 | PSUAY-PMC-INF-11540 | CONCLUSÃO | PREMACIL | YARD 5 | PAV-PAVER | CNT |
|  | 1 | **PAVEMENT - TYPE 08 (LANDSCAPING)** |  | 2026-04-10 | 2026-04-20 |  |  |  |  |  |  |  |  |  |  |  |
|  | 1 | **SUBGRADE** |  | 2026-04-10 | 2026-04-13 |  |  |  |  |  |  |  |  |  |  |  |
| PSUAY-CAG-INF-11550 |  | Execute sub-grade layer of type 08 pavement in Yard 5 | 2d | 2026-04-10 | 2026-04-13 | PSUAY-PMC-INF-11540 | 0d | PROFIS [14853.9 h] | Executar uma camada sub-solo do pavimento tipo 08 no Pátio 5 | UDF_G1 | PSUAY-CAG-INF-11550 | CONCLUSÃO | CONSAG | YARD 5 |  | CNT |
|  | 2 | **TOPSOIL** |  | 2026-04-14 | 2026-04-15 |  |  |  |  |  |  |  |  |  |  |  |
| PSUAY-CAG-INF-11560 |  | Execute topsoil layer of type 08 pavement in Yard 5 | 2d | 2026-04-14 | 2026-04-15 | PSUAY-CAG-INF-11550 | 0d | PROFIS [14853.9 h] | Execute a camada superficial do solo do tipo 08 no Quintal 5 |  | PSUAY-CAG-INF-11560 | CONCLUSÃO | CONSAG | YARD 5 |  | CNT |
|  | 3 | **GRASS/VEGETATION** |  | 2026-04-16 | 2026-04-20 |  |  |  |  |  |  |  |  |  |  |  |
| PSUAY-CAG-INF-11570 |  | Execute grass/vegetation of type 08 pavement in Yard 5 | 3d | 2026-04-16 | 2026-04-20 | PSUAY-CAG-INF-11560 | 0d | PROFIS [59415.7 h] | Executar grama/vegetação do tipo 08 no Pátio 5 |  | PSUAY-CAG-INF-11570 | CONCLUSÃO | CONSAG | YARD 5 |  | CNT |
|  | 2 | **PAVEMENT - TYPE 02B** |  | 2026-02-25 | 2026-04-06 |  |  |  |  |  |  |  |  |  |  |  |
|  | 1 | **SUBGRADE** |  | 2026-02-25 | 2026-03-16 |  |  |  |  |  |  |  |  |  |  |  |
| PSUAY-CAG-INF-11580 |  | Execute subgrade for pavement type 02B in Yard 5 | 14d | 2026-02-25 | 2026-03-16 | PSUAY-CAG-INF-11480 | 0d | PROFIS [132870 h] | Executar subnível para pavimento tipo 02B no pátio 5 |  | PSUAY-CAG-INF-11580 | CONCLUSÃO | CONSAG | YARD 5 |  | CNT |
|  | 2 | **BGTC/BGS** |  | 2026-03-17 | 2026-03-26 |  |  |  |  |  |  |  |  |  |  |  |
| PSUAY-CAG-INF-11590 |  | Execute BGTC for pavement type 02B in Yard 5 | 8d | 2026-03-17 | 2026-03-26 | PSUAY-CAG-INF-11580 | 0d | PROFIS [28187.4 h]; CEMENT SOIL (BGTC) [5133 m³] | Executar BGTC para pavimento tipo 02B no pátio 5 |  | PSUAY-CAG-INF-11590 | CONCLUSÃO | CONSAG | YARD 5 | PAV-BGTC/BGS | CNT |
|  | 3 | **CONCRETE** |  | 2026-03-27 | 2026-03-30 |  |  |  |  |  |  |  |  |  |  |  |
| PSUAY-CAG-INF-11600 |  | Execute concrete for pavement type 02B in Yard 5 | 2d | 2026-03-27 | 2026-03-30 | PSUAY-CAG-INF-11590 | 0d | PROFIS [3873.48 h]; CONCRETE-PAVEMENT [590 m³] | Executar concreto para pavimento tipo 02B no Pátio 5 |  | PSUAY-CAG-INF-11600 | CONCLUSÃO | CONSAG | YARD 5 | PAV-CONC | CNT |

| ID | WBS | Activity | Duration | Start | Finish | Predecessors | Complete | Remaining | Planned start | Planned finish | Total float | Free float | Calendar | Resources | ACTIVITY ID COD. | FASES DE ENTREGA | RESPONSÁVEL | ÁREAS | SERVIÇOS | PHASES - YARD | Check Pred | Atualização |
| --- | --- | --- | --- | --- | --- | --- | --- | --- | --- | --- | --- | --- | --- | --- | --- | --- | --- | --- | --- | --- | --- | --- |
|  | 4 | **SAND BEDDING (PREMACIL)** |  | 2026-03-31 | 2026-04-01 |  |  |  |  |  |  |  |  |  |  |  |  |  |  |  |  |  |
| PSUAY-PMC-INF-11610 |  | Execute sandbedding for pavement type 02B in Yard 5 | 2d | 2026-03-31 | 2026-04-01 | PSUAY-CAG-INF-11600 |  |  |  |  | 0d |  |  | PROFIS [10629.6 h] | PSUAY-PMC-INF-11610 | CONCLUSÃO | PREMACIL | YARD 5 | PAV-SAND | CNT |  |  |
|  | 5 | **PAVER (PREMACIL)** |  | 2026-04-02 | 2026-04-06 |  |  |  |  |  |  |  |  |  |  |  |  |  |  |  |  |  |
| PSUAY-PMC-INF-11620 |  | Execute paver for pavement type 02B in Yard 5 | 3d | 2026-04-02 | 2026-04-06 | PSUAY-PMC-INF-11610 |  |  |  |  | 0d |  |  | PSUAY - PAVIMENTO (BLOCK PAVER - M2) [5900 m²]; PROFIS [29231.3 h] | PSUAY-PMC-INF-11620 | CONCLUSÃO | PREMACIL | YARD 5 | PAV-PAVER | CNT |  |  |
|  | 1 | **TOWERS** |  | 2026-01-19 | 2026-03-12 |  |  |  |  |  |  |  |  |  |  |  |  |  |  |  |  |  |
|  | 13 | **HIGH MAST HM-H07-01** |  | 2026-01-26 | 2026-03-04 |  |  |  |  |  |  |  |  |  |  |  |  |  |  |  |  |  |
|  | 3 | **BASE (FOUNDATION)** |  | 2026-01-26 | 2026-02-04 |  |  |  |  |  |  |  |  |  |  |  |  |  |  |  |  |  |
| PSUAY-CAG-CIV-11630 |  | Execute steel for the civil base of the HM-H07-01 in Yard 5 | 4d | 2026-01-26 | 2026-01-29 | PSUAY-MIL-GER-1360, PSUAY-CAG-CIV-6100 |  |  |  |  | 34d | 0d |  | PROFIS [62948.5 h] | PSUAY-CAG-CIV-11630 | CONCLUSÃO | CONSAG | YARD 5 | HM-CIV | CNT | UDF_G1 |  |
| PSUAY-CAG-CIV-11640 |  | Execute the formwork for the civil base of HM-H07-01 in Yard 5 | 1d | 2026-01-30 | 2026-01-30 | PSUAY-CAG-CIV-11630 |  |  |  |  | 34d | 0d |  | PROFIS [9777.4 h] | PSUAY-CAG-CIV-11640 | CONCLUSÃO | CONSAG | YARD 5 | HM-CIV | CNT |  |  |
| PSUAY-CAG-CIV-11650 |  | Execute concrete for the civil foundations of the HM-H07-01 in Yard 5 | 1d | 2026-02-02 | 2026-02-02 | PSUAY-CAG-CIV-11640 |  |  |  |  | 34d | 0d |  | PROFIS [595.15 h]; CONCRETE-STRUCTURE [29.07 m³] | PSUAY-CAG-CIV-11650 | CONCLUSÃO | CONSAG | YARD 5 | HM-CIV | CNT |  |  |
| PSUAY-CAG-CIV-11660 |  | Execute HM-H07-01 panels foundation in Yard 5 | 2d | 2026-02-03 | 2026-02-04 | PSUAY-CAG-CIV-11650 |  |  |  |  | 34d | 0d |  | PROFIS [2420.93 h] | PSUAY-CAG-CIV-11660 | CONCLUSÃO | CONSAG | YARD 5 | HM-CIV | CNT |  |  |
|  | 2 | **ASSEMBLY (LUZVILLE)** |  | 2026-02-05 | 2026-02-12 |  |  |  |  |  |  |  |  |  |  |  |  |  |  |  |  |  |
| PSUAY-LZE-ELE-11670 |  | Execute HM-H07-01 assembly in Yard 5 | 6d | 2026-02-05 | 2026-02-12 | PSUAY-CAG-CIV-11660, PSUAY-LZE-ELE-5980 |  |  |  |  | 38.44d | 0d | PSUAY - ELETROMEC - 1T - HE SAB | PROFIS [11890.7 h]; POST HIGH MAST [1 un] | PSUAY-LZE-ELE-11670 | CONCLUSÃO | LUZVILLE | YARD 5 | HM-ASSEM | CNT |  |  |
|  | 5 | **ENERGIZATION (LUZVILLE)** |  | 2026-02-20 | 2026-03-04 |  |  |  |  |  |  |  |  |  |  |  |  |  |  |  |  |  |
| PSUAY-LZE-ELE-11680 |  | Execute HM-H07-01 BT cable pulling and energization in Yard 5 | 9d | 2026-02-20 | 2026-03-04 | PSUAY-LZE-ELE-11670, PSUAY-LZE-ELE-8340 |  |  |  |  | 31.38d | 0d | PSUAY - ELETROMEC - 1T - HE SAB | PROFIS [16021.6 h]; CABLE LOW VOLTAGE [2490 m] | PSUAY-LZE-ELE-11680 | CONCLUSÃO | LUZVILLE | YARD 5 | HM-ENERG | CNT |  |  |
|  | 2 | **HIGH MAST HM-H08-01** |  | 2026-01-19 | 2026-03-12 |  |  |  |  |  |  |  |  |  |  |  |  |  |  |  |  |  |
|  | 3 | **BASE (FOUNDATION)** |  | 2026-01-19 | 2026-01-29 |  |  |  |  |  |  |  |  |  |  |  |  |  |  |  |  |  |
| PSUAY-CAG-CIV-11690 |  | Execute steel for the civil base of the HM-H08-01 in Yard 5 | 4d | 2026-01-19 A | 2026-01-23 A | PSUAY-CAG-CIV-6100 | 100% |  | 2026-02-02 | 2026-02-05 |  |  |  | PROFIS [62948.5 h] | PSUAY-CAG-CIV-11690 | CONCLUSÃO | CONSAG | YARD 5 | HM-CIV | CNT | UDF_G1 | OK |
| PSUAY-CAG-CIV-11700 |  | Execute the formwork for the civil base of HM-H08-01 in Yard 5 | 1d | 2026-01-19 A | 2026-01-26 | PSUAY-CAG-CIV-11690 | 80% | 1d | 2026-02-06 | 2026-02-06 | 38.06d | 0d |  | PROFIS [9777.4 h] | PSUAY-CAG-CIV-11700 | CONCLUSÃO | CONSAG | YARD 5 | HM-CIV | CNT |  | OK |
| PSUAY-CAG-CIV-11710 |  | Execute concrete for the civil foundations of the HM-H08-01 in Yard 5 | 1d | 2026-01-27 | 2026-01-27 | PSUAY-CAG-CIV-11700 |  |  |  |  | 38.06d | 0d |  | PROFIS [595.15 h]; CONCRETE-STRUCTURE [29.07 m³] | PSUAY-CAG-CIV-11710 | CONCLUSÃO | CONSAG | YARD 5 | HM-CIV | CNT |  |  |
| PSUAY-CAG-CIV-11720 |  | Execute HM-H08-01 panels foundation in Yard 5 | 2d | 2026-01-28 | 2026-01-29 | PSUAY-CAG-CIV-11710 |  |  |  |  | 38.06d | 10.75d |  | PROFIS [2420.93 h] | PSUAY-CAG-CIV-11720 | CONCLUSÃO | CONSAG | YARD 5 | HM-CIV | CNT |  |  |
|  | 2 | **ASSEMBLY (LUZVILLE)** |  | 2026-02-16 | 2026-02-24 |  |  |  |  |  |  |  |  |  |  |  |  |  |  |  |  |  |
| PSUAY-LZE-ELE-11730 |  | Execute HM-H08-01 assembly in Yard 5 | 6d | 2026-02-16 | 2026-02-24 | PSUAY-CAG-CIV-11720 FS+1d, PSUAY-LZE-ELE-6130 |  |  |  |  | 30.25d | 0d | PSUAY - ELETROMEC - 1T - HE SAB | PROFIS [11890.7 h]; POST HIGH MAST [1 un] | PSUAY-LZE-ELE-11730 | CONCLUSÃO | LUZVILLE | YARD 5 | HM-ASSEM | CNT |  |  |
|  | 5 | **ENERGIZATION (LUZVILLE)** |  | 2026-03-02 | 2026-03-12 |  |  |  |  |  |  |  |  |  |  |  |  |  |  |  |  |  |
| PSUAY-LZE-ELE-11740 |  | Execute HM-H08-01 BT cable pulling and energization in Yard 5 | 8d | 2026-03-02 | 2026-03-12 | PSUAY-LZE-ELE-11730, PSUAY-LZE-ELE-8400 |  |  |  |  | 24.88d | 0d | PSUAY - ELETROMEC - 1T - HE SAB | PROFIS [13859.6 h]; CABLE LOW VOLTAGE [2154 m] | PSUAY-LZE-ELE-11740 | CONCLUSÃO | LUZVILLE | YARD 5 | HM-ENERG | CNT |  |  |

Notes:
- PSUAY-PMC-INF-11610: Translate: Executar o revestimento de areia para o tipo de pavimento 02B no Pátio 5
- PSUAY-PMC-INF-11620: Translate: Aplicação de blocos intertravados no pavimento tipo 02B do Pátio 5
- PSUAY-CAG-CIV-11630: Translate: Executar aço para a base civil do HM-H07-01 no Pátio 5
- PSUAY-CAG-CIV-11640: Translate: Execute a formagem para a base civil do HM-H07-01 no pátio 5
- PSUAY-CAG-CIV-11650: Translate: Executar concreto para as fundações civis do HM-H07-01 no pátio 5
- PSUAY-CAG-CIV-11660: Translate: Execute fundação dos painéis HM-H07-01 no pátio 5
- PSUAY-LZE-ELE-11670: Translate: Executar a montagem HM-H07-01 no Pátio 5
- PSUAY-LZE-ELE-11680: Translate: Executar puxar cabos HM-H07-01 BT e energizar no pátio 5
- PSUAY-CAG-CIV-11690: Translate: Executar aço para a base civil do HM-H08-01 no Pátio 5
- PSUAY-CAG-CIV-11700: Translate: Execute a formagem para a base civil do HM-H08-01 no pátio 5
- PSUAY-CAG-CIV-11710: Translate: Executar concreto para as fundações civis do HM-H08-01 no pátio 5
- PSUAY-CAG-CIV-11720: Translate: Executar fundação dos painéis HM-H08-01 no Pátio 5
- PSUAY-LZE-ELE-11730: Translate: Executar a montagem HM-H08-01 no pátio 5
- PSUAY-LZE-ELE-11740: Translate: Executar puxar e energizar cabos HM-H08-01 BT no pátio 5

| ID | WBS | Activity | Duration | Start | Finish | Predecessors | Total float | Free float | Calendar | Resources | ACTIVITY ID COD. | FASES DE ENTREGA | RESPONSÁVEL | ÁREAS | PHASES - YARD |
| --- | --- | --- | --- | --- | --- | --- | --- | --- | --- | --- | --- | --- | --- | --- | --- |
|  | 3 | **ELECTRICAL (LUZVILLE)** |  | 2026-01-26 | 2026-03-23 |  |  |  |  |  |  |  |  |  |  |
|  | 1 | **PANELS (SS2 EXTERNAL)** |  | 2026-01-26 | 2026-02-18 |  |  |  |  |  |  |  |  |  |  |
|  | 1 | **P2.11 - FEC-EV-01 WORKSHOP CAR PARK** |  | 2026-01-26 | 2026-02-12 |  |  |  |  |  |  |  |  |  |  |
| PSUAY-LZE-ELE-11750 |  | Execute Panel Installation in Yard 5 (external SS2) | 5d | 2026-01-26 | 2026-01-30 | PSUAY-MIL-GER-1370 | 47d | 0d | PSUAY - ELETROMEC - 1T - SEM HE | PROFIS [9908.91 h] | PSUAY-LZE-ELE-11750 | CONCLUSÃO | LUZVILLE | YARD 5 | CNT |
| PSUAY-LZE-ELE-11760 |  | Execute Feeder Cable Pulling in Yard 5 (external SS2) | 4d | 2026-02-02 | 2026-02-05 | PSUAY-LZE-ELE-11750 | 47d | 0d | PSUAY - ELETROMEC - 1T - SEM HE | PROFIS [6112.64 h]; CABLE LOW VOLTAGE [950 m] | PSUAY-LZE-ELE-11760 | CONCLUSÃO | LUZVILLE | YARD 5 | CNT |
| PSUAY-LZE-ELE-11770 |  | Execute Preparation, Testing, and Connectionin Yard 5 (external SS2) | 5d | 2026-02-06 | 2026-02-12 | PSUAY-LZE-ELE-11760 | 47d |  | PSUAY - ELETROMEC - 1T - SEM HE | PROFIS [9908.91 h] | PSUAY-LZE-ELE-11770 | CONCLUSÃO | LUZVILLE | YARD 5 | CNT |
|  | 2 | **P2.12 - FEC-EV-02 MFO CAR PARK** |  | 2026-01-26 | 2026-02-18 |  |  |  |  |  |  |  |  |  |  |
| PSUAY-LZE-ELE-11780 |  | Execute Panel Installation in Yard 5 (external SS2) | 5d | 2026-01-26 | 2026-01-30 | PSUAY-MIL-GER-1380 | 43d | 0d | PSUAY - ELETROMEC - 1T - SEM HE | PROFIS [9908.91 h] | PSUAY-LZE-ELE-11780 | CONCLUSÃO | LUZVILLE | YARD 5 | CNT |
| PSUAY-LZE-ELE-11790 |  | Execute Feeder Cable Pulling in Yard 5 (external SS2) | 8d | 2026-02-02 | 2026-02-11 | PSUAY-LZE-ELE-11780 | 43d | 0d | PSUAY - ELETROMEC - 1T - SEM HE | PROFIS [14863.4 h]; CABLE LOW VOLTAGE [2310 m] | PSUAY-LZE-ELE-11790 | CONCLUSÃO | LUZVILLE | YARD 5 | CNT |
| PSUAY-LZE-ELE-11800 |  | Execute Preparation, Testing, and Connectionin Yard 5 (external SS2) | 5d | 2026-02-12 | 2026-02-18 | PSUAY-LZE-ELE-11790 | 43d |  | PSUAY - ELETROMEC - 1T - SEM HE | PROFIS [9908.91 h] | PSUAY-LZE-ELE-11800 | CONCLUSÃO | LUZVILLE | YARD 5 | CNT |
|  | 3 | **OPTIC FIBER** |  | 2026-02-02 | 2026-02-03 |  |  |  |  |  |  |  |  |  |  |
| PSUAY-LZE-ELE-11810 |  | Execute Fiber Optic Cable Pulling, Fusion, and Connectorization SE-02 > FEC-EV-02 - FIB in Yard 5 | 1d | 2026-02-02 | 2026-02-02 | PSUAY-LZE-ELE-11780 | 54d | 0d | PSUAY - ELETROMEC - 1T - SEM HE | PROFIS [1485.26 h]; CABLE FIBER OPTICS [277 m] | PSUAY-LZE-ELE-11810 | CONCLUSÃO | LUZVILLE | YARD 5 | CNT |
| PSUAY-LZE-ELE-11820 |  | Execute Fiber Optic Cable Pulling, Fusion, and Connectorization SE-02 > FEC-EV-01 - FIB in Yard 5 | 1d | 2026-02-03 | 2026-02-03 | PSUAY-LZE-ELE-11750, PSUAY-LZE-ELE-11810 | 54d |  | PSUAY - ELETROMEC - 1T - SEM HE | PROFIS [1136.74 h]; CABLE FIBER OPTICS [212 m] | PSUAY-LZE-ELE-11820 | CONCLUSÃO | LUZVILLE | YARD 5 | CNT |
|  | 2 | **EV-CHARGER** |  | 2026-01-29 | 2026-03-23 |  |  |  |  |  |  |  |  |  |  |
|  | 4 | **EV-05** |  | 2026-01-29 | 2026-02-27 |  |  |  |  |  |  |  |  |  |  |
| PSUAY-LZE-ELE-11830 |  | Execute EV-05 equipment Installation in Yard 5 | 5d | 2026-01-29 | 2026-02-04 | PSUAY-MIL-GER-1390 | 20d | 0d | PSUAY - ELETROMEC - 1T - SEM HE | PROFIS [9908.91 h] | PSUAY-LZE-ELE-11830 | CONCLUSÃO | LUZVILLE | YARD 5 | CNT |
| PSUAY-LZE-ELE-11840 |  | Execute EV-05 cable Pulling in Yard 5 | 7d | 2026-02-05 | 2026-02-13 | PSUAY-LZE-ELE-11830 | 31d | 0d | PSUAY - ELETROMEC - 1T - SEM HE | PROFIS [12045.1 h]; CABLE LOW VOLTAGE [1872 m] | PSUAY-LZE-ELE-11840 | CONCLUSÃO | LUZVILLE | YARD 5 | CNT |
| PSUAY-LZE-ELE-11850 |  | Execute EV-05 cable Preparation and Termination in Yard 5 | 5d | 2026-02-16 | 2026-02-20 | PSUAY-LZE-ELE-11840 | 31d | 0d | PSUAY - ELETROMEC - 1T - SEM HE | PROFIS [9908.91 h] | PSUAY-LZE-ELE-11850 | CONCLUSÃO | LUZVILLE | YARD 5 | CNT |
| PSUAY-LZE-ELE-11860 |  | Execute EV-05 cable Testing and Connection | 5d | 2026-02-23 | 2026-02-27 | PSUAY-LZE-ELE-11850 | 31d | 0d | PSUAY - ELETROMEC - 1T - SEM HE | PROFIS [9908.91 h] | PSUAY-LZE-ELE-11860 | CONCLUSÃO | LUZVILLE | YARD 5 | CNT |
|  | 1 | **EV-06** |  | 2026-02-05 | 2026-03-06 |  |  |  |  |  |  |  |  |  |  |
| PSUAY-LZE-ELE-11870 |  | Execute EV-06 equipment Installation in Yard 5 | 5d | 2026-02-05 | 2026-02-11 | PSUAY-LZE-ELE-11830 | 20d | 0d | PSUAY - ELETROMEC - 1T - SEM HE | PROFIS [9908.91 h] | PSUAY-LZE-ELE-11870 | CONCLUSÃO | LUZVILLE | YARD 5 | CNT |
| PSUAY-LZE-ELE-11880 |  | Execute EV-06 cable Pulling in Yard 5 | 6d | 2026-02-12 | 2026-02-19 | PSUAY-LZE-ELE-11870 | 32d | 0d | PSUAY - ELETROMEC - 1T - SEM HE | PROFIS [11581.9 h]; CABLE LOW VOLTAGE [1800 m] | PSUAY-LZE-ELE-11880 | CONCLUSÃO | LUZVILLE | YARD 5 | CNT |
| PSUAY-LZE-ELE-11890 |  | Execute EV-06 cable Preparation and Termination in Yard 5 | 5d | 2026-02-20 | 2026-02-26 | PSUAY-LZE-ELE-11880 | 32d | 1d | PSUAY - ELETROMEC - 1T - SEM HE | PROFIS [9908.91 h] | PSUAY-LZE-ELE-11890 | CONCLUSÃO | LUZVILLE | YARD 5 | CNT |
| PSUAY-LZE-ELE-11900 |  | Execute EV-06 cable Testing and Connection | 5d | 2026-03-02 | 2026-03-06 | PSUAY-LZE-ELE-11890, PSUAY-LZE-ELE-11860 | 31d |  | PSUAY - ELETROMEC - 1T - SEM HE | PROFIS [9908.91 h] | PSUAY-LZE-ELE-11900 | CONCLUSÃO | LUZVILLE | YARD 5 | CNT |

Notes:
- PSUAY-LZE-ELE-11750: Translate: Executar a instalação do painel no pátio 5 (SS2 externo)
- PSUAY-LZE-ELE-11760: Translate: Executar puxar cabo de alimentação no pátio 5 (SS2 externo)
- PSUAY-LZE-ELE-11770: Translate: Executar Preparação, Testes e Conexão no Pátio 5 (SS2 externo)
- PSUAY-LZE-ELE-11780: Translate: Executar a instalação do painel no pátio 5 (SS2 externo)
- PSUAY-LZE-ELE-11790: Translate: Executar puxar cabo de alimentação no pátio 5 (SS2 externo)
- PSUAY-LZE-ELE-11800: Translate: Executar Preparação, Testes e Conexão no Pátio 5 (SS2 externo)
- PSUAY-LZE-ELE-11810: Translate: Executar puxação, fusão e conectividade de cabos de fibra óptica SE-02 > FEC-EV-02 - FIB no pátio 5
- PSUAY-LZE-ELE-11820: Translate: Executar puxação, fusão e conectividade de cabos de fibra óptica SE-02 > FEC-EV-01 - FIB no pátio 5
- PSUAY-LZE-ELE-11830: Translate: Executar instalação de equipamentos EV-05 no pátio 5
- PSUAY-LZE-ELE-11840: Translate: Executar cabo EV-05 puxando no pátio 5
- PSUAY-LZE-ELE-11850: Translate: Executar a preparação e terminação do cabo EV-05 no pátio 5
- PSUAY-LZE-ELE-11860: Translate: Execução do cabo EV-05 Teste e Conexão
- PSUAY-LZE-ELE-11870: Translate: Executar instalação do equipamento EV-06 no pátio 5
- PSUAY-LZE-ELE-11880: Translate: Execute o cabo EV-06 puxando no pátio 5
- PSUAY-LZE-ELE-11890: Translate: Executar a preparação e terminação do cabo EV-06 no pátio 5
- PSUAY-LZE-ELE-11900: Translate: Executar o cabo EV-06 Teste e Conexão

| ID | WBS | Activity | Duration | Start | Finish | Predecessors | Complete | Remaining | Planned start | Planned finish | Total float | Free float | Calendar | Resources | ACTIVITY ID COD. | FASES DE ENTREGA | RESPONSÁVEL | ÁREAS | PHASES - YARD | Atualização |
| --- | --- | --- | --- | --- | --- | --- | --- | --- | --- | --- | --- | --- | --- | --- | --- | --- | --- | --- | --- | --- |
|  | 2 | **EV-07** |  | 2026-02-12 | 2026-02-18 |  |  |  |  |  |  |  |  |  |  |  |  |  |  |  |
| PSUAY-LZE-ELE-11910 |  | Execute EV-07 equipment Installation in Yard 5 | 5d | 2026-02-12 | 2026-02-18 | PSUAY-LZE-ELE-11870 |  |  |  |  | 20d | 0d | PSUAY - ELETROMEC - 1T - SEM HE | PROFIS [9908.91 h] | PSUAY-LZE-ELE-11910 | CONCLUSÃO | LUZVILLE | YARD 5 | CNT |  |
|  | 3 | **EV-10** |  | 2026-02-19 | 2026-03-23 |  |  |  |  |  |  |  |  |  |  |  |  |  |  |  |
| PSUAY-LZE-ELE-11920 |  | Execute EV-10 equipment Installation in Yard 5 | 5d | 2026-02-19 | 2026-02-25 | PSUAY-LZE-ELE-11910 |  |  |  |  | 20d | 0d | PSUAY - ELETROMEC - 1T - SEM HE | PROFIS [9908.91 h] | PSUAY-LZE-ELE-11920 | CONCLUSÃO | LUZVILLE | YARD 5 | CNT |  |
| PSUAY-LZE-ELE-11930 |  | Execute EV-10 cable Pulling in Yard 5 | 8d | 2026-02-26 | 2026-03-09 | PSUAY-LZE-ELE-11920 |  |  |  |  | 20d | 0d | PSUAY - ELETROMEC - 1T - SEM HE | PROFIS [15056.4 h]; CABLE LOW VOLTAGE [2340 m] | PSUAY-LZE-ELE-11930 | CONCLUSÃO | LUZVILLE | YARD 5 | CNT |  |
| PSUAY-LZE-ELE-11940 |  | Execute EV-10 cable Preparation and Termination in Yard 5 | 5d | 2026-03-10 | 2026-03-16 | PSUAY-LZE-ELE-11930 |  |  |  |  | 20d | 0d | PSUAY - ELETROMEC - 1T - SEM HE | PROFIS [9908.91 h] | PSUAY-LZE-ELE-11940 | CONCLUSÃO | LUZVILLE | YARD 5 | CNT |  |
| PSUAY-LZE-ELE-11950 |  | Execute EV-10 cable Testing and Connection | 5d | 2026-03-17 | 2026-03-23 | PSUAY-LZE-ELE-11940 |  |  |  |  | 20d |  | PSUAY - ELETROMEC - 1T - SEM HE | PROFIS [9908.91 h] | PSUAY-LZE-ELE-11950 | CONCLUSÃO | LUZVILLE | YARD 5 | CNT |  |
|  | 5 | **OPTIC FIBER** |  | 2026-02-26 | 2026-03-03 |  |  |  |  |  |  |  |  |  |  |  |  |  |  |  |
| PSUAY-LZE-ELE-11960 |  | Execute Fiber Optic Cable Pulling, Fusion, and Connectorization SE-02 x EV-10-FIB in Yard 5 | 1d | 2026-02-26 | 2026-02-26 | PSUAY-LZE-ELE-11920 |  |  |  |  | 22d | 0d | PSUAY - ELETROMEC - 1T - SEM HE | PROFIS [1474.54 h]; CABLE FIBER OPTICS [275 m] | PSUAY-LZE-ELE-11960 | CONCLUSÃO | LUZVILLE | YARD 5 | CNT |  |
| PSUAY-LZE-ELE-11970 |  | Execute Fiber Optic Cable Pulling, Fusion, and Connectorization SE-02 x EV-07-FIB in Yard 5 | 1d | 2026-02-27 | 2026-02-27 | PSUAY-LZE-ELE-11960 |  |  |  |  | 22d | 0d | PSUAY - ELETROMEC - 1T - SEM HE | PROFIS [1061.67 h]; CABLE FIBER OPTICS [198 m] | PSUAY-LZE-ELE-11970 | CONCLUSÃO | LUZVILLE | YARD 5 | CNT |  |
| PSUAY-LZE-ELE-11980 |  | Execute Fiber Optic Cable Pulling, Fusion, and Connectorization SE-02 x EV-06-FIB in Yard 5 | 1d | 2026-03-02 | 2026-03-02 | PSUAY-LZE-ELE-11970 |  |  |  |  | 22d | 0d | PSUAY - ELETROMEC - 1T - SEM HE | PROFIS [1083.12 h]; CABLE FIBER OPTICS [202 m] | PSUAY-LZE-ELE-11980 | CONCLUSÃO | LUZVILLE | YARD 5 | CNT |  |
| PSUAY-LZE-ELE-11990 |  | Execute Fiber Optic Cable Pulling, Fusion, and Connectorization SE-02 x EV-05-FIB in Yard 5 | 1d | 2026-03-03 | 2026-03-03 | PSUAY-LZE-ELE-11980 |  |  |  |  | 22d | 0d | PSUAY - ELETROMEC - 1T - SEM HE | PROFIS [1136.74 h]; CABLE FIBER OPTICS [212 m] | PSUAY-LZE-ELE-11990 | CONCLUSÃO | LUZVILLE | YARD 5 | CNT |  |
|  | 3 | **OPTIC FIBER** |  | 2026-03-03 | 2026-03-20 |  |  |  |  |  |  |  |  |  |  |  |  |  |  |  |
|  | 1 | **SUBSTATION LOOP 8** |  | 2026-03-03 | 2026-03-06 |  |  |  |  |  |  |  |  |  |  |  |  |  |  |  |
| PSUAY-LZE-ELE-12000 |  | Execute Fiber Optic Cable Pulling, Fusion, and Connectorization (Loop 8) in Yard 5 | 4d | 2026-03-03 | 2026-03-06 | PSUAY-LZE-ELE-11990 SS |  |  |  |  | 22d | 0d | PSUAY - ELETROMEC - 1T - SEM HE | PROFIS [6075.11 h]; CABLE FIBER OPTICS [1133 m] | PSUAY-LZE-ELE-12000 | CONCLUSÃO | LUZVILLE | YARD 5 | CNT |  |
|  | 2 | **BUILDINGS LOOP 10** |  | 2026-03-09 | 2026-03-11 |  |  |  |  |  |  |  |  |  |  |  |  |  |  |  |
| PSUAY-LZE-ELE-12010 |  | Execute Fiber Optic Cable Pulling, Fusion, and Connectorization (Loop 10) in Yard 5 | 3d | 2026-03-09 | 2026-03-11 | PSUAY-LZE-ELE-12000 |  |  |  |  | 22d | 0d | PSUAY - ELETROMEC - 1T - SEM HE | PROFIS [5447.76 h]; CABLE FIBER OPTICS [1016 m] | PSUAY-LZE-ELE-12010 | CONCLUSÃO | LUZVILLE | YARD 5 | CNT |  |
|  | 3 | **DC1 > DC2-BACKBONE** |  | 2026-03-12 | 2026-03-20 |  |  |  |  |  |  |  |  |  |  |  |  |  |  |  |
| PSUAY-LZE-ELE-12020 |  | Execute Fiber Optic Cable Pulling, Fusion, and Connectorization (DC1 x DC2-Backbone) in Yard 5 | 7d | 2026-03-12 | 2026-03-20 | PSUAY-LZE-ELE-12010 |  |  |  |  | 22d | 0d | PSUAY - ELETROMEC - 1T - SEM HE | PROFIS [13769.5 h]; CABLE FIBER OPTICS [2568 m] | PSUAY-LZE-ELE-12020 | CONCLUSÃO | LUZVILLE | YARD 5 | CNT |  |
|  | 4 | **FEC-ISP-01** |  | 2026-03-12 | 2026-03-17 |  |  |  |  |  |  |  |  |  |  |  |  |  |  |  |
| PSUAY-LZE-ELE-12030 |  | Execute Fiber Optic Cable Pulling, Fusion, and Connectorization (FEC-ISP-01) in Yard 5 | 4d | 2026-03-12 | 2026-03-17 | PSUAY-LZE-ELE-12020 SS |  |  |  |  | 22d | 0d | PSUAY - ELETROMEC - 1T - SEM HE | PROFIS [6756.08 h]; CABLE FIBER OPTICS [1260 m] | PSUAY-LZE-ELE-12030 | CONCLUSÃO | LUZVILLE | YARD 5 | CNT |  |
|  | 5 | **SCADA - AUTOMATION LOOP1** |  | 2026-03-18 | 2026-03-19 |  |  |  |  |  |  |  |  |  |  |  |  |  |  |  |
| PSUAY-LZE-ELE-12040 |  | Execute Fiber Optic Cable Pulling, Fusion, and Connectorization (SCADA automation Loop1) in Yard 5 | 2d | 2026-03-18 | 2026-03-19 | PSUAY-LZE-ELE-12030 |  |  |  |  | 22d |  | PSUAY - ELETROMEC - 1T - SEM HE | PROFIS [2675.62 h]; CABLE FIBER OPTICS [499 m] | PSUAY-LZE-ELE-12040 | CONCLUSÃO | LUZVILLE | YARD 5 | CNT |  |
|  | 4 | **YARD 7** |  | 2026-01-19 | 2026-04-03 |  |  |  |  |  |  |  |  |  |  |  |  |  |  |  |
|  | 1 | **ISPS MESH FENCE** |  | 2026-01-19 | 2026-03-27 |  |  |  |  |  |  |  |  |  |  |  |  |  |  |  |
|  | 1 | **SECTION A** |  | 2026-01-19 | 2026-03-05 |  |  |  |  |  |  |  |  |  |  |  |  |  |  |  |
|  | 1 | **FUNDATION** |  | 2026-01-19 | 2026-02-24 |  |  |  |  |  |  |  |  |  |  |  |  |  |  |  |
| PSUAY-CAG-CIV-12050 |  | Execute foundation of ISPS Mesh Fences in Section A - Yard 7 | 5d | 2026-01-19 A | 2026-02-24 | PSUAY-CAG-CIV-5600, PSUAY-CAG-INF-5600, PSUAY-PNT-CIV-5720 FF | 30% | 5d | 2026-02-11 | 2026-02-17 | 11d | 0d |  | PROFIS [9723.35 h] | PSUAY-CAG-CIV-12050 | CONCLUSÃO | CONSAG | YARD 7 | CNT | OK |

Notes:
- PSUAY-LZE-ELE-11910: Translate: Executar instalação de equipamentos EV-07 no pátio 5
- PSUAY-LZE-ELE-11920: Translate: Executar instalação de equipamentos EV-10 no pátio 5
- PSUAY-LZE-ELE-11930: Translate: Executar cabo EV-10 puxando no pátio 5
- PSUAY-LZE-ELE-11940: Translate: Executar a preparação e terminação do cabo EV-10 no pátio 5
- PSUAY-LZE-ELE-11950: Translate: Execução do cabo EV-10 Teste e Conexão
- PSUAY-LZE-ELE-11960: Translate: Executar puxação, fusão e conectividade de cabos de fibra óptica SE-02 x EV-10-FIB no pátio 5
- PSUAY-LZE-ELE-11970: Translate: Executar puxação, fusão e conectividade de cabos de fibra óptica SE-02 x EV-07-FIB no pátio 5
- PSUAY-LZE-ELE-11980: Translate: Executar puxação, fusão e conectividade de cabos de fibra óptica SE-02 x EV-06-FIB no pátio 5
- PSUAY-LZE-ELE-11990: Translate: Executar puxação, fusão e conectividade de cabos de fibra óptica SE-02 x EV-05-FIB no pátio 5
- PSUAY-LZE-ELE-12000: Translate: Execute puxação, fusão e conectivação de cabos de fibra óptica (Loop 8) no pátio 5
- PSUAY-LZE-ELE-12010: Translate: Execute puxação, fusão e conectividade de cabos de fibra óptica (Loop 10) no pátio 5
- PSUAY-LZE-ELE-12020: Translate: Execute puxagem, fusão e conectividade de cabos de fibra óptica (DC1 x DC2-Backbone) no pátio 5
- PSUAY-LZE-ELE-12030: Translate: Executar puxação, fusão e conectividade de cabos de fibra óptica (FEC-ISP-01) no pátio 5
- PSUAY-LZE-ELE-12040: Translate: Executar puxação, fusão e conectivação de cabos de fibra óptica (SCADA Automation Loop1) no pátio 5
- PSUAY-CAG-CIV-12050: Translate: Executar a fundação das cercas de malha ISPS na Seção A - Pátio 7

| ID | WBS | Activity | Duration | Start | Finish | Predecessors | Complete | Remaining | Planned start | Planned finish | Total float | Free float | Resources | ACTIVITY ID COD. | FASES DE ENTREGA | RESPONSÁVEL | ÁREAS | PHASES - YARD | Atualização |
| --- | --- | --- | --- | --- | --- | --- | --- | --- | --- | --- | --- | --- | --- | --- | --- | --- | --- | --- | --- |
|  | 2 | **STRUCTURE (LAGOTELA)** |  | 2026-02-25 | 2026-03-05 |  |  |  |  |  |  |  |  |  |  |  |  |  |  |
| PSUAY-CAG-CIV-12060 |  | Execute ISPS Mesh Fences in Section A - Yard 7 | 7d | 2026-02-25 | 2026-03-05 | PSUAY-CAG-CIV-12050 |  |  |  |  | 17d | 0d | PROFIS [38428.7 h]; MATERIAL - CERCA [449.75 m] | PSUAY-CAG-CIV-12060 | CONCLUSÃO | LAGOTELA | YARD 7 | CNT |  |
|  | 4 | **SECTION B** |  | 2026-01-19 | 2026-03-16 |  |  |  |  |  |  |  |  |  |  |  |  |  |  |
|  | 1 | **FUNDATION** |  | 2026-01-19 | 2026-03-03 |  |  |  |  |  |  |  |  |  |  |  |  |  |  |
| PSUAY-CAG-CIV-12070 |  | Execute foundation of ISPS Mesh Fences in Section B - Yard 7 | 5d | 2026-01-19 A | 2026-03-03 | PSUAY-CAG-CIV-12050 | 30% | 5d | 2026-02-18 | 2026-02-24 | 11d | 0d | PROFIS [9723.35 h] | PSUAY-CAG-CIV-12070 | CONCLUSÃO | CONSAG | YARD 7 | CNT | OK |
|  | 2 | **STRUCTURE (LAGOTELA)** |  | 2026-03-06 | 2026-03-16 |  |  |  |  |  |  |  |  |  |  |  |  |  |  |
| PSUAY-CAG-CIV-12080 |  | Execute ISPS Mesh Fences in Section B - Yard 7 | 7d | 2026-03-06 | 2026-03-16 | PSUAY-CAG-CIV-12060, PSUAY-CAG-CIV-12070 |  |  |  |  | 17d | 0d | PROFIS [38428.7 h]; MATERIAL - CERCA [449.75 m] | PSUAY-CAG-CIV-12080 | CONCLUSÃO | LAGOTELA | YARD 7 | CNT |  |
|  | 3 | **SECTION C** |  | 2026-03-04 | 2026-03-25 |  |  |  |  |  |  |  |  |  |  |  |  |  |  |
|  | 1 | **FUNDATION** |  | 2026-03-04 | 2026-03-10 |  |  |  |  |  |  |  |  |  |  |  |  |  |  |
| PSUAY-CAG-CIV-12090 |  | Execute foundation of ISPS Mesh Fences in Section C - Yard 7 | 5d | 2026-03-04 | 2026-03-10 | PSUAY-CAG-CIV-12070 |  |  |  |  | 11d | 0d | PROFIS [9723.35 h] | PSUAY-CAG-CIV-12090 | CONCLUSÃO | CONSAG | YARD 7 | CNT |  |
|  | 2 | **STRUCTURE (LAGOTELA)** |  | 2026-03-17 | 2026-03-25 |  |  |  |  |  |  |  |  |  |  |  |  |  |  |
| PSUAY-CAG-CIV-12100 |  | Execute ISPS Mesh Fences in Section C - Yard 7 | 7d | 2026-03-17 | 2026-03-25 | PSUAY-CAG-CIV-12080, PSUAY-CAG-CIV-12090 |  |  |  |  | 17d | 1d | PROFIS [38428.7 h]; MATERIAL - CERCA [449.75 m] | PSUAY-CAG-CIV-12100 | CONCLUSÃO | LAGOTELA | YARD 7 | CNT |  |
|  | 2 | **SECTION D** |  | 2026-03-11 | 2026-03-26 |  |  |  |  |  |  |  |  |  |  |  |  |  |  |
|  | 1 | **FUNDATION** |  | 2026-03-11 | 2026-03-17 |  |  |  |  |  |  |  |  |  |  |  |  |  |  |
| PSUAY-CAG-CIV-12110 |  | Execute foundation of ISPS Mesh Fences in Section D - Yard 7 | 5d | 2026-03-11 | 2026-03-17 | PSUAY-CAG-CIV-12090 |  |  |  |  | 11d | 0d | PROFIS [9723.35 h] | PSUAY-CAG-CIV-12110 | CONCLUSÃO | CONSAG | YARD 7 | CNT |  |
|  | 2 | **STRUCTURE (LAGOTELA)** |  | 2026-03-18 | 2026-03-26 |  |  |  |  |  |  |  |  |  |  |  |  |  |  |
| PSUAY-CAG-CIV-12120 |  | Execute ISPS Mesh Fences in Section D - Yard 7 | 7d | 2026-03-18 | 2026-03-26 | PSUAY-CAG-CIV-12100 FF, PSUAY-CAG-CIV-12110 |  |  |  |  | 16d | 0d | PROFIS [38428.7 h]; MATERIAL - CERCA [449.75 m] | PSUAY-CAG-CIV-12120 | CONCLUSÃO | LAGOTELA | YARD 7 | CNT |  |
|  | 5 | **GATES** |  | 2026-03-27 | 2026-03-27 |  |  |  |  |  |  |  |  |  |  |  |  |  |  |
| PSUAY-LGT-INF-12130 |  | Execute gates assembly in Yard 7 | 1d | 2026-03-27 | 2026-03-27 | PSUAY-CAG-CIV-12120 |  |  |  |  | 16d |  | PROFIS [1080.97 h] | PSUAY-LGT-INF-12130 | CONCLUSÃO | LAGOTELA | YARD 7 | CNT |  |
|  | 2 | **ISPS CONCRETE FENCE** |  | 2026-01-19 | 2026-04-03 |  |  |  |  |  |  |  |  |  |  |  |  |  |  |
|  | 1 | **SECTION A** |  | 2026-01-19 | 2026-03-24 |  |  |  |  |  |  |  |  |  |  |  |  |  |  |
|  | 1 | **FUNDATION** |  | 2026-01-19 | 2026-03-17 |  |  |  |  |  |  |  |  |  |  |  |  |  |  |
| PSUAY-CAG-CIV-12140 |  | Execute foundation of ISPS Concrete Fences in Section 1 - Yard 7 | 4d | 2026-01-19 A | 2026-03-17 | PSUAY-CAG-INF-5600, PSUAY-CAG-CIV-12110 FF | 40% | 4d | 2026-03-11 | 2026-03-16 | 11d | 0d | PROFIS [6275.05 h] | PSUAY-CAG-CIV-12140 | CONCLUSÃO | CONSAG | YARD 7 | CNT |  |
|  | 2 | **STRUCTURE (PRE-NORTE)** |  | 2026-01-21 | 2026-03-24 |  |  |  |  |  |  |  |  |  |  |  |  |  |  |
| PSUAY-CAG-CIV-12150 |  | Execute ISPS Concrete Fences in Section 01 - Yard 7 | 5d | 2026-01-21 A | 2026-03-24 | PSUAY-CAG-CIV-12140 | 10% | 5d | 2026-03-17 | 2026-03-23 | 14d | 0d | PROFIS [9683.71 h]; MATERIAL - CERCA [129 m] | PSUAY-CAG-CIV-12150 | CONCLUSÃO | CONSAG | YARD 7 | CNT |  |

Notes:
- PSUAY-CAG-CIV-12060: Translate: Execute cercas de malha ISPS na Seção A - Pátio 7
- PSUAY-CAG-CIV-12070: Translate: Executar a fundação das cercas de malha ISPS na Seção B - Pátio 7
- PSUAY-CAG-CIV-12080: Translate: Execute cercas de malha ISPS na Seção B - Pátio 7
- PSUAY-CAG-CIV-12090: Translate: Executar a fundação das cercas de malha ISPS na Seção C - Pátio 7
- PSUAY-CAG-CIV-12110: Translate: Executar cercas de malha ISPS na Seção C - Pátio 7
- PSUAY-CAG-CIV-12120: Translate: Executar a fundação das cercas de malha ISPS na Seção D - Pátio 7
- PSUAY-LGT-INF-12130: Translate: Montagem dos portões no pátio 7
- PSUAY-CAG-CIV-12140: Translate: Executar a fundação das cercas de concreto do ISPS na Seção 1 - Pátio 7
- PSUAY-CAG-CIV-12150: Translate: Execute cercas de concreto do ISPS na Seção 01 - Pátio 7

| ID | WBS | Activity | Duration | Start | Finish | Predecessors | Total float | Free float | Resources | Atualização | ACTIVITY ID COD. | FASES DE ENTREGA | RESPONSÁVEL | ÁREAS | PHASES - YARD |
| --- | --- | --- | --- | --- | --- | --- | --- | --- | --- | --- | --- | --- | --- | --- | --- |
|  | 2 | **SECTION B** |  | 2026-03-18 | 2026-03-31 |  |  |  |  |  |  |  |  |  |  |
|  | 1 | **FUNDATION** |  | 2026-03-18 | 2026-03-23 |  |  |  |  |  |  |  |  |  |  |
| PSUAY-CAG-CIV-12160 |  | Execute foundation of ISPS Concrete Fences in Section 1 - Yard 7 | 4d | 2026-03-18 | 2026-03-23 | PSUAY-CAG-CIV-12140 | 11d | 0d | PROFIS [6275.05 h] | OK | PSUAY-CAG-CIV-12160 | CONCLUSÃO | CONSAG | YARD 7 | CNT |
|  | 2 | **STRUCTURE (PRE-NORTE)** |  | 2026-03-25 | 2026-03-31 |  |  |  |  |  |  |  |  |  |  |
| PSUAY-CAG-CIV-12170 |  | Execute ISPS Concrete Fences in Section 01 - Yard 7 | 5d | 2026-03-25 | 2026-03-31 | PSUAY-CAG-CIV-12150, PSUAY-CAG-CIV-12160 | 14d | 3d | PROFIS [9683.71 h]; MATERIAL - CERCA [129 m] |  | PSUAY-CAG-CIV-12170 | CONCLUSÃO | CONSAG | YARD 7 | CNT |
|  | 3 | **SECTION C** |  | 2026-03-24 | 2026-04-03 |  |  |  |  |  |  |  |  |  |  |
|  | 1 | **FUNDATION** |  | 2026-03-24 | 2026-03-27 |  |  |  |  |  |  |  |  |  |  |
| PSUAY-CAG-CIV-12180 |  | Execute foundation of ISPS Concrete Fences in Section 1 - Yard 7 | 4d | 2026-03-24 | 2026-03-27 | PSUAY-CAG-CIV-12160 | 11d | 0d | PROFIS [6275.05 h] |  | PSUAY-CAG-CIV-12180 | CONCLUSÃO | CONSAG | YARD 7 | CNT |
|  | 2 | **STRUCTURE (PRE-NORTE)** |  | 2026-03-30 | 2026-04-03 |  |  |  |  |  |  |  |  |  |  |
| PSUAY-CAG-CIV-12190 |  | Execute ISPS Concrete Fences in Section 01 - Yard 7 | 5d | 2026-03-30 | 2026-04-03 | PSUAY-CAG-CIV-12170 FF, PSUAY-CAG-CIV-12180 | 11d | 0d | PROFIS [9683.71 h]; MATERIAL - CERCA [129 m] |  | PSUAY-CAG-CIV-12190 | CONCLUSÃO | CONSAG | YARD 7 | CNT |
|  | 4 | **SECTION D** |  | 2026-03-24 | 2026-04-03 |  |  |  |  |  |  |  |  |  |  |
|  | 1 | **FUNDATION** |  | 2026-03-24 | 2026-03-27 |  |  |  |  |  |  |  |  |  |  |
| PSUAY-CAG-CIV-12200 |  | Execute foundation of ISPS concrete Fences in Section 1 - Yard 7 | 4d | 2026-03-24 | 2026-03-27 | PSUAY-CAG-CIV-12180 FF | 11d | 0d | PROFIS [6275.05 h] |  | PSUAY-CAG-CIV-12200 | CONCLUSÃO | CONSAG | YARD 7 | CNT |
|  | 2 | **STRUCTURE (PRE-NORTE)** |  | 2026-03-30 | 2026-04-03 |  |  |  |  |  |  |  |  |  |  |
| PSUAY-CAG-CIV-12210 |  | Execute ISPS Concrete Fences in Section 01 - Yard 7 | 5d | 2026-03-30 | 2026-04-03 | PSUAY-CAG-CIV-12190 FF, PSUAY-CAG-CIV-12200 | 11d | 0d | PROFIS [9683.71 h]; MATERIAL - CERCA [129 m] |  | PSUAY-CAG-CIV-12210 | CONCLUSÃO | CONSAG | YARD 7 | CNT |
|  | 5 | **SECTION E** |  | 2026-03-24 | 2026-04-03 |  |  |  |  |  |  |  |  |  |  |
|  | 1 | **FUNDATION** |  | 2026-03-24 | 2026-03-27 |  |  |  |  |  |  |  |  |  |  |
| PSUAY-CAG-CIV-12220 |  | Execute foundation of ISPS concrete Fences in Section 1 - Yard 7 | 4d | 2026-03-24 | 2026-03-27 | PSUAY-CAG-CIV-12200 FF | 11d | 0d | PROFIS [6275.05 h] |  | PSUAY-CAG-CIV-12220 | CONCLUSÃO | CONSAG | YARD 7 | CNT |
|  | 2 | **STRUCTURE (PRE-NORTE)** |  | 2026-03-30 | 2026-04-03 |  |  |  |  |  |  |  |  |  |  |
| PSUAY-CAG-CIV-12230 |  | Execute ISPS concrete Fences in Section 01 - Yard 7 | 5d | 2026-03-30 | 2026-04-03 | PSUAY-CAG-CIV-12210 FF, PSUAY-CAG-CIV-12220 | 11d |  | PROFIS [9683.71 h]; MATERIAL - CERCA [129 m] |  | PSUAY-CAG-CIV-12230 | CONCLUSÃO | CONSAG | YARD 7 | CNT |
|  | 7 | **GC1** |  | 2026-01-26 | 2026-04-13 |  |  |  |  |  |  |  |  |  |  |
|  | 2 | **BOXES** |  | 2026-01-26 | 2026-02-26 |  |  |  |  |  |  |  |  |  |  |
|  | 2 | **LV BOXES - LOW VOLTAGE** |  | 2026-01-26 | 2026-02-26 |  |  |  |  |  |  |  |  |  |  |
| PSUAY-CAG-INF-12240 |  | Execute GC1 LV-C01-01 pit | 4d | 2026-01-26 | 2026-01-29 | PSUAY-MIL-GER-1400 | 14d | 0d | PROFIS [7451.14 h] |  | PSUAY-CAG-INF-12240 | CONCLUSÃO | CONSAG | CG1 | CNT |
| PSUAY-CAG-INF-12250 |  | Execute GC1 LV-C02-01 pit | 4d | 2026-01-30 | 2026-02-04 | PSUAY-CAG-INF-12240 | 14d | 0d | PROFIS [7332.6 h] |  | PSUAY-CAG-INF-12250 | CONCLUSÃO | CONSAG | CG1 | CNT |
| PSUAY-CAG-INF-12260 |  | Execute GC1 LV-B03-01 pit | 4d | 2026-02-05 | 2026-02-10 | PSUAY-CAG-INF-12250 | 14d | 0d | PROFIS [7332.6 h] |  | PSUAY-CAG-INF-12260 | CONCLUSÃO | CONSAG | CG1 | CNT |
| PSUAY-CAG-INF-12270 |  | Execute GC1 LV-B01-02 pit | 4d | 2026-02-11 | 2026-02-16 | PSUAY-CAG-INF-12260 | 14d | 0d | PROFIS [6028.58 h] |  | PSUAY-CAG-INF-12270 | CONCLUSÃO | CONSAG | CG1 | CNT |
| PSUAY-CAG-INF-12280 |  | Execute GC1 LV-B01-01 pit | 5d | 2026-02-17 | 2026-02-23 | PSUAY-CAG-INF-12270 | 14d | 0d | PROFIS [8264.03 h] |  | PSUAY-CAG-INF-12280 | CONCLUSÃO | CONSAG | CG1 | CNT |
| PSUAY-CAG-INF-12290 |  | Execute GC1 LV-A01-01 pit | 3d | 2026-02-24 | 2026-02-26 | PSUAY-CAG-INF-12280 | 14d | 0d | PROFIS [5012.47 h] |  | PSUAY-CAG-INF-12290 | CONCLUSÃO | CONSAG | CG1 | CNT |

Notes:
- PSUAY-CAG-CIV-12160: Translate: Executar a fundação das cercas de concreto do ISPS na Seção 1 - Pátio 7
- PSUAY-CAG-CIV-12170: Translate: Execute cercas de concreto do ISPS na Seção 01 - Pátio 7
- PSUAY-CAG-CIV-12180: Translate: Executar a fundação das cercas de concreto do ISPS na Seção 1 - Pátio 7
- PSUAY-CAG-CIV-12190: Translate: Execute cercas de concreto do ISPS na Seção 01 - Pátio 7
- PSUAY-CAG-CIV-12200: Translate: Executar a fundação das cercas de concreto do ISPS na Seção 1 - Pátio 7
- PSUAY-CAG-CIV-12210: Translate: Execute cercas de concreto do ISPS na Seção 01 - Pátio 7
- PSUAY-CAG-CIV-12220: Translate: Executar a fundação das cercas de concreto do ISPS na Seção 1 - Pátio 7
- PSUAY-CAG-CIV-12230: Translate: Executar cercas de concreto da ISPS na Seção 01 - Pátio 7
- PSUAY-CAG-INF-12240: Translate: GC1 - Caixa - LV-C01-01
- PSUAY-CAG-INF-12250: Translate: GC1 - Caixa - LV-C02-01
- PSUAY-CAG-INF-12260: Translate: GC1 - Caixa - LV-B03-01
- PSUAY-CAG-INF-12270: Translate: GC1 - Caixa - LV-B01-02
- PSUAY-CAG-INF-12280: Translate: GC1 - Caixa - LV-B01-01
- PSUAY-CAG-INF-12290: Translate: GC1 - Caixa - LV-A01-01

| ID | WBS | Activity | Duration | Start | Finish | Predecessors | Total float | Free float | Resources | ACTIVITY ID COD. | FASES DE ENTREGA | RESPONSÁVEL | ÁREAS | PHASES - YARD |
| --- | --- | --- | --- | --- | --- | --- | --- | --- | --- | --- | --- | --- | --- | --- |
|  | 1 | **FW BOXES - FIREWATER** |  | 2026-01-26 | 2026-02-12 |  |  |  |  |  |  |  |  |  |
| PSUAY-CAG-INF-12300 |  | Execute GC1 FW-C01-01 pit | 2d | 2026-01-26 | 2026-01-27 | PSUAY-MIL-GER-1400 | 18d | 0d | PROFIS [3884.29 h] | PSUAY-CAG-INF-12300 | CONCLUSÃO | CONSAG | CG1 | CNT |
| PSUAY-CAG-INF-12310 |  | Execute GC1 FW-C01-02 pit | 3d | 2026-01-28 | 2026-01-30 | PSUAY-CAG-INF-12300 | 22d | 0d | PROFIS [4192.88 h] | PSUAY-CAG-INF-12310 | CONCLUSÃO | CONSAG | CG1 | CNT |
| PSUAY-CAG-INF-12320 |  | Execute GC1 FW-C02-01 pit | 3d | 2026-02-02 | 2026-02-04 | PSUAY-CAG-INF-12310 | 22d | 0d | PROFIS [5536.02 h] | PSUAY-CAG-INF-12320 | CONCLUSÃO | CONSAG | CG1 | CNT |
| PSUAY-CAG-INF-12330 |  | Execute GC1 FW-B01-01 pit | 3d | 2026-02-05 | 2026-02-09 | PSUAY-CAG-INF-12320 | 22d | 0d | PROFIS [5440.89 h] | PSUAY-CAG-INF-12330 | CONCLUSÃO | CONSAG | CG1 | CNT |
| PSUAY-CAG-INF-12340 |  | Execute GC1 FW-B03-01 pit | 3d | 2026-02-10 | 2026-02-12 | PSUAY-CAG-INF-12330 | 22d | 4d | PROFIS [5826.8 h] | PSUAY-CAG-INF-12340 | CONCLUSÃO | CONSAG | CG1 | CNT |
|  | 3 | **INFRAESTRUCTURE** |  | 2026-01-28 | 2026-03-04 |  |  |  |  |  |  |  |  |  |
|  | 1 | **LV INFRASTRUCTURE** |  | 2026-01-30 | 2026-03-04 |  |  |  |  |  |  |  |  |  |
| PSUAY-CAG-INF-12350 |  | Execute infra LV from pit LV-C01-01 to LV-C02-01 of GC1 | 2d | 2026-01-30 | 2026-02-02 | PSUAY-CAG-INF-12240 | 20d | 0d | PROFIS [6305.67 h]; INFRA-STRUCTURE ELECTRICAL [70 m] | PSUAY-CAG-INF-12350 | CONCLUSÃO | CONSAG | CG1 | CNT |
| PSUAY-CAG-INF-12360 |  | Execute infra LV from box LV-C01-01 to LV-B01-02 of GC1 | 2d | 2026-02-03 | 2026-02-04 | PSUAY-CAG-INF-12350 | 20d | 0d | PROFIS [5585.02 h]; INFRA-STRUCTURE ELECTRICAL [62 m] | PSUAY-CAG-INF-12360 | CONCLUSÃO | CONSAG | CG1 | CNT |
| PSUAY-CAG-INF-12370 |  | Execute infra LV from box LV-B01-02 to LV-B01-01 of GC1 | 2d | 2026-02-05 | 2026-02-06 | PSUAY-CAG-INF-12360 | 20d | 0d | PROFIS [6936.24 h]; INFRA-STRUCTURE ELECTRICAL [77 m] | PSUAY-CAG-INF-12370 | CONCLUSÃO | CONSAG | CG1 | CNT |
| PSUAY-CAG-INF-12380 |  | Execute infra LV from box LV-B01-01 to LV-A01-01 of GC1 | 2d | 2026-02-09 | 2026-02-10 | PSUAY-CAG-INF-12370 | 20d | 0d | PROFIS [4504.05 h]; INFRA-STRUCTURE ELECTRICAL [50 m] | PSUAY-CAG-INF-12380 | CONCLUSÃO | CONSAG | CG1 | CNT |
| PSUAY-CAG-INF-12390 |  | Execute infra LV from box LV-B01-01 to LV-B03-01 of GC1 | 3d | 2026-02-11 | 2026-02-13 | PSUAY-CAG-INF-12380 | 20d | 0d | PROFIS [9188.27 h]; INFRA-STRUCTURE ELECTRICAL [102 m] | PSUAY-CAG-INF-12390 | CONCLUSÃO | CONSAG | CG1 | CNT |
| PSUAY-CAG-INF-12400 |  | Execute infra LV from box LV-C02-01 to LV-B03-01 of GC1 | 3d | 2026-02-16 | 2026-02-18 | PSUAY-CAG-INF-12390 | 20d | 6d | PROFIS [9458.51 h]; INFRA-STRUCTURE ELECTRICAL [105 m] | PSUAY-CAG-INF-12400 | CONCLUSÃO | CONSAG | CG1 | CNT |
| PSUAY-CAG-INF-12410 |  | Execute infra LV from box LV-A01-01 to LMT of GC1 | 2d | 2026-02-27 | 2026-03-02 | PSUAY-CAG-INF-12400, PSUAY-CAG-INF-12290 | 14d | 0d | PROFIS [5585.02 h]; INFRA-STRUCTURE ELECTRICAL [62 m] | PSUAY-CAG-INF-12410 | CONCLUSÃO | CONSAG | CG1 | CNT |
| PSUAY-CAG-INF-12420 |  | Execute infra LV from box LV-B03-01 to CT-C03-02 of GC1 | 2d | 2026-03-03 | 2026-03-04 | PSUAY-CAG-INF-12410 | 14d | 8.34d | PROFIS [7206.48 h]; INFRA-STRUCTURE ELECTRICAL [80 m] | PSUAY-CAG-INF-12420 | CONCLUSÃO | CONSAG | CG1 | CNT |
|  | 2 | **FW INFRASTRUCTURE** |  | 2026-01-28 | 2026-02-18 |  |  |  |  |  |  |  |  |  |
| PSUAY-CAG-INF-12430 |  | Execute infra FW from box FW-C01-02 to FW-C01-02* of GC1 | 2d | 2026-01-28 | 2026-01-29 | PSUAY-CAG-INF-12300 | 18d | 0d | PROFIS [5404.86 h] | PSUAY-CAG-INF-12430 | CONCLUSÃO | CONSAG | CG1 | CNT |
| PSUAY-CAG-INF-12440 |  | Execute infra FW from box FW-C01-02* to FW-B01-01 of GC1 | 2d | 2026-01-30 | 2026-02-02 | PSUAY-CAG-INF-12430 | 18d | 0d | PROFIS [5404.86 h] | PSUAY-CAG-INF-12440 | CONCLUSÃO | CONSAG | CG1 | CNT |
| PSUAY-CAG-INF-12450 |  | Execute infra FW from box FW-B01-01 to LMT of GC1 | 2d | 2026-02-03 | 2026-02-04 | PSUAY-CAG-INF-12440 | 18d | 0d | PROFIS [6305.67 h] | PSUAY-CAG-INF-12450 | CONCLUSÃO | CONSAG | CG1 | CNT |
| PSUAY-CAG-INF-12460 |  | Execute infra FW from box FW-B01-01 to FW-C01-01 of GC1 | 3d | 2026-02-05 | 2026-02-09 | PSUAY-CAG-INF-12450 | 18d | 0d | PROFIS [10359.3 h] | PSUAY-CAG-INF-12460 | CONCLUSÃO | CONSAG | CG1 | CNT |
| PSUAY-CAG-INF-12470 |  | Execute infra FW from box FW-C01-01 to FW-B03-01 of GC1 | 1d | 2026-02-10 | 2026-02-10 | PSUAY-CAG-INF-12460 | 18d | 0d | PROFIS [450.41 h] | PSUAY-CAG-INF-12470 | CONCLUSÃO | CONSAG | CG1 | CNT |
| PSUAY-CAG-INF-12480 |  | Execute infra FW from box FW-C01-02 to FW-C02-01* of GC1 | 2d | 2026-02-11 | 2026-02-12 | PSUAY-CAG-INF-12470 | 18d | 0d | PROFIS [4504.05 h] | PSUAY-CAG-INF-12480 | CONCLUSÃO | CONSAG | CG1 | CNT |
| PSUAY-CAG-INF-12490 |  | Execute infra FW from box FW-C02-01* to FW-B03-01 of GC1 | 4d | 2026-02-13 | 2026-02-18 | PSUAY-CAG-INF-12480 | 18d | 0d | PROFIS [15313.8 h] | PSUAY-CAG-INF-12490 | CONCLUSÃO | CONSAG | CG1 | CNT |

Notes:
- PSUAY-CAG-INF-12300: Translate: GC1 - Caixa - FW-C01-01
- PSUAY-CAG-INF-12310: Translate: GC1 - Caixa - FW-C01-02
- PSUAY-CAG-INF-12320: Translate: GC1 - Caixa - FW-C02-01
- PSUAY-CAG-INF-12330: Translate: GC1 - Caixa - FW-B01-01
- PSUAY-CAG-INF-12340: Translate: GC1 - Caixa - FW-B03-01
- PSUAY-CAG-INF-12350: Translate: Trincheira entre caixas elétricas - LV-C01-01 até LV-C02-01
- PSUAY-CAG-INF-12360: Translate: Trincheira entre caixas elétricas - LV-C01-01 até LV-B01-02
- PSUAY-CAG-INF-12370: Translate: Trincheira entre caixas elétricas - LV-B01-02 até LV-B01-01
- PSUAY-CAG-INF-12380: Translate: Trincheira entre caixas elétricas - LV-B01-01 até LV-A01-01
- PSUAY-CAG-INF-12390: Translate: Trincheira entre caixas elétricas - LV-B01-01 até LV-B03-01
- PSUAY-CAG-INF-12400: Translate: Trincheira entre caixas elétricas - LV-C02-01 até LV-B03-01
- PSUAY-CAG-INF-12410: Translate: Trincheira entre caixas elétricas - LV-A01-01 até o Limite de baterias
- PSUAY-CAG-INF-12420: Translate: Trincheira entre caixas elétricas - LV-B03-01 até CT-C03-02
- PSUAY-CAG-INF-12430: Translate: Trincheira entre caixas de água contra incêndio - FW-C01-02 até FW-C01-02*
- PSUAY-CAG-INF-12440: Translate: Trincheira entre caixas de água contra incêndio - FW-C01-02* até FW-B01-01
- PSUAY-CAG-INF-12450: Translate: Trincheira entre caixas de água contra incêndio - FW-B01-01 até o Limite de baterias
- PSUAY-CAG-INF-12460: Translate: Trincheira entre caixas de água contra incêndio - FW-B01-01 até FW-C01-01
- PSUAY-CAG-INF-12470: Translate: Trincheira entre caixas de água contra incêndio - FW-C01-01 até FW-B03-01
- PSUAY-CAG-INF-12480: Translate: Trincheira entre caixas de água contra incêndio - FW-C01-02 até FW-C02-01*
- PSUAY-CAG-INF-12490: Translate: Trincheira entre caixas de água contra incêndio - FW-C02-01* até FW-B03-01

| ID | WBS | Activity | Duration | Start | Finish | Predecessors | Total float | Free float | Calendar | Resources | ACTIVITY ID COD. | FASES DE ENTREGA | RESPONSÁVEL | ÁREAS | PHASES - YARD | Check Pred | SERVIÇOS |
| --- | --- | --- | --- | --- | --- | --- | --- | --- | --- | --- | --- | --- | --- | --- | --- | --- | --- |
|  | 4 | **POSTS** |  | 2026-03-05 | 2026-04-01 |  |  |  |  |  |  |  |  |  |  |  |  |
|  | 1 | **CT POSTS** |  | 2026-03-05 | 2026-04-01 |  |  |  |  |  |  |  |  |  |  |  |  |
|  | 1 | **BASE FOUNDATION** |  | 2026-03-05 | 2026-03-18 |  |  |  |  |  |  |  |  |  |  |  |  |
| PSUAY-CAG-CIV-12500 |  | Execute base foundation for CT posts in CG1 | 9d | 2026-03-05 | 2026-03-18 | PSUAY-MIL-GER-1400, PSUAY-CAG-CIV-12690 | 13.66d | 0d |  | PROFIS [67560.8 h] | PSUAY-CAG-CIV-12500 | CONCLUSÃO | CONSAG | CG1 | CNT |  |  |
|  | 2 | **ASSEMBLY (LUZVILLE)** |  | 2026-03-18 | 2026-04-01 |  |  |  |  |  |  |  |  |  |  |  |  |
| PSUAY-LZE-ELE-12510 |  | Execute assembly of CT posts in CG1 | 10d | 2026-03-18 | 2026-04-01 | PSUAY-CAG-CIV-12500 | 13.66d | 0d | PSUAY - ELETROMEC - 1T - SEM HE | PROFIS [19303.1 h]; POST CCTV [12 un] | PSUAY-LZE-ELE-12510 | CONCLUSÃO | LUZVILLE | CG1 | CNT |  |  |
|  | 3 | **CAMERAS (G4S)** |  | 2026-04-01 | 2026-04-01 |  |  |  |  |  |  |  |  |  |  |  |  |
| PSUAY-G4S-ELE-12520 |  | Handover CT posts for cameras assembly in CG1 | 0d | 2026-04-01 | 2026-04-01 | PSUAY-LZE-ELE-12510 | 13.66d |  | PSUAY - ELETROMEC - 1T - SEM HE | PROFIS | PSUAY-G4S-ELE-12520 | CONCLUSÃO | LUZVILLE | CG1 | CNT |  |  |
|  | 5 | **TOWERS** |  | 2026-01-26 | 2026-04-13 |  |  |  |  |  |  |  |  |  |  |  |  |
| PSUAY-CAG-CIV-12530 |  | Excavation and regularization for base foundation of High Mast Towers | 1d | 2026-01-26 | 2026-01-27 | PSUAY-MIL-GER-1400 | 4.43d | 0d | PSUAY - TERRA - 1T - SEM HE | PROFIS [122.62 h] | PSUAY-CAG-CIV-12530 | CONCLUSÃO | CONSAG | CG1 | CNT |  |  |
|  | 2 | **HIGH MAST HM-C02-01** |  | 2026-01-27 | 2026-02-25 |  |  |  |  |  |  |  |  |  |  |  |  |
|  | 1 | **BASE FOUNDATION** |  | 2026-01-27 | 2026-02-05 |  |  |  |  |  |  |  |  |  |  |  |  |
| PSUAY-CAG-CIV-12540 |  | Execute steel for the civil base of the HM-C02-01 in CG1 | 4d | 2026-01-27 | 2026-02-02 | PSUAY-MIL-GER-1400, PSUAY-CAG-CIV-12530 | 5.66d | 0d |  | PROFIS [62948.5 h] | PSUAY-CAG-CIV-12540 | CONCLUSÃO | CONSAG | CG1 | CNT | UDF_G1 | HM-CIV |
| PSUAY-CAG-CIV-12550 |  | Execute the formwork for the civil base of HM-C02-01 in CG1 | 1d | 2026-02-02 | 2026-02-03 | PSUAY-CAG-CIV-12540 | 5.66d | 0d |  | PROFIS [9777.4 h] | PSUAY-CAG-CIV-12550 | CONCLUSÃO | CONSAG | CG1 | CNT |  | HM-CIV |
| PSUAY-CAG-CIV-12560 |  | Execute concrete for the civil foundations of the HM-C02-01 in CG1 | 1d | 2026-02-03 | 2026-02-04 | PSUAY-CAG-CIV-12550 | 19.66d | 0d |  | PROFIS [595.15 h]; CONCRETE-STRUCTURE [29.07 m³] | PSUAY-CAG-CIV-12560 | CONCLUSÃO | CONSAG | CG1 | CNT |  | HM-CIV |
| PSUAY-CAG-CIV-12570 |  | Execute HM-C02-01 panels foundation in CG1 | 1d | 2026-02-04 | 2026-02-05 | PSUAY-CAG-CIV-12560 | 19.66d | 0d |  | PROFIS [2420.93 h] | PSUAY-CAG-CIV-12570 | CONCLUSÃO | CONSAG | CG1 | CNT |  | HM-CIV |
|  | 2 | **ASSEMBLY (LUZVILLE)** |  | 2026-02-05 | 2026-02-13 |  |  |  |  |  |  |  |  |  |  |  |  |
| PSUAY-LZE-ELE-12580 |  | Execute HM-C02-01 assembly in CG1 | 6d | 2026-02-05 | 2026-02-13 | PSUAY-CAG-CIV-12570 | 19.66d | 0d | PSUAY - ELETROMEC - 1T - SEM HE | PROFIS [11890.7 h]; POST HIGH MAST [1 un] | PSUAY-LZE-ELE-12580 | CONCLUSÃO | LUZVILLE | CG1 | CNT |  | HM-ASSEM |
|  | 3 | **ENERGIZATION (LUZVILLE)** |  | 2026-02-13 | 2026-02-25 |  |  |  |  |  |  |  |  |  |  |  |  |
| PSUAY-LZE-ELE-12590 |  | Execute HM-C02-01 BT cable pulling and energization in CG1 | 8d | 2026-02-13 | 2026-02-25 | PSUAY-LZE-ELE-12580 | 19.66d | 14d | PSUAY - ELETROMEC - 1T - SEM HE | PROFIS [13994.7 h]; CABLE LOW VOLTAGE [2175 m] | PSUAY-LZE-ELE-12590 | CONCLUSÃO | LUZVILLE | CG1 | CNT |  | HM-ENERG |
|  | 3 | **HIGH MAST HM-B03-01** |  | 2026-02-17 | 2026-03-25 |  |  |  |  |  |  |  |  |  |  |  |  |
|  | 1 | **BASE FOUNDATION** |  | 2026-02-17 | 2026-02-26 |  |  |  |  |  |  |  |  |  |  |  |  |
| PSUAY-CAG-CIV-12600 |  | Execute steel for the civil base of the HM-B03-01 in CG1 | 4d | 2026-02-17 | 2026-02-23 | PSUAY-MIL-GER-1400, PSUAY-CAG-CIV-12550 FS+10d | 5.66d | 0d |  | PROFIS [62948.5 h] | PSUAY-CAG-CIV-12600 | CONCLUSÃO | CONSAG | CG1 | CNT | UDF_G1 | HM-CIV |
| PSUAY-CAG-CIV-12610 |  | Execute the formwork for the civil base of HM-B03-01 in CG1 | 1d | 2026-02-23 | 2026-02-24 | PSUAY-CAG-CIV-12600 | 5.66d | 0d |  | PROFIS [9777.4 h] | PSUAY-CAG-CIV-12610 | CONCLUSÃO | CONSAG | CG1 | CNT |  | HM-CIV |
| PSUAY-CAG-CIV-12620 |  | Execute concrete for the civil foundations of the HM-B03-01 in CG1 | 1d | 2026-02-24 | 2026-02-25 | PSUAY-CAG-CIV-12610 | 5.66d | 0d |  | PROFIS [595.15 h]; CONCRETE-STRUCTURE [29.07 m³] | PSUAY-CAG-CIV-12620 | CONCLUSÃO | CONSAG | CG1 | CNT |  | HM-CIV |
| PSUAY-CAG-CIV-12630 |  | Execute HM-B03-01 panels foundation in CG1 | 1d | 2026-02-25 | 2026-02-26 | PSUAY-CAG-CIV-12620 | 5.66d | 0d |  | PROFIS [2420.93 h] | PSUAY-CAG-CIV-12630 | CONCLUSÃO | CONSAG | CG1 | CNT |  | HM-CIV |

Notes:
- PSUAY-CAG-CIV-12500: Translate: Fundação das bases dos postes de concreto (CT)
- PSUAY-LZE-ELE-12510: Translate: Montagem do poste de concreto (CT)
- PSUAY-G4S-ELE-12520: Translate: Entrega dos postes de concreto para montage das câmeras de vigilância
- PSUAY-CAG-CIV-12530: Translate: Escavação e regularização para a fundação de base de torres de grande alturas
- PSUAY-CAG-CIV-12540: Translate: HM-C02-01 - Armação
- PSUAY-CAG-CIV-12550: Translate: HM-C02-01 - Forma
- PSUAY-CAG-CIV-12560: Translate: HM-C02-01 - Concreto
- PSUAY-CAG-CIV-12570: Translate: HM-C02-01 - Armação, forma e Concretagem da base dos painéis
- PSUAY-LZE-ELE-12580: Translate: HM-C02-01 - Montagem da estrutura
- PSUAY-LZE-ELE-12590: Translate: HM-C02-01 - Lançamento de cabos e energização
- PSUAY-CAG-CIV-12600: Translate: HM-B03-01 - Armação
- PSUAY-CAG-CIV-12610: Translate: HM-B03-01 - Forma
- PSUAY-CAG-CIV-12620: Translate: HM-B03-01 - Concreto
- PSUAY-CAG-CIV-12630: Translate: HM-B03-01 - Armação, forma e Concretagem da base dos painéis

| ID | WBS | Activity | Duration | Start | Finish | Predecessors | Total float | Free float | Calendar | Resources | ACTIVITY ID COD. | FASES DE ENTREGA | RESPONSÁVEL | ÁREAS | SERVIÇOS | PHASES - YARD | Check Pred |
| --- | --- | --- | --- | --- | --- | --- | --- | --- | --- | --- | --- | --- | --- | --- | --- | --- | --- |
|  | 2 | **ASSEMBLY (LUZVILLE)** |  | 2026-03-09 | 2026-03-17 |  |  |  |  |  |  |  |  |  |  |  |  |
| PSUAY-LZE-ELE-12640 |  | Execute HM-B03-01 assembly in CG1 | 6d | 2026-03-09 | 2026-03-17 | PSUAY-CAG-CIV-12630 FS+7d, PSUAY-LZE-ELE-12580 | 5.66d | 0d | PSUAY - ELETROMEC - 1T - SEM HE | PROFIS [11890.7 h]; POST HIGH MAST [1 un] | PSUAY-LZE-ELE-12640 | CONCLUSÃO | LUZVILLE | CG1 | HM-ASSEM | CNT |  |
|  | 3 | **ENERGIZATION (LUZVILLE)** |  | 2026-03-17 | 2026-03-25 |  |  |  |  |  |  |  |  |  |  |  |  |
| PSUAY-LZE-ELE-12650 |  | Execute HM-B03-01 BT cable pulling and energization in CG1 | 6d | 2026-03-17 | 2026-03-25 | PSUAY-LZE-ELE-12640, PSUAY-CAG-INF-12420, PSUAY-LZE-ELE-12590 | 5.66d | 0d | PSUAY - ELETROMEC - 1T - SEM HE | PROFIS [10841.9 h]; CABLE LOW VOLTAGE [1685 m] | PSUAY-LZE-ELE-12650 | CONCLUSÃO | LUZVILLE | CG1 | HM-ENERG | CNT |  |
|  | 1 | **HIGH MAST HM-A01-01** |  | 2026-02-24 | 2026-04-01 |  |  |  |  |  |  |  |  |  |  |  |  |
|  | 1 | **BASE FOUNDATION** |  | 2026-02-24 | 2026-03-05 |  |  |  |  |  |  |  |  |  |  |  |  |
| PSUAY-CAG-CIV-12660 |  | Execute steel for the civil base of the HM-A01-01 in CG1 | 4d | 2026-02-24 | 2026-03-02 | PSUAY-MIL-GER-1400, PSUAY-CAG-CIV-12610 | 6.66d | 0d |  | PROFIS [62948.5 h] | PSUAY-CAG-CIV-12660 | CONCLUSÃO | CONSAG | CG1 | HM-CIV | CNT | UDF_G1 |
| PSUAY-CAG-CIV-12670 |  | Execute the formwork for the civil base of HM-A01-01 in CG1 | 1d | 2026-03-02 | 2026-03-03 | PSUAY-CAG-CIV-12660 | 6.66d | 0d |  | PROFIS [9777.4 h] | PSUAY-CAG-CIV-12670 | CONCLUSÃO | CONSAG | CG1 | HM-CIV | CNT |  |
| PSUAY-CAG-CIV-12680 |  | Execute concrete for the civil foundations of the HM-A01-01 in CG1 | 1d | 2026-03-03 | 2026-03-04 | PSUAY-CAG-CIV-12670 | 6.66d | 0d |  | PROFIS [595.15 h]; CONCRETE-STRUCTURE [29.07 m³] | PSUAY-CAG-CIV-12680 | CONCLUSÃO | CONSAG | CG1 | HM-CIV | CNT |  |
| PSUAY-CAG-CIV-12690 |  | Execute HM-A01-01 panels foundation in CG1 | 1d | 2026-03-04 | 2026-03-05 | PSUAY-CAG-CIV-12680 | 6.66d | 0d |  | PROFIS [2420.93 h] | PSUAY-CAG-CIV-12690 | CONCLUSÃO | CONSAG | CG1 | HM-CIV | CNT |  |
|  | 2 | **ASSEMBLY (LUZVILLE)** |  | 2026-03-17 | 2026-03-25 |  |  |  |  |  |  |  |  |  |  |  |  |
| PSUAY-LZE-ELE-12700 |  | Execute HM-A01-01 assembly in CG1 | 6d | 2026-03-17 | 2026-03-25 | PSUAY-CAG-CIV-12690 FS+7d, PSUAY-LZE-ELE-12640 | 5.66d | 0d | PSUAY - ELETROMEC - 1T - SEM HE | PROFIS [11890.7 h]; POST HIGH MAST [1 un] | PSUAY-LZE-ELE-12700 | CONCLUSÃO | LUZVILLE | CG1 | HM-ASSEM | CNT |  |
|  | 3 | **ENERGIZATION (LUZVILLE)** |  | 2026-03-25 | 2026-04-01 |  |  |  |  |  |  |  |  |  |  |  |  |
| PSUAY-LZE-ELE-12710 |  | Execute HM-A01-01 BT cable pulling and energization in CG1 | 5d | 2026-03-25 | 2026-04-01 | PSUAY-LZE-ELE-12700, PSUAY-CAG-INF-12420, PSUAY-LZE-ELE-12650 | 5.66d | 0d | PSUAY - ELETROMEC - 1T - SEM HE | PROFIS [9458.51 h]; CABLE LOW VOLTAGE [1470 m] | PSUAY-LZE-ELE-12710 | CONCLUSÃO | LUZVILLE | CG1 | HM-ENERG | CNT |  |
|  | 4 | **OPTIC FIBER LOOP 05** |  | 2026-04-01 | 2026-04-13 |  |  |  |  |  |  |  |  |  |  |  |  |
| PSUAY-LZE-ELE-12720 |  | Execute Fiber Optic Cable Pulling, Fusion, and Connectorization (Loop 5) in CG1 | 8d | 2026-04-01 | 2026-04-13 | PSUAY-LZE-ELE-12710, PSUAY-LZE-ELE-12650, PSUAY-LZE-ELE-12590 | 5.66d |  | PSUAY - ELETROMEC - 1T - SEM HE | PROFIS [15018.9 h]; CABLE FIBER OPTICS [2801 m] | PSUAY-LZE-ELE-12720 | CONCLUSÃO | LUZVILLE | CG1 |  | CNT |  |
|  | 7 | **ISPS MESH FENCE** |  | 2026-01-26 | 2026-03-05 |  |  |  |  |  |  |  |  |  |  |  |  |
|  | 1 | **SECTION A** |  | 2026-01-26 | 2026-02-09 |  |  |  |  |  |  |  |  |  |  |  |  |
|  | 1 | **FUNDATION** |  | 2026-01-26 | 2026-01-30 |  |  |  |  |  |  |  |  |  |  |  |  |
| PSUAY-CAG-CIV-12730 |  | Execute foundation of ISPS Mesh Fences in Section A - CG1 | 5d | 2026-01-26 | 2026-01-30 | PSUAY-MIL-GER-1400 | 32d | 0d |  | PROFIS [8647.78 h] | PSUAY-CAG-CIV-12730 | CONCLUSÃO | CONSAG | CG1 |  | CNT |  |
|  | 2 | **STRUCTURE (LAGOTELA)** |  | 2026-02-02 | 2026-02-09 |  |  |  |  |  |  |  |  |  |  |  |  |
| PSUAY-LGT-CIV-12740 |  | Execute ISPS Mesh Fences in Section A - CG1 | 6d | 2026-02-02 | 2026-02-09 | PSUAY-CAG-CIV-12730 | 32d | 0d |  | PROFIS [34177.8 h]; MATERIAL - CERCA [400 m] | PSUAY-LGT-CIV-12740 | CONCLUSÃO | LAGOTELA | CG1 |  | CNT |  |
|  | 4 | **SECTION B** |  | 2026-02-02 | 2026-02-17 |  |  |  |  |  |  |  |  |  |  |  |  |
|  | 1 | **FUNDATION** |  | 2026-02-02 | 2026-02-06 |  |  |  |  |  |  |  |  |  |  |  |  |
| PSUAY-CAG-CIV-12750 |  | Execute foundation of ISPS Mesh Fences in Section B - CG1 | 5d | 2026-02-02 | 2026-02-06 | PSUAY-CAG-CIV-12730 | 33d | 0d |  | PROFIS [8647.78 h] | PSUAY-CAG-CIV-12750 | CONCLUSÃO | CONSAG | CG1 |  | CNT |  |

Notes:
- PSUAY-LZE-ELE-12640: Translate: HM-B03-01 - Montagem da estrutura
- PSUAY-LZE-ELE-12650: Translate: HM-B03-01 - Lançamento de cabos e energização
- PSUAY-CAG-CIV-12660: Translate: HM-A01-01 - Armação
- PSUAY-CAG-CIV-12670: Translate: HM-A01-01 - Forma
- PSUAY-CAG-CIV-12680: Translate: HM-A01-01 - Concreto
- PSUAY-CAG-CIV-12690: Translate: HM-A01-01 - Armação, forma e Concretagem da base dos painéis
- PSUAY-LZE-ELE-12700: Translate: HM-A01-01 - Montagem da estrutura
- PSUAY-LZE-ELE-12710: Translate: HM-A01-01 - Lançamento de cabos e energização
- PSUAY-LZE-ELE-12720: Translate: Executar puxamento, fusão e conectivação de cabos de fibra óptica (Loop 5) em CG1
- PSUAY-CAG-CIV-12730: Translate: Cerca telada - Norma ISPS - Seção A - Fundação
- PSUAY-LGT-CIV-12740: Translate: Cerca telada - Norma ISPS - Seção A - Montagem
- PSUAY-CAG-CIV-12750: Translate: Cerca telada - Norma ISPS - Seção B - Fundação

| ID | WBS | Activity | Duration | Start | Finish | Predecessors | Total float | Free float | Calendar | Resources | Translate | ACTIVITY ID COD. | FASES DE ENTREGA | RESPONSÁVEL | ÁREAS | PHASES - YARD | Check Pred |
| --- | --- | --- | --- | --- | --- | --- | --- | --- | --- | --- | --- | --- | --- | --- | --- | --- | --- |
|  | 2 | **STRUCTURE (LAGOTELA)** |  | 2026-02-10 | 2026-02-17 |  |  |  |  |  |  |  |  |  |  |  |  |
| PSUAY-LGT-CIV-12760 |  | Execute ISPS Mesh Fences in Section B - CG1 | 6d | 2026-02-10 | 2026-02-17 | PSUAY-LGT-CIV-12740, PSUAY-CAG-CIV-12750 | 32d | 0d |  | PROFIS [34177.8 h]; MATERIAL - CERCA [400 m] | Cerca telada - Norma ISPS - Seção B - Montagem | PSUAY-LGT-CIV-12760 | CONCLUSÃO | LAGOTELA | CG1 | CNT |  |
|  | 3 | **SECTION C** |  | 2026-02-09 | 2026-02-25 |  |  |  |  |  |  |  |  |  |  |  |  |
|  | 1 | **FUNDATION** |  | 2026-02-09 | 2026-02-13 |  |  |  |  |  |  |  |  |  |  |  |  |
| PSUAY-CAG-CIV-12770 |  | Execute foundation of ISPS Mesh Fences in Section C - CG1 | 5d | 2026-02-09 | 2026-02-13 | PSUAY-CAG-CIV-12750 | 34d | 0d |  | PROFIS [8647.78 h] | Cerca telada - Norma ISPS - Seção C - Fundação | PSUAY-CAG-CIV-12770 | CONCLUSÃO | CONSAG | CG1 | CNT |  |
|  | 2 | **STRUCTURE (LAGOTELA)** |  | 2026-02-18 | 2026-02-25 |  |  |  |  |  |  |  |  |  |  |  |  |
| PSUAY-LGT-CIV-12780 |  | Execute ISPS Mesh Fences in Section C - CG1 | 6d | 2026-02-18 | 2026-02-25 | PSUAY-LGT-CIV-12760, PSUAY-CAG-CIV-12770 | 32d | 0d |  | PROFIS [34177.8 h]; MATERIAL - CERCA [400 m] | Cerca telada - Norma ISPS - Seção C - Montagem | PSUAY-LGT-CIV-12780 | CONCLUSÃO | LAGOTELA | CG1 | CNT |  |
|  | 2 | **SECTION D** |  | 2026-02-16 | 2026-03-05 |  |  |  |  |  |  |  |  |  |  |  |  |
|  | 1 | **FUNDATION** |  | 2026-02-16 | 2026-02-20 |  |  |  |  |  |  |  |  |  |  |  |  |
| PSUAY-CAG-CIV-12790 |  | Execute foundation of ISPS Mesh Fences in Section D - CG1 | 5d | 2026-02-16 | 2026-02-20 | PSUAY-CAG-CIV-12770 | 35d | 3d |  | PROFIS [8647.78 h] | Cerca telada - Norma ISPS - Seção D - Fundação | PSUAY-CAG-CIV-12790 | CONCLUSÃO | CONSAG | CG1 | CNT |  |
|  | 2 | **STRUCTURE (LAGOTELA)** |  | 2026-02-26 | 2026-03-05 |  |  |  |  |  |  |  |  |  |  |  |  |
| PSUAY-LGT-CIV-12800 |  | Execute ISPS Mesh Fences in Section D - CG1 | 6d | 2026-02-26 | 2026-03-05 | PSUAY-LGT-CIV-12780, PSUAY-CAG-CIV-12790 | 32d |  |  | PROFIS [34177.8 h]; MATERIAL - CERCA [400 m] | Cerca telada - Norma ISPS - Seção D - Montagem | PSUAY-LGT-CIV-12800 | CONCLUSÃO | LAGOTELA | CG1 | CNT |  |
|  | 6 | **ELECTROMECHANICAL (LUZVILLE)** |  | 2026-02-19 | 2026-03-25 |  |  |  |  |  |  |  |  |  |  |  |  |
|  | 1 | **FIRE PROTECTION SYSTEM** |  | 2026-02-19 | 2026-03-25 |  |  |  |  |  |  |  |  |  |  |  |  |
| PSUAY-LZE-MEC-12810 |  | Execute PEAD Piping Installation in GC1 | 5d | 2026-02-19 | 2026-02-25 | PSUAY-CAG-INF-12490, PSUAY-CAG-INF-12340 | 18d | 0d | PSUAY - ELETROMEC - 1T - SEM HE | PROFIS [9908.91 h] | Instalação de tubo tipo PEAD | PSUAY-LZE-MEC-12810 | CONCLUSÃO | LUZVILLE | CG1 | CNT |  |
| PSUAY-LZE-MEC-12820 |  | Execute Valve Installation in Pit in GC1 | 5d | 2026-02-26 | 2026-03-04 | PSUAY-LZE-MEC-12810 | 18d | 0d | PSUAY - ELETROMEC - 1T - SEM HE | PROFIS [9908.91 h] | Instalação de válvula em caixas | PSUAY-LZE-MEC-12820 | CONCLUSÃO | LUZVILLE | CG1 | CNT |  |
| PSUAY-LZE-MEC-12830 |  | Execute Hydrant Installation in Pit in GC1 | 5d | 2026-03-05 | 2026-03-11 | PSUAY-LZE-MEC-12820 | 18d | 0d | PSUAY - ELETROMEC - 1T - SEM HE | PROFIS [9908.91 h] | Instalação de hidrantes em caixas | PSUAY-LZE-MEC-12830 | CONCLUSÃO | LUZVILLE | CG1 | CNT |  |
| PSUAY-LZE-MEC-12840 |  | Execute Aboveground Hydrant Installation in GC1 | 5d | 2026-03-12 | 2026-03-18 | PSUAY-LZE-MEC-12830 | 18d | 0d | PSUAY - ELETROMEC - 1T - SEM HE | PROFIS [9908.91 h] | Instalação de hidrantes acima do solo | PSUAY-LZE-MEC-12840 | CONCLUSÃO | LUZVILLE | CG1 | CNT |  |
| PSUAY-LZE-MEC-12850 |  | Execute Hydrant Cabinet Installation in GC1 | 5d | 2026-03-19 | 2026-03-25 | PSUAY-LZE-MEC-12840 | 18d |  | PSUAY - ELETROMEC - 1T - SEM HE | PROFIS [9908.91 h] | Instalação de Caixas de mangueiras dos hidrantes | PSUAY-LZE-MEC-12850 | CONCLUSÃO | LUZVILLE | CG1 | CNT |  |
|  | 9 | **ACCESS ROAD** |  | 2026-02-04 | 2026-03-05 |  |  |  |  |  |  |  |  |  |  |  |  |
|  | 1 | **PAVEMENT** |  | 2026-02-04 | 2026-03-05 |  |  |  |  |  |  |  |  |  |  |  |  |
|  | 4 | **PAVEMENT TYPE 03B (ASPHALT)** |  | 2026-02-04 | 2026-03-05 |  |  |  |  |  |  |  |  |  |  |  |  |
|  | 1 | **SUBGRADE** |  | 2026-02-04 | 2026-02-12 |  |  |  |  |  |  |  |  |  |  |  |  |
| PSUAY-CAG-INF-12860 |  | Execute subgrade of pavement 03B in Access Road | 7d | 2026-02-04 | 2026-02-12 | PSUAY-ECM-INF-10670 SS+4d | 32d | 0d |  | PROFIS [120339 h] | Pavimento tipo 03B - Execução de sub-base | PSUAY-CAG-INF-12860 | CONCLUSÃO | CONSAG | ACCESS ROAD | CNT | UDF_G1 |

| ID | WBS | Activity | Duration | Start | Finish | Predecessors | Total float | Free float | Resources | Translate | ACTIVITY ID COD. | FASES DE ENTREGA | RESPONSÁVEL | ÁREAS | SERVIÇOS | PHASES - YARD | Check Pred |
| --- | --- | --- | --- | --- | --- | --- | --- | --- | --- | --- | --- | --- | --- | --- | --- | --- | --- |
|  | 4 | **BGTC/BGS** |  | 2026-02-13 | 2026-02-17 |  |  |  |  |  |  |  |  |  |  |  |  |
| PSUAY-CAG-INF-12870 |  | Execute BGTC/BGS pavement type 03B in Access Road | 3d | 2026-02-13 | 2026-02-17 | PSUAY-CAG-INF-12860 | 32d | 0d | PROFIS [4401.58 h]; CEMENT SOIL (BGTC) [801.54 m³] | Pavimento tipo 03B - Execução do BGTC/BGS | PSUAY-CAG-INF-12870 | CONCLUSÃO | CONSAG | ACCESS ROAD | PAV-BGTC/BGS | CNT |  |
|  | 2 | **CONCRETE** |  | 2026-02-18 | 2026-03-03 |  |  |  |  |  |  |  |  |  |  |  |  |
| PSUAY-CAG-INF-12880 |  | Execute concrete of pavement 03B in Access Road | 10d | 2026-02-18 | 2026-03-03 | PSUAY-CAG-INF-12870 | 32d | 0d | PROFIS [19295.1 h]; CONCRETE-PAVEMENT [2938.98 m³] | Pavimento tipo 03B - Lançamento de concreto não armado | PSUAY-CAG-INF-12880 | CONCLUSÃO | CONSAG | ACCESS ROAD | PAV-CONC | CNT | UDF_G1 |
|  | 3 | **ASPHALT** |  | 2026-03-04 | 2026-03-05 |  |  |  |  |  |  |  |  |  |  |  |  |
| PSUAY-CAG-INF-12890 |  | Execute asphalt of pavement 03B in Access Road | 2d | 2026-03-04 | 2026-03-05 | PSUAY-CAG-INF-12880 | 32d |  | PROFIS [2314.22 h]; ASPHALT [801.54 m³] | Pavimento tipo 03B - Execução da capa asfáltica do pavimento | PSUAY-CAG-INF-12890 | CONCLUSÃO | CONSAG | ACCESS ROAD | PAV-ASPHA | CNT | UDF_G1 |
|  | 2 | **CLOSING** |  | 2026-04-21 | 2026-05-18 |  |  |  |  |  |  |  |  |  |  |  |  |
| PSUAY-MIL-GER-12910 |  | As Built | 19d | 2026-04-21 | 2026-05-18 | PSUAY-MIL-GER-1270, PSUAY-MIL-GER-1111 SS | 0d |  | PROFIS [25174.4 h] | Desmobilização de Moi/Mod/Eqpto | PSUAY-MIL-GER-12910 |  | CONSAG |  |  | CLO |  |

## Activity codes

| Code | Value | Meaning |
| --- | --- | --- |
| FASES DE ENTREGA | CONCLUSÃO | CONCLUSÃO ESCOPO |
| FASES DE ENTREGA | SS1 | SS1 - SUBESTAÇÃO |
| PHASES - YARD | CLO | Closing |
| PHASES - YARD | CNT | Construction |
| PHASES - YARD | ENG | Engineering |
| PHASES - YARD | MLT | Milestones |
| PHASES - YARD | PRO | Procurement |
| PHASES - YARD | PRW | Preliminary works |
| RESPONSÁVEL | LUZVILLE | LUIZVILLE |
| SERVIÇOS | HM-ASSEM | HM - ASSEMBLY |
| SERVIÇOS | HM-CIV | HM - CIVIL |
| SERVIÇOS | HM-ENERG | HM - ENERGIZATION |
| SERVIÇOS | PAV-CONC | PAV-CONCRETO |
